How a schedule from MS Project changed from version to version. A marks actual dates.

## Version 1 (saved 2017-10-23, file 承保一组-李东东20171023.mpp)

Note of the change: Revert "Revert "source code submit""

| ID | WBS | Task | Duration | Start | Finish | Complete | Total float | Constraint |
| --- | --- | --- | --- | --- | --- | --- | --- | --- |
| 1 | 1 | **承保第一小组任务** | 41d? | 2017-10-17 A | 2017-12-06 | 15% | 0d |  |
| 2 | 1.1 | **登录系统** | 2d? | 2017-10-17 A | 2017-10-18 A | 100% |  |  |
| 3 |  | 用户名密码验证 | 0.5d? | 2017-10-17 A | 2017-10-17 A | 100% |  | start no earlier than 2017-10-17 |
| 4 |  | 登录机构查询 | 2d? | 2017-10-17 A | 2017-10-18 A | 100% |  | finish no earlier than 2017-10-18 |
| 5 | 1.2 | **系统主页** | 1d | 2017-10-19 A | 2017-10-19 A | 100% |  |  |
| 6 |  | 菜单查询 | 1d | 2017-10-19 A | 2017-10-19 A | 100% |  | start no earlier than 2017-10-19 |
| 7 | 1.3 | **个人中心** | 3d? | 2017-10-18 A | 2017-10-20 | 75% | 37d |  |
| 8 | 1.3.1 | **常用功能** | 3d? | 2017-10-18 A | 2017-10-20 | 75% | 37d |  |
| 9 |  | 常用菜单查询 | 1d | 2017-10-18 A | 2017-10-18 A | 100% |  | start no earlier than 2017-10-18 |
| 10 |  | 常用菜单新增 | 1d | 2017-10-19 A | 2017-10-19 A | 100% |  | finish no earlier than 2017-10-19 |
| 11 |  | 常用菜单删除 | 1d | 2017-10-19 A | 2017-10-19 A | 100% |  | finish no earlier than 2017-10-19 |
| 12 |  | 联调测试 | 1d? | 2017-10-20 | 2017-10-20 |  | 37d | start no earlier than 2017-10-20 |
| 13 | 1.4 | **批改处理** | 32d? | 2017-10-18 A | 2017-11-24 | 15% | 8d |  |
| 14 | 1.4.1 | **普通批改** | 18d? | 2017-10-18 A | 2017-11-06 | 28% | 22d |  |
| 15 | 1.4.1.1 | **批改初始查询界面** | 18d? | 2017-10-18 A | 2017-11-06 | 40% | 22d |  |
| 16 |  | 保单基本信息查询 | 2d? | 2017-10-18 A | 2017-10-19 A | 100% |  | finish no earlier than 2017-10-19 |
| 17 | 1.4.1.1.2 | **合同信息查询** | 8d? | 2017-10-18 A | 2017-10-25 | 57% | 32d |  |
| 18 |  | 补贴信息查询 | 1d? | 2017-10-18 A | 2017-10-18 A | 100% |  | start no earlier than 2017-10-18 |
| 19 |  | 主险信息查询 | 1d? | 2017-10-20 A | 2017-10-20 A | 100% |  | start no earlier than 2017-10-20 |
| 20 |  | 附加险信息查询 | 1d? | 2017-10-20 A | 2017-10-20 A | 100% |  | start no earlier than 2017-10-20 |
| 21 |  | 清单信息查询 | 1d? | 2017-10-23 | 2017-10-23 |  | 34d | start no earlier than 2017-10-23 |
| 22 |  | 币别信息查询 | 1d? | 2017-10-24 | 2017-10-24 |  | 33d | start no earlier than 2017-10-24 |
| 23 |  | 缴费计划信息查询 | 1d? | 2017-10-19 A | 2017-10-19 A | 100% |  | start no earlier than 2017-10-19 |
| 24 |  | 联调测试 | 1d? | 2017-10-25 | 2017-10-25 |  | 32d | finish no earlier than 2017-10-25 |
| 25 | 1.4.1.1.3 | **投保人/被保险人信息查询** | 17d? | 2017-10-19 A | 2017-11-06 | 17% | 22d |  |
| 26 |  | 被保险人信息查询 | 1d? | 2017-10-19 A | 2017-10-19 A | 100% |  | start no earlier than 2017-10-19 |
| 27 |  | 投保人信息查询 | 2d? | 2017-11-01 | 2017-11-02 |  | 24d | finish no earlier than 2017-11-02 |
| 28 |  | 发票购货方信息查询 | 1d? | 2017-11-03 | 2017-11-03 |  | 23d | start no earlier than 2017-11-03 |
| 29 |  | 影像资料查询对接 | 1d? | 2017-10-23 | 2017-10-23 |  | 34d | finish no earlier than 2017-10-23 |
| 30 |  | 联调测试 | 1d? | 2017-11-06 | 2017-11-06 |  | 22d | finish no earlier than 2017-11-06 |
| 31 | 1.4.1.1.4 | **其他信息查询** | 11d? | 2017-10-21 A | 2017-10-31 | 25% | 26d |  |
| 32 |  | 共保信息查询 | 1d | 2017-10-21 A | 2017-10-22 A | 100% |  | start no earlier than 2017-10-26 |
| 33 |  | 特约及附加信息查询 | 2d? | 2017-10-21 | 2017-10-22 |  | 35d | start no earlier than 2017-10-21 |
| 34 |  | 其他信息查询 | 1d? | 2017-10-27 A | 2017-10-27 | 50% | 30d | start no earlier than 2017-10-27 |
| 35 |  | 联调测试 | 2d? | 2017-10-30 | 2017-10-31 |  | 26d | finish no earlier than 2017-10-31 |
| 36 | 1.4.1.2 | **批改内容保存** | 11d? | 2017-10-19 A | 2017-10-29 | 33% | 28d |  |
| 37 |  | 批文生成 | 3d | 2017-10-19 A | 2017-10-23 | 53% | 34d | finish no earlier than 2017-10-23 |
| 38 |  | 批单允许保存校验 | 2d? | 2017-10-28 | 2017-10-29 |  | 28d | start no earlier than 2017-10-28 |
| 39 |  | 批单保存大对象逻辑处理 | 6d? | 2017-10-22 A | 2017-10-27 | 30% | 30d | finish no earlier than 2017-10-27 |
| 40 | 1.4.1.2.4 | **批单基本信息保存** | 1d? | 2017-10-22 A | 2017-10-22 | 50% | 35d |  |
| 41 |  | PrpCPmain表保存 | 1d? | 2017-10-22 A | 2017-10-22 A | 100% |  | start no earlier than 2017-10-22 |
| 42 |  | PrpPmain表保存 | 1d? | 2017-10-22 | 2017-10-22 |  | 35d | start no earlier than 2017-10-22 |
| 43 | 1.4.1.2.5 | **批单合同信息保存** | 4d? | 2017-10-22 A | 2017-10-25 | 33% | 32d |  |
| 44 |  | prpCpaddress表保存 | 1d? | 2017-10-22 A | 2017-10-22 A | 100% |  | start no earlier than 2017-10-22 |
| 45 |  | Prpcpsubsidy表保存 | 1d? | 2017-10-22 A | 2017-10-22 A | 100% |  | start no earlier than 2017-10-22 |
| 46 |  | PrpcpitemKindAgri表保存 | 1d? | 2017-10-22 A | 2017-10-22 A | 100% |  | start no earlier than 2017-10-22 |
| 47 |  | prpcpItemKind表保存 | 1d? | 2017-10-22 A | 2017-10-22 A | 100% |  | start no earlier than 2017-10-22 |
| 48 |  | prpPaddress表保存 | 1d? | 2017-10-22 | 2017-10-22 |  | 35d | start no earlier than 2017-10-22 |
| 49 |  | PrpPsubsidy表保存 | 1d? | 2017-10-24 | 2017-10-24 |  | 33d | start no earlier than 2017-10-24 |
| 50 |  | PrpPitemKindAgri表保存 | 1d? | 2017-10-24 | 2017-10-24 |  | 33d | start no earlier than 2017-10-24 |
| 51 |  | prpPitemKind表保存 | 1d? | 2017-10-24 | 2017-10-24 |  | 33d | start no earlier than 2017-10-24 |
| 52 |  | prpCPplan、prpPplan表保存 | 1d? | 2017-10-24 | 2017-10-24 |  | 33d | start no earlier than 2017-10-24 |
| 53 |  | prpdcustomerrisklevelsub表保存 | 1d? | 2017-10-25 | 2017-10-25 |  | 32d | start no earlier than 2017-10-25 |
| 54 |  | prpCPfee、prpPfee表保存 | 1d? | 2017-10-25 | 2017-10-25 |  | 32d | start no earlier than 2017-10-25 |
| 55 |  | prpCPexpense、prpPexpense表保存 | 1d? | 2017-10-25 | 2017-10-25 |  | 32d | start no earlier than 2017-10-25 |
| 56 |  | 批单投保人/被保险人信息保存 | 2d? | 2017-10-19 A | 2017-10-20 A | 100% |  | finish no earlier than 2017-10-20 |
| 57 | 1.4.1.2.7 | **批单其他信息保存** | 2d? | 2017-10-24 | 2017-10-25 |  | 32d |  |
| 58 |  | PrpCpcoins、PrpPcoins表保存 | 1d? | 2017-10-24 | 2017-10-24 |  | 33d | start no earlier than 2017-10-24 |
| 59 |  | prpCPengage、prpPengage表保存 | 1d? | 2017-10-24 | 2017-10-24 |  | 33d | start no earlier than 2017-10-24 |
| 60 |  | prpCpaddress、prpPaddress等表接口文档整理 | 1d? | 2017-10-25 | 2017-10-25 |  | 32d | start no earlier than 2017-10-25 |
| 61 |  | prpCPfee、prpPfee等表接口文档整理 | 1d? | 2017-10-25 | 2017-10-25 |  | 32d | start no earlier than 2017-10-25 |
| 62 |  | 批改允许条件查询 | 1d? | 2017-10-26 | 2017-10-26 |  | 31d | start no earlier than 2017-10-26 |
| 63 | 1.4.1.3 | **核批后更新C表** | 4d? | 2017-10-26 | 2017-10-29 |  | 28d |  |
| 64 |  | prpcmain、prpcitemkind、PrpCfee表非金额字段更新 | 2d? | 2017-10-26 | 2017-10-27 |  | 30d | finish no earlier than 2017-10-27 |
| 65 |  | PrpCplan、PrpCaddress、PrpCmainAgri表更新 | 2d? | 2017-10-28 | 2017-10-29 |  | 28d | start no earlier than 2017-10-28 |
| 66 |  | PrpCengage、prpCitemagri、PrpCcoins表更新 | 2d? | 2017-10-26 | 2017-10-27 |  | 30d | finish no earlier than 2017-10-27 |
| 67 |  | prpCexpense、prpCsubsidy、PrpCinsured表更新 | 2d? | 2017-10-28 | 2017-10-29 |  | 28d | finish no earlier than 2017-10-29 |
| 68 |  | prpcmain、prpcitemkind、PrpCfee表金额字段等更新及校验 | 2d? | 2017-10-28 | 2017-10-29 |  | 28d | finish no earlier than 2017-10-29 |
| 69 |  | prpphead表核保标识字段更新 | 1d? | 2017-10-29 | 2017-10-29 |  | 28d | start no earlier than 2017-10-29 |
| 70 |  | 代码审核 | 2d? | 2017-10-28 | 2017-10-29 |  | 28d | start no earlier than 2017-10-28 |

| ID | WBS | Task | Duration | Start | Finish | Total float | Constraint |
| --- | --- | --- | --- | --- | --- | --- | --- |
| 71 |  | 开发计划、开发方式整理 | 2d? | 2017-10-28 | 2017-10-29 | 28d | finish no earlier than 2017-10-29 |
| 72 | 1.4.2 | **特殊批改** | 18d? | 2017-11-01 | 2017-11-24 | 8d |  |
| 73 |  | 选中保单进行是否存在未核批单校验 | 1d? | 2017-11-01 | 2017-11-01 | 25d | finish no earlier than 2017-11-01 |
| 74 |  | 录入支付信息 | 1d? | 2017-11-10 | 2017-11-10 | 18d | start no earlier than 2017-11-10 |
| 75 |  | 按条件查询 | 2d? | 2017-11-06 | 2017-11-07 | 21d | finish no earlier than 2017-11-07 |
| 76 |  | 特殊批改信息录入界面查询 | 1d? | 2017-11-06 | 2017-11-06 | 22d | start no earlier than 2017-11-06 |
| 77 |  | 联调测试 | 2d? | 2017-11-08 | 2017-11-09 | 19d | finish no earlier than 2017-11-09 |
| 78 | 1.4.2.6 | **变更保险期限** | 2d? | 2017-11-06 | 2017-11-07 | 21d |  |
| 79 |  | 变更保险期限界面查询 | 1d? | 2017-11-06 | 2017-11-06 | 22d | start no earlier than 2017-11-06 |
| 80 |  | 变更保险期限批文自动生成 | 1d? | 2017-11-06 | 2017-11-06 | 22d | start no earlier than 2017-11-06 |
| 81 |  | 变更保险期限保存 | 2d? | 2017-11-06 | 2017-11-07 | 21d | finish no earlier than 2017-11-07 |
| 82 | 1.4.2.7 | **全单退保** | 6d? | 2017-11-08 | 2017-11-15 | 15d |  |
| 83 |  | 全单退保界面查询 | 1d? | 2017-11-08 | 2017-11-08 | 20d | start no earlier than 2017-11-08 |
| 84 |  | 全单退保后调整界面查询 | 1d? | 2017-11-08 | 2017-11-08 | 20d | start no earlier than 2017-11-08 |
| 85 |  | 整单支付录入页面保存 | 2d? | 2017-11-09 | 2017-11-10 | 18d | finish no earlier than 2017-11-10 |
| 86 |  | 清单支付页面保存 | 1d? | 2017-11-13 | 2017-11-13 | 17d | start no earlier than 2017-11-13 |
| 87 |  | 全单退保批文生成 | 1d? | 2017-11-13 | 2017-11-13 | 17d | start no earlier than 2017-11-13 |
| 88 |  | 全单退保批单信息保存 | 2d? | 2017-11-14 | 2017-11-15 | 15d | finish no earlier than 2017-11-15 |
| 89 | 1.4.2.8 | **保单注销** | 2d? | 2017-11-08 | 2017-11-09 | 19d |  |
| 90 |  | 保单注销界面查询 | 1d? | 2017-11-08 | 2017-11-08 | 20d | start no earlier than 2017-11-08 |
| 91 |  | 保单注销批文生成 | 1d? | 2017-11-08 | 2017-11-08 | 20d | start no earlier than 2017-11-08 |
| 92 |  | 保单注销信息保存 | 2d? | 2017-11-08 | 2017-11-09 | 19d | finish no earlier than 2017-11-09 |
| 93 | 1.4.2.9 | **业务来源批改** | 2d? | 2017-11-16 | 2017-11-17 | 13d |  |
| 94 |  | 业务来源批改界面查询 | 1d? | 2017-11-16 | 2017-11-16 | 14d | start no earlier than 2017-11-16 |
| 95 |  | 业务来源批改批文生成 | 1d? | 2017-11-16 | 2017-11-16 | 14d | start no earlier than 2017-11-16 |
| 96 |  | 业务来源批改信息保存 | 2d? | 2017-11-16 | 2017-11-17 | 13d | finish no earlier than 2017-11-17 |
| 97 | 1.4.2.10 | **业务员批改** | 2d? | 2017-11-20 | 2017-11-21 | 11d |  |
| 98 |  | 业务员批改界面查询 | 1d? | 2017-11-20 | 2017-11-20 | 12d | start no earlier than 2017-11-20 |
| 99 |  | 业务员批改批文生成 | 1d? | 2017-11-20 | 2017-11-20 | 12d | start no earlier than 2017-11-20 |
| 100 |  | 业务员批改信息保存 | 2d? | 2017-11-20 | 2017-11-21 | 11d | finish no earlier than 2017-11-21 |
| 101 | 1.4.2.11 | **调整费率** | 2d? | 2017-11-10 | 2017-11-13 | 17d |  |
| 102 |  | 调整费率批文生成 | 1d? | 2017-11-10 | 2017-11-10 | 18d | start no earlier than 2017-11-10 |
| 103 |  | 调整费率信息保存 | 2d? | 2017-11-10 | 2017-11-13 | 17d | finish no earlier than 2017-11-13 |
| 104 | 1.4.2.12 | **调整单位保额** | 2d? | 2017-11-14 | 2017-11-15 | 15d |  |
| 105 |  | 调整单位保额批文生成 | 1d? | 2017-11-14 | 2017-11-14 | 16d | start no earlier than 2017-11-14 |
| 106 |  | 调整单位保额信息保存 | 2d? | 2017-11-14 | 2017-11-15 | 15d | finish no earlier than 2017-11-15 |
| 107 | 1.4.2.13 | **调整补贴信息** | 2d? | 2017-11-16 | 2017-11-17 | 13d |  |
| 108 |  | 调整补贴信息批文生成 | 1d? | 2017-11-16 | 2017-11-16 | 14d | start no earlier than 2017-11-16 |
| 109 |  | 调整补贴信息保存 | 2d? | 2017-11-16 | 2017-11-17 | 13d | finish no earlier than 2017-11-17 |
| 110 |  | 联调测试 | 5d? | 2017-11-20 | 2017-11-24 | 8d | finish no earlier than 2017-11-24 |
| 111 |  | 联调测试 | 3d? | 2017-11-22 | 2017-11-24 | 8d | finish no earlier than 2017-11-24 |
| 112 | 1.4.3 | **批单查询** | 9d? | 2017-11-07 | 2017-11-17 | 13d |  |
| 113 | 1.4.3.1 | **批单查询** | 3d? | 2017-11-07 | 2017-11-09 | 19d |  |
| 114 |  | 按条件查询批单清单列表 | 1d? | 2017-11-07 | 2017-11-07 | 21d | start no earlier than 2017-11-07 |
| 115 |  | 批单明细信息查询 | 2d? | 2017-11-08 | 2017-11-09 | 19d | finish no earlier than 2017-11-09 |
| 116 |  | 修改批文 | 1d? | 2017-11-10 | 2017-11-10 | 18d | start no earlier than 2017-11-10 |
| 117 |  | 联调测试 | 1d? | 2017-11-13 | 2017-11-13 | 17d | start no earlier than 2017-11-13 |
| 118 | 1.4.3.4 | **查看清单** | 2d? | 2017-11-10 | 2017-11-13 | 17d |  |
| 119 |  | 批改前清单查询 | 1d? | 2017-11-10 | 2017-11-10 | 18d | start no earlier than 2017-11-10 |
| 120 |  | 批改后清单查询 | 1d? | 2017-11-10 | 2017-11-10 | 18d | start no earlier than 2017-11-10 |
| 121 |  | 批改清单变化查询 | 1d? | 2017-11-13 | 2017-11-13 | 17d | start no earlier than 2017-11-13 |
| 122 |  | 提交核批 | 1d? | 2017-11-14 | 2017-11-14 | 16d | start no earlier than 2017-11-14 |
| 123 |  | 批单删除 | 1d? | 2017-11-15 | 2017-11-15 | 15d | start no earlier than 2017-11-15 |
| 124 |  | 联调测试 | 2d? | 2017-11-16 | 2017-11-17 | 13d | finish no earlier than 2017-11-17 |
| 125 |  | 我的任务查询 | 5d? | 2017-11-20 | 2017-11-24 | 8d | finish no earlier than 2017-11-24 |
| 126 | 1.6 | **业务清单详情** | 1d? | 2017-11-27 | 2017-11-27 | 7d |  |
| 127 |  | 当日签单保额、保费查询 | 1d? | 2017-11-27 | 2017-11-27 | 7d | start no earlier than 2017-11-27 |
| 128 |  | 当日签单保额、保费清单下载查询 | 1d | 2017-11-27 | 2017-11-27 | 7d | start no earlier than 2017-11-27 |
| 129 |  | 未缴费保单总保额、总保费查询 | 1d | 2017-11-27 | 2017-11-27 | 7d | start no earlier than 2017-11-27 |
| 130 |  | 未缴费保单总保额、总保费清单下载查询 | 1d | 2017-11-27 | 2017-11-27 | 7d | start no earlier than 2017-11-27 |
| 131 |  | 应收保费总保额、总保费查询 | 1d | 2017-11-27 | 2017-11-27 | 7d | start no earlier than 2017-11-27 |
| 132 |  | 应收保费总保额、总保费清单下载查询 | 1d | 2017-11-27 | 2017-11-27 | 7d | start no earlier than 2017-11-27 |
| 133 | 1.7 | **条款版本管理** | 10d? | 2017-11-20 | 2017-12-01 | 3d |  |
| 134 | 1.7.1 | **查询条款** | 2d? | 2017-11-20 | 2017-11-21 | 11d |  |
| 135 |  | 按条件条款模板清单 | 1d? | 2017-11-20 | 2017-11-20 | 12d | finish no earlier than 2017-11-20 |
| 136 |  | 条款明细信息查询 | 1d? | 2017-11-21 | 2017-11-21 | 11d | start no earlier than 2017-11-21 |
| 137 |  | 保存/暂存条款 | 2d? | 2017-11-22 | 2017-11-23 | 9d | finish no earlier than 2017-11-23 |
| 138 |  | 停用/启用条款功能 | 1d? | 2017-11-24 | 2017-11-24 | 8d | start no earlier than 2017-11-24 |
| 139 |  | 单个删除条款 | 1d? | 2017-11-24 | 2017-11-24 | 8d | start no earlier than 2017-11-24 |
| 140 |  | 批量删除条款 | 1d? | 2017-11-24 | 2017-11-24 | 8d | start no earlier than 2017-11-24 |

| ID | WBS | Task | Duration | Start | Finish | Total float | Constraint |
| --- | --- | --- | --- | --- | --- | --- | --- |
| 141 |  | 修改条款 | 2d? | 2017-11-27 | 2017-11-28 | 6d | finish no earlier than 2017-11-28 |
| 142 |  | 联调测试 | 3d? | 2017-11-29 | 2017-12-01 | 3d | start no earlier than 2017-11-29 |
| 143 | 1.8 | **投保模板管理** | 8d? | 2017-11-27 | 2017-12-06 | 0d |  |
| 144 | 1.8.1 | **查看模板** | 1d? | 2017-11-27 | 2017-11-27 | 7d |  |
| 145 |  | 按条件查询模板清单列表 | 1d? | 2017-11-27 | 2017-11-27 | 7d | start no earlier than 2017-11-27 |
| 146 |  | 模板明细信息查询 | 1d? | 2017-11-27 | 2017-11-27 | 7d | start no earlier than 2017-11-27 |
| 147 |  | 保存/暂存模板 | 2d? | 2017-11-28 | 2017-11-29 | 5d | finish no earlier than 2017-11-29 |
| 148 |  | 停用/启用模板功能 | 1d? | 2017-11-29 | 2017-11-29 | 5d | start no earlier than 2017-11-29 |
| 149 |  | 单个删除模板 | 1d? | 2017-11-29 | 2017-11-29 | 5d | start no earlier than 2017-11-29 |
| 150 |  | 批量删除模板 | 1d? | 2017-11-29 | 2017-11-29 | 5d | start no earlier than 2017-11-29 |
| 151 |  | 修改模板 | 2d? | 2017-11-30 | 2017-12-01 | 3d | finish no earlier than 2017-12-01 |
| 152 |  | 联调测试 | 3d? | 2017-12-04 | 2017-12-06 | 0d | finish no earlier than 2017-12-06 |

## Version 2 (saved 2017-10-24, file 承保一组-李东东20171024.mpp)

Note of the change: Revert "Revert "source code submit""

Last finish stays 2017-12-06. Complete tasks 19 → 26.

Added:

| ID | Task | Duration | Start | Finish | Constraint | Resources |
| --- | --- | --- | --- | --- | --- | --- |
| 39 | PrpCPmain、PrpPmain、prpPhead对象处理 | 3d? | 2017-10-23 A | 2017-10-25 | finish no earlier than 2017-10-25 | 李东东 |
| 40 | Prpcpsubsidy、PrpPsubsidy对象处理 | 1d? | 2017-10-25 | 2017-10-25 | start no earlier than 2017-10-25 | 李东东 |
| 41 | prpCPitemKind、prpPitemKind对象处理 | 1d? | 2017-10-25 | 2017-10-25 | finish no earlier than 2017-10-25 | 李东东 |
| 42 | prpCpaddress、prpPaddress对象生成 | 1d? | 2017-10-26 | 2017-10-26 | start no earlier than 2017-10-26 | 李东东 |
| 43 | prpCPplan、prpPplan对象生成 | 2d? | 2017-10-26 | 2017-10-27 | start no earlier than 2017-10-26 | 李东东 |
| 44 | prpdcustomerrisklevelsub对象生成 | 1d? | 2017-10-26 | 2017-10-26 | finish no earlier than 2017-10-26 | 李东东 |
| 45 | prpCPfee、prpPfee对象生成 | 1d? | 2017-10-26 | 2017-10-26 | start no earlier than 2017-10-26 | 李东东 |
| 46 | prpCPexpense、prpPexpense对象生成 | 1d? | 2017-10-27 | 2017-10-27 | finish no earlier than 2017-10-27 | 李东东 |
| 47 | PrpCpcoins、PrpPcoins对象生成 | 1d? | 2017-10-27 | 2017-10-27 | finish no earlier than 2017-10-27 | 李东东 |
| 48 | prpCPengage、prpPengage对象生成 | 1d? | 2017-10-27 | 2017-10-27 | finish no earlier than 2017-10-27 | 李东东 |
| 62 | prpPhead表保存 | 1d? | 2017-10-24 A | 2017-10-24 A | start no earlier than 2017-10-24 | 李冬松 |
| 77 | 双核系统核保通过回写prpphead表核保标识等字段 | 2d? | 2017-10-30 | 2017-10-31 | finish no earlier than 2017-10-31 | 李冬松 |
| 81 | 分户批改 | 2d? | 2017-10-30 | 2017-10-31 | start no earlier than 2017-10-30 | 王保良 |
| 82 | 见费出单收付系统回写p表、c表(需确认具体细节) | 2d? | 2017-11-01 | 2017-11-02 | finish no earlier than 2017-11-02 | 李冬松 |
| 87 | 批量批改处理(需确认细节) | 2d | 2017-11-03 | 2017-11-05 | finish no earlier than 2017-11-05 | 王保良 |

Removed: 46 PrpcpitemKindAgri表保存; 50 PrpPitemKindAgri表保存; 69 prpphead表核保标识字段更新; 93 业务来源批改; 94 业务来源批改界面查询; 95 业务来源批改批文生成; 96 业务来源批改信息保存

Changed:

| ID | Task | Start | Finish | Duration | Complete | Total float | Other |
| --- | --- | --- | --- | --- | --- | --- | --- |
| 1 | **承保第一小组任务** |  |  | 41d? → 42d? | 15% → 18% |  |  |
| 13 | **批改处理** |  |  | 32d? → 33d? | 15% → 19% |  |  |
| 14 | **普通批改** |  |  | 18d? → 19d? | 28% → 34% |  |  |
| 15 | **批改初始查询界面** |  |  | 18d? → 19d? |  |  |  |
| 25 | **投保人/被保险人信息查询** |  |  | 17d? → 18d? |  |  |  |
| 36 | **批改内容保存** |  | 2017-10-29 → 2017-10-27 (-2d) | 11d? → 9d? | 33% → 51% | 28d → 31d |  |
| 37 | 批文生成 |  | 2017-10-23 → 2017-10-22 (-1d) | 3d → 2d | 53% → 80% | 34d → 36d | constraint finish no earlier than 2017-10-23 → finish no earlier than 2017-10-22 |
| 38 | **批单保存大对象逻辑处理** | 2017-10-22 A → 2017-10-23 A (+1d) |  | 6d? → 5d? | 30% → 16% | 30d → 31d | constraint finish no earlier than 2017-10-27 → none |
| 52 | **批单合同信息保存** |  | 2017-10-25 → 2017-10-24 A (-1d) | 4d? → 3d? | 33% → 100% | 32d → none |  |
| 56 | prpPaddress表保存 | 2017-10-22 A | 2017-10-22 A |  | 0% → 100% | 35d → none | resources 王保良 → 李冬松 |
| 57 | PrpPsubsidy表保存 | 2017-10-24 A | 2017-10-24 A |  | 0% → 100% | 33d → none |  |
| 58 | prpPitemKind表保存 | 2017-10-24 A | 2017-10-24 A |  | 0% → 100% | 33d → none |  |
| 59 | prpCPplan、prpPplan表保存 | 2017-10-24 A | 2017-10-24 A |  | 0% → 100% | 33d → none |  |
| 60 | prpdcustomerrisklevelsub表保存 | 2017-10-25 → 2017-10-24 A (-1d) | 2017-10-25 → 2017-10-24 A (-1d) |  | 0% → 100% | 32d → none | constraint start no earlier than 2017-10-25 → finish no earlier than 2017-10-24; resources 王保良 → 李冬松 |
| 61 | prpCPfee、prpPfee表保存 | 2017-10-25 → 2017-10-24 A (-1d) | 2017-10-25 → 2017-10-24 A (-1d) |  | 0% → 100% | 32d → none | constraint start no earlier than 2017-10-25 → finish no earlier than 2017-10-24; resources 王保良 → 李冬松 |
| 63 | prpCPexpense、prpPexpense表保存 | 2017-10-25 → 2017-10-24 A (-1d) | 2017-10-25 → 2017-10-24 A (-1d) |  | 0% → 100% | 32d → none | constraint start no earlier than 2017-10-25 → finish no earlier than 2017-10-24; resources 王保良 → 李冬松 |
| 68 | prpCpaddress、prpPaddress等表接口文档整理 |  |  |  |  | 32d → 33d | constraint start no earlier than 2017-10-25 → finish no earlier than 2017-10-25 |
| 70 | 批改允许条件查询 | 2017-10-26 → 2017-10-25 (-1d) | 2017-10-26 → 2017-10-25 (-1d) |  |  | 31d → 33d | constraint start no earlier than 2017-10-26 → start no earlier than 2017-10-25 |
| 71 | **核批后更新C表** |  | 2017-10-29 → 2017-10-31 (+2d) | 4d? → 6d? |  | 28d → 27d |  |
| 80 | 批单允许保存校验 | 2017-10-28 → 2017-10-30 (+2d) | 2017-10-29 → 2017-10-31 (+2d) |  |  | 28d → 27d | constraint start no earlier than 2017-10-28 → start no earlier than 2017-10-30 |
| 83 | **特殊批改** |  |  | 18d? → 19d? |  |  |  |
| 84 | 选中保单进行是否存在未核批单校验 | 2017-11-01 → 2017-11-03 (+2d) | 2017-11-01 → 2017-11-03 (+2d) |  |  | 25d → 24d | constraint finish no earlier than 2017-11-01 → start no earlier than 2017-11-03 |
| 85 | 录入支付信息 | 2017-11-10 → 2017-11-01 (-9d) | 2017-11-10 → 2017-11-02 (-8d) | 1d? → 2d? |  | 18d → 25d | constraint start no earlier than 2017-11-10 → finish no earlier than 2017-11-02; resources none → 王保良 |
| 86 | 按条件查询 | 2017-11-06 → 2017-11-04 (-2d) | 2017-11-07 → 2017-11-05 (-2d) | 2d? → 1d? |  | 21d → 23d | constraint finish no earlier than 2017-11-07 → finish no earlier than 2017-11-05 |
| 88 | 特殊批改信息录入界面查询 |  |  |  |  |  | resources A → 李冬松 |
| 89 | 联调测试 | 2017-11-08 → 2017-11-07 (-1d) |  | 2d? → 3d? |  |  | constraint finish no earlier than 2017-11-09 → start no earlier than 2017-11-07 |
| 90 | **变更保险期限** | 2017-11-06 → 2017-11-01 (-5d) |  | 2d? → 6d? |  |  |  |
| 91 | 变更保险期限界面查询 | 2017-11-06 → 2017-11-01 (-5d) | 2017-11-06 → 2017-11-01 (-5d) |  |  | 22d → 26d | constraint start no earlier than 2017-11-06 → start no earlier than 2017-11-01 |
| 92 | 变更保险期限批文自动生成 | 2017-11-06 → 2017-11-01 (-5d) | 2017-11-06 → 2017-11-05 (-1d) | 1d? → 4d |  | 22d → 23d | constraint start no earlier than 2017-11-06 → finish no earlier than 2017-11-05 |
| 133 | 我的任务查询 | 2017-11-20 → 2017-11-27 (+7d) | 2017-11-24 → 2017-11-28 (+4d) | 5d? → 2d? |  | 8d → 6d | constraint finish no earlier than 2017-11-24 → start no earlier than 2017-11-27; resources A → 王保良 |

## Version 3 (saved 2017-10-25, file 承保第一小组-李东东-20171025.mpp)

Note of the change: source code submit

Last finish stays 2017-12-06. Complete tasks 26 → 30.

Added:

| ID | Task | Duration | Start | Finish | Constraint | Resources |
| --- | --- | --- | --- | --- | --- | --- |
| 81 | 提交核批 | 3d? | 2017-10-29 | 2017-10-31 | finish no earlier than 2017-10-31 | 李东东 |

Changed:

| ID | Task | Start | Finish | Duration | Complete | Total float | Other |
| --- | --- | --- | --- | --- | --- | --- | --- |
| 1 | **承保第一小组任务** |  |  |  | 18% → 21% |  |  |
| 13 | **批改处理** |  |  |  | 19% → 23% |  |  |
| 14 | **普通批改** |  |  |  | 34% → 42% |  |  |
| 36 | **批改内容保存** |  | 2017-10-27 → 2017-11-01 (+5d) | 9d? → 14d? | 51% → 65% | 31d → 26d |  |
| 38 | **批单保存大对象逻辑处理** |  |  |  | 16% → 24% |  |  |
| 40 | Prpcpsubsidy、PrpPsubsidy对象处理 | 2017-10-25 A |  |  | 0% → 50% |  |  |
| 41 | prpCPitemKind、prpPitemKind对象处理 | 2017-10-25 A |  |  | 0% → 50% |  |  |
| 65 | **批单其他信息保存** | 2017-10-24 A | 2017-10-25 A |  | 0% → 100% | 33d → none |  |
| 66 | PrpCpcoins、PrpPcoins表保存 | 2017-10-24 A | 2017-10-24 A |  | 0% → 100% | 34d → none |  |
| 67 | prpCPengage、prpPengage表保存 | 2017-10-24 A | 2017-10-24 A |  | 0% → 100% | 34d → none |  |
| 68 | prpCpaddress、prpPaddress等表接口文档整理 | 2017-10-25 A | 2017-10-25 A |  | 0% → 100% | 33d → none |  |
| 69 | prpCPfee、prpPfee等表接口文档整理 | 2017-10-25 A | 2017-10-25 A |  | 0% → 100% | 33d → none |  |
| 70 | 批改允许条件查询 | 2017-10-25 → 2017-11-01 (+7d) | 2017-10-25 → 2017-11-01 (+7d) |  |  | 33d → 26d | constraint start no earlier than 2017-10-25 → start no earlier than 2017-11-01; resources 李冬松 → 李东东 |
| 71 | **核批后更新C表** | 2017-10-26 → 2017-10-25 (-1d) | 2017-10-31 → 2017-10-29 (-2d) | 6d? → 5d? |  | 27d → 29d |  |
| 72 | prpcmain、prpcitemkind、PrpCfee表更新 | 2017-10-26 → 2017-10-25 (-1d) | 2017-10-27 → 2017-10-26 (-1d) |  |  | 31d → 32d | was named prpcmain、prpcitemkind、PrpCfee表非金额字段更新; constraint finish no earlier than 2017-10-27 → finish no earlier than 2017-10-26 |
| 73 | PrpCplan、PrpCaddress、PrpCmainAgri表更新 | 2017-10-28 → 2017-10-27 (-1d) | 2017-10-29 → 2017-10-27 (-2d) | 2d? → 1d? |  | 29d → 31d | constraint start no earlier than 2017-10-28 → finish no earlier than 2017-10-27 |
| 74 | PrpCengage、prpCitemagri、PrpCcoins表更新 | 2017-10-26 → 2017-10-25 (-1d) | 2017-10-27 → 2017-10-26 (-1d) |  |  | 31d → 32d | constraint finish no earlier than 2017-10-27 → finish no earlier than 2017-10-26 |
| 75 | prpCexpense、prpCsubsidy、PrpCinsured表更新 | 2017-10-28 → 2017-10-27 (-1d) | 2017-10-29 → 2017-10-27 (-2d) | 2d? → 1d? |  | 29d → 31d | constraint finish no earlier than 2017-10-29 → start no earlier than 2017-10-27 |
| 77 | 双核系统核保通过回写prpphead表核保标识等字段 | 2017-10-30 → 2017-10-28 (-2d) | 2017-10-31 → 2017-10-28 (-3d) | 2d? → 1d? |  | 27d → 30d | constraint finish no earlier than 2017-10-31 → finish no earlier than 2017-10-28 |
| 78 | 见费出单收付系统回写p表、c表(需确认具体细节) | 2017-11-01 → 2017-10-29 (-3d) | 2017-11-02 → 2017-10-29 (-4d) | 2d? → 1d? |  | 25d → 29d | constraint finish no earlier than 2017-11-02 → start no earlier than 2017-10-29 |
| 82 | 批单允许保存校验 | 2017-10-30 → 2017-10-28 (-2d) | 2017-10-31 → 2017-10-28 (-3d) | 2d? → 1d? |  |  | constraint start no earlier than 2017-10-30 → finish no earlier than 2017-10-28; resources 李东东 → 王保良 |
| 83 | 分户批改 | 2017-10-30 → 2017-10-29 (-1d) | 2017-10-31 → 2017-10-29 (-2d) | 2d? → 1d? |  | 27d → 29d | constraint start no earlier than 2017-10-30 → finish no earlier than 2017-10-29 |

## Version 4 (saved 2017-10-26, file 承保第一小组-李东东-20171026.mpp)

Note of the change: source code submit

Last finish stays 2017-12-06. Complete tasks 30 → 34.

Removed: 44 prpdcustomerrisklevelsub对象生成

Changed:

| ID | Task | Start | Finish | Duration | Complete | Total float | Other |
| --- | --- | --- | --- | --- | --- | --- | --- |
| 1 | **承保第一小组任务** |  |  |  | 21% → 27% |  |  |
| 13 | **批改处理** |  |  |  | 23% → 30% |  |  |
| 14 | **普通批改** |  |  |  | 42% → 56% |  |  |
| 36 | **批改内容保存** |  |  |  | 65% → 86% |  |  |
| 38 | **批单保存大对象逻辑处理** |  | 2017-10-27 → 2017-10-26 (-1d) | 5d? → 4d? | 24% → 79% | 31d → 32d |  |
| 39 | PrpCPmain、PrpPmain、prpPhead对象处理 |  | 2017-10-25 A |  | 70% → 100% | 33d → none |  |
| 40 | Prpcpsubsidy、PrpPsubsidy对象处理 |  | 2017-10-25 A |  | 50% → 100% | 33d → none |  |
| 42 | prpCpaddress、prpPaddress对象生成 | 2017-10-26 A |  |  | 0% → 70% |  |  |
| 43 | prpCPplan、prpPplan对象生成 | 2017-10-26 A | 2017-10-27 → 2017-10-26 (-1d) | 2d? → 1d? | 0% → 70% | 31d → 32d | constraint start no earlier than 2017-10-26 → finish no earlier than 2017-10-26 |
| 44 | prpCPfee、prpPfee对象生成 | 2017-10-26 A |  |  | 0% → 70% |  |  |
| 45 | prpCPexpense、prpPexpense对象生成 | 2017-10-27 → 2017-10-26 A (-1d) | 2017-10-27 → 2017-10-26 (-1d) |  | 0% → 70% | 31d → 32d | constraint finish no earlier than 2017-10-27 → finish no earlier than 2017-10-26 |
| 46 | PrpCpcoins、PrpPcoins对象生成 | 2017-10-27 → 2017-10-26 A (-1d) | 2017-10-27 → 2017-10-26 (-1d) |  | 0% → 70% | 31d → 32d | constraint finish no earlier than 2017-10-27 → finish no earlier than 2017-10-26 |
| 47 | prpCPengage、prpPengage对象生成 | 2017-10-27 → 2017-10-26 A (-1d) | 2017-10-27 → 2017-10-26 (-1d) |  | 0% → 70% | 31d → 32d | constraint finish no earlier than 2017-10-27 → finish no earlier than 2017-10-26 |
| 70 | **核批后更新C表** | 2017-10-25 A |  |  | 0% → 40% |  |  |
| 71 | prpcmain、prpcitemkind、PrpCfee表更新 | 2017-10-25 A | 2017-10-26 A |  | 0% → 100% | 32d → none |  |
| 73 | PrpCengage、prpCitemagri、PrpCcoins表更新 | 2017-10-25 A | 2017-10-26 A |  | 0% → 100% | 32d → none |  |
