# 项目计划示例-20171025

How a schedule from MS Project changed from version to version. A marks actual dates.

## Version 1 (saved 2017-10-27, file 承保二组-田健-20171027.mpp)

Note of the change: source code submit

| ID | WBS | Task | Duration | Start | Finish | Predecessors | Complete | Total float | Constraint |
| --- | --- | --- | --- | --- | --- | --- | --- | --- | --- |
| 1 | 1 | **承保系统** | 58d? | 2017-10-09 A | 2017-12-27 |  | 32% | 0d |  |
| 2 |  | 需求理解 | 4d | 2017-10-09 | 2017-10-12 |  |  | 54d | start no earlier than 2017-10-09 |
| 3 | 1.2 | **系统设计** | 9.33d? | 2017-10-25 | 2017-11-07 |  |  | 36.67d |  |
| 4 | 1.2.1 | **接口设计** | 4d? | 2017-10-25 | 2017-10-30 |  |  | 42d |  |
| 5 |  | 接口列表整理 | 4d? | 2017-10-25 | 2017-10-30 |  |  | 42d | start no earlier than 2017-10-25 |
| 6 |  | 接口清单评审 | 0.33d? | 2017-10-31 | 2017-10-31 |  |  | 36.67d | start no earlier than 2017-10-31 |
| 7 |  | 接口入参，出参设计 | 5d | 2017-10-31 | 2017-11-07 | 6 |  | 36.67d |  |
| 8 | 1.3 | **开发** | 58d | 2017-10-09 A | 2017-12-27 |  | 34% | 0d |  |
| 9 |  | 单号生成 | 3d | 2017-10-09 A | 2017-10-11 |  | 60% | 55d |  |
| 10 | 1.3.2 | **投保单管理** | 41d | 2017-10-09 A | 2017-12-04 |  | 54% | 17d |  |
| 11 | 1.3.2.1 | **投保单录入** | 41d | 2017-10-09 A | 2017-12-04 |  | 52% | 17d |  |
| 12 | 1.3.2.1.1 | **页面初始化** | 24d | 2017-10-09 A | 2017-11-09 |  | 60% | 34d |  |
| 13 |  | 根据codetype查询prpdcode服务 | 3d | 2017-10-09 A | 2017-10-11 A |  | 100% |  | start no earlier than 2017-10-19 |
| 14 |  | 初始化页面前后端联调 | 2d | 2017-11-08 | 2017-11-09 |  |  | 33d | start no earlier than 2017-11-08 |
| 15 | 1.3.2.1.2 | **投保信息收集** | 28d | 2017-10-09 A | 2017-11-15 |  | 58% | 30d |  |
| 16 |  | 特约及附加信息查询服务 | 3d | 2017-10-09 A | 2017-10-11 A |  | 100% |  | start no earlier than 2017-10-09 |
| 17 |  | 归属机构查询服务 | 3d | 2017-10-09 A | 2017-10-11 A |  | 100% |  | start no earlier than 2017-10-09 |
| 18 |  | 归属区域查询服务 | 5d | 2017-10-09 A | 2017-10-13 A |  | 100% |  | start no earlier than 2017-10-09 |
| 19 |  | 主险、附加险险别的查询服务 | 2d | 2017-10-09 A | 2017-10-10 A |  | 100% |  | start no earlier than 2017-10-09 |
| 20 |  | 归属业务员查询服务 | 3d | 2017-10-11 A | 2017-10-13 A |  | 100% |  | start no earlier than 2017-10-11 |
| 21 |  | 价税分离服务 | 2d | 2017-10-12 A | 2017-10-13 A |  | 100% |  | start no earlier than 2017-10-24 |
| 22 |  | 代理人、经纪人查询服务 | 5d | 2017-10-09 A | 2017-10-13 A |  | 100% |  | start no earlier than 2017-10-09 |
| 23 |  | 购货方信息查询服务 | 4d | 2017-10-11 A | 2017-10-16 A | 19 | 100% |  |  |
| 24 |  | 恐怖分子查询服务 | 2d | 2017-10-17 A | 2017-10-18 A | 23 | 100% |  |  |
| 25 |  | 承保清单归属区域查询服务 | 3d | 2017-10-09 A | 2017-10-11 A |  | 100% |  | start no earlier than 2017-10-09 |
| 26 |  | 主险、附加险标的类别查询服务 | 2d | 2017-10-12 A | 2017-10-13 A | 25 | 100% |  |  |
| 27 |  | 主险、附加险币别查询服务 | 2d | 2017-10-25 | 2017-10-26 |  |  | 41d |  |
| 28 |  | 清单号查询服务 | 2d | 2017-10-25 | 2017-10-26 |  |  | 41d |  |
| 29 |  | 清单与预投保单清单关联调用清单服务 | 2d | 2017-10-27 | 2017-10-30 | 28 |  | 41d |  |
| 30 |  | 投保人、被保险人查询服务 | 2d | 2017-10-26 A | 2017-10-27 A | 29 | 100% |  | start no earlier than 2017-10-18 |
| 31 |  | 客户新增保存服务 | 2d | 2017-10-16 A | 2017-10-17 A | 30 | 100% |  | finish no earlier than 2017-10-18 |
| 32 |  | 共保协议信息查询服务 | 3d | 2017-10-18 | 2017-10-20 | 31 |  | 45d |  |
| 33 |  | 共保人机构查询服务 | 2d | 2017-10-23 | 2017-10-24 | 32 |  | 45d |  |
| 34 |  | 条款查询服务 | 3d | 2017-10-27 | 2017-10-31 | 27 |  | 40d |  |
| 35 |  | 使用模板查询服务 | 3d | 2017-10-31 | 2017-11-02 |  |  | 39d | start no earlier than 2017-10-31 |
| 36 |  | 分户清单下载服务 | 4d | 2017-10-30 | 2017-11-02 |  |  | 32d | start no earlier than 2017-10-30 |
| 37 |  | 页面收集信息服务前后端联调(投保单收集下的所有服务联调) | 7d | 2017-11-07 | 2017-11-15 | 36 |  | 30d | start no earlier than 2017-11-07 |
| 38 | 1.3.2.1.3 | **保费计算服务** | 26d | 2017-10-12 A | 2017-11-16 |  | 69% | 28d |  |
| 39 |  | 清单调用接口服务 | 3d | 2017-10-12 A | 2017-10-16 A |  | 100% |  | start no earlier than 2017-10-12 |
| 40 |  | 保费计算 | 6d | 2017-10-17 A | 2017-10-24 A | 39 | 100% |  |  |
| 41 |  | 前后端联调测试 | 4d | 2017-11-13 | 2017-11-16 |  |  | 28d | start no earlier than 2017-11-13 |
| 42 | 1.3.2.1.4 | **投保单保存服务** | 8d | 2017-10-26 A | 2017-11-06 |  | 27% | 37d |  |
| 43 |  | 投保单转保单提供双核服务 | 3d | 2017-11-01 A | 2017-11-06 |  | 40% | 37.7d | start no earlier than 2017-10-25 |
| 44 |  | 数据校验服务 | 2d | 2017-11-03 | 2017-11-06 |  |  | 37d | start no earlier than 2017-11-03 |
| 45 |  | 投保保存服务 | 6d | 2017-10-26 A | 2017-11-02 |  | 30% | 39d | start no earlier than 2017-10-26 |
| 46 | 1.3.2.1.5 | **投保单暂存服务** | 3d | 2017-11-03 | 2017-11-07 |  |  | 36d |  |
| 47 |  | 投保暂存服务 | 3d | 2017-11-03 | 2017-11-07 |  |  | 35d | start no earlier than 2017-11-03 |
| 48 |  | 提交核保服务 | 5d | 2017-11-16 A | 2017-11-22 A |  | 100% |  | start no earlier than 2017-11-16 |
| 49 |  | 前后端联调测试 | 8d | 2017-11-23 | 2017-12-04 | 48 |  | 14d |  |
| 50 | 1.3.2.2 | **投保单查询** | 18d | 2017-10-13 A | 2017-11-07 |  | 90% | 36d |  |
| 51 |  | 投保单列表查询 | 2d | 2017-10-13 A | 2017-10-16 A |  | 100% |  | start no earlier than 2017-10-13 |
| 52 |  | 投保单撤单按钮服务 | 1d | 2017-11-07 A | 2017-11-07 A |  | 100% |  | start no earlier than 2017-11-07 |
| 53 |  | 投保单详情查询 | 3d | 2017-10-16 A | 2017-10-18 |  | 80% | 50d | start no earlier than 2017-10-16 |
| 54 |  | 前后端联调测试 | 6d | 2017-11-08 | 2017-11-15 |  |  | 27d | start no earlier than 2017-11-08 |
| 55 | 1.3.4 | **保单管理** | 17d | 2017-11-16 | 2017-12-08 |  |  | 13d |  |
| 56 | 1.3.4.1 | **保单查询** | 17d | 2017-11-16 | 2017-12-08 |  |  | 13d |  |
| 57 |  | 保单列表查询 | 2d | 2017-11-16 | 2017-11-17 |  |  | 24d | start no earlier than 2017-11-16 |
| 58 |  | 保单详情查询 | 3d | 2017-11-20 | 2017-11-22 | 57 |  | 24d |  |
| 59 |  | 前后端联调测试 | 4d | 2017-12-05 | 2017-12-08 |  |  | 10d | start no earlier than 2017-12-05 |
| 60 | 1.3.5 | **查看页面关联信息查询服务** | 6d | 2017-11-16 | 2017-11-23 |  |  | 24d |  |
| 61 |  | 投保单、保单关联查询关联信息服务 | 2d | 2017-11-16 | 2017-11-17 | 65 |  | 24d | start no earlier than 2017-11-16 |
| 62 |  | 立案号查询信息服务 | 2d | 2017-11-20 | 2017-11-21 | 61 |  | 23d |  |
| 63 |  | 预赔号查询信息服务 | 2d | 2017-11-22 | 2017-11-23 | 62 |  | 21d |  |
| 64 |  | 实赔号查询信息服务 | 2d | 2017-11-17 | 2017-11-20 |  |  | 25d | start no earlier than 2017-11-17 |
| 65 |  | 分保保单号查询信息服务 | 2d | 2017-11-21 | 2017-11-22 | 64 |  | 22d |  |
| 66 |  | 前后端联调测试 | 4d | 2017-12-05 | 2017-12-08 |  |  | 13d | start no earlier than 2017-12-05 |
| 67 | 1.3.7 | **联合出单** | 25d | 2017-11-23 | 2017-12-27 |  |  | 0d |  |
| 68 | 1.3.7.1 | **联合出单保存服务** | 9d | 2017-11-23 | 2017-12-05 |  |  | 16d |  |
| 69 |  | 数据校验服务 | 4d | 2017-11-23 | 2017-11-28 |  |  | 13d | start no earlier than 2017-11-23 |
| 70 |  | 联合出单投保保存服务 | 5d | 2017-11-29 | 2017-12-05 | 69 |  | 16d | start no earlier than 2017-11-29 |

| ID | WBS | Task | Duration | Start | Finish | Predecessors | Total float | Constraint |
| --- | --- | --- | --- | --- | --- | --- | --- | --- |
| 71 | 1.3.7.2 | **联合出单暂存服务** | 2d | 2017-12-11 | 2017-12-12 |  | 11d |  |
| 72 |  | 联合出单投保暂存服务 | 2d | 2017-12-11 | 2017-12-12 |  | 11d | start no earlier than 2017-12-11 |
| 73 |  | 联合出单提交核保 | 4d | 2017-12-11 | 2017-12-14 |  | 9d | start no earlier than 2017-12-11 |
| 74 | 1.3.8 | **客户设置** | 12d | 2017-12-11 | 2017-12-26 |  | 1d |  |
| 75 |  | 客户查询 | 3d | 2017-12-11 | 2017-12-13 |  | 5d | start no earlier than 2017-12-11 |
| 76 |  | 菜单设置及权限 | 5d | 2017-12-11 | 2017-12-15 |  | 8d | start no earlier than 2017-12-11 |
| 77 |  | 客户风险等级设置 | 3d | 2017-12-14 | 2017-12-18 |  | 7d | start no earlier than 2017-12-14 |
| 78 |  | 前后端联调测试 | 6d | 2017-12-19 | 2017-12-26 | 75 | 1d | start no earlier than 2017-12-19 |

## Version 2 (saved 2017-11-02, file 承保二组-田健-20171102.mpp)

Note of the change: source code submit

Last finish 2017-12-27 → 2017-12-04 (-23d). Complete tasks 19 → 28.

Added:

| ID | Task | Duration | Start | Finish | Predecessors | Constraint | Resources |
| --- | --- | --- | --- | --- | --- | --- | --- |
| 10 | 分库 | 1d? | 2017-10-30 A | 2017-10-30 A |  | start no earlier than 2017-10-30 | 田健 |
| 29 | 险种查询 | 1d? | 2017-11-16 A | 2017-11-16 A | 36 |  | 王保良 |
| 76 | 前后端联调测试 | 9d | 2017-11-23 | 2017-12-02 | 75 |  | 王心洋 |
| 82 | 前后端联调测试 | 2d | 2017-12-02 | 2017-12-04 |  | start no earlier than 2017-12-02 | 张俊 |

Changed:

| ID | Task | Start | Finish | Duration | Complete | Total float | Predecessors | Other |
| --- | --- | --- | --- | --- | --- | --- | --- | --- |
| 1 | **承保系统** |  | 2017-12-27 → 2017-12-04 (-23d) | 58d? → 48d? | 32% → 46% | 0d → 17d |  |  |
| 3 | **系统设计** |  | 2017-11-07 → 2017-11-05 (-2d) |  |  | 36.67d → 26.67d |  |  |
| 7 | 接口入参，出参设计 |  | 2017-11-07 → 2017-11-05 (-2d) |  |  | 36.67d → 26.67d |  |  |
| 8 | **开发** |  | 2017-12-27 → 2017-12-04 (-23d) | 58d → 48d? | 34% → 49% |  |  |  |
| 9 | 单号生成 |  | 2017-10-11 A |  | 60% → 100% | 55d → none |  |  |
| 11 | **投保单管理** |  | 2017-12-04 → 2017-11-25 (-9d) | 41d → 41d? | 54% → 64% | 17d → 7d |  |  |
| 12 | **投保单录入** |  | 2017-12-04 → 2017-11-25 (-9d) | 41d → 41d? | 52% → 66% | 17d → 7d |  |  |
| 13 | **页面初始化** |  | 2017-11-09 → 2017-11-04 (-5d) | 24d → 21d |  | 34d → 27d |  |  |
| 15 | 初始化页面前后端联调 | 2017-11-08 → 2017-11-03 (-5d) | 2017-11-09 → 2017-11-04 (-5d) |  |  | 33d → 35d |  | constraint start no earlier than 2017-11-08 → start no earlier than 2017-11-03 |
| 16 | **投保信息收集** |  | 2017-11-15 → 2017-11-18 (+3d) | 28d → 35d? | 58% → 72% | 30d → 13d |  |  |
| 28 | 主险、附加险币别查询服务 | 2017-10-25 A | 2017-10-26 A |  | 0% → 100% | 41d → none |  |  |
| 30 | 清单号查询服务 | 2017-10-25 → 2017-10-31 A (+6d) | 2017-10-26 → 2017-11-01 (+6d) |  | 0% → 50% | 41d → 30d |  | constraint none → start no earlier than 2017-10-31; resources 王心洋 → 李冬松 |
| 31 | 投保人、被保险人查询服务 | 2017-10-26 A → 2017-10-16 A (-10d) | 2017-10-27 A → 2017-10-17 A (-10d) |  |  |  | 33 → none |  |
| 32 | 客户新增保存服务 | 2017-10-16 A → 2017-10-18 A (+2d) | 2017-10-17 A → 2017-10-19 A (+2d) |  |  |  |  | resources 钱浩 [33.3%] → 钱浩 |
| 33 | 清单与预投保单清单关联调用清单服务 | 2017-10-27 → 2017-11-03 (+7d) | 2017-10-30 → 2017-11-04 (+5d) |  |  | 41d → 27d | 30 → none | constraint none → start no earlier than 2017-11-03; resources 王心洋 → 钱浩 |
| 34 | 共保人机构查询服务 | 2017-10-23 A | 2017-10-24 A |  | 0% → 100% | 45d → none | 36 → none | constraint none → start no earlier than 2017-10-23 |
| 35 | 分户清单下载服务 | 2017-10-30 A | 2017-11-02 A |  | 0% → 100% | 32d → none |  |  |
| 36 | 共保协议信息查询服务 | 2017-10-18 → 2017-11-13 (+26d) | 2017-10-20 → 2017-11-15 (+26d) |  |  | 45d → 15d | 32 → 39 |  |
| 37 | 条款查询服务 | 2017-10-27 → 2017-11-16 (+20d) | 2017-10-31 → 2017-11-18 (+18d) |  |  | 40d → 13d |  | constraint none → start no earlier than 2017-11-16; resources 宋振振 → 钱浩 |
| 38 | 使用模板查询服务 | 2017-10-31 → 2017-11-13 (+13d) | 2017-11-02 → 2017-11-15 (+13d) |  |  | 39d → 16d |  | constraint start no earlier than 2017-10-31 → start no earlier than 2017-11-13; resources 王心洋 → 宋振振 |
| 39 | 页面收集信息服务前后端联调(投保单收集下的所有服务联调) | 2017-11-07 → 2017-11-06 (-1d) | 2017-11-15 → 2017-11-12 (-3d) |  |  | 30d → 15d | 35 → none | constraint start no earlier than 2017-11-07 → start no earlier than 2017-11-06; resources 宋振振; 钱浩; 王心洋 → 田健 |
| 40 | **保费计算服务** |  | 2017-11-16 → 2017-11-10 (-6d) | 26d → 24d | 69% → 67% | 28d → 21d |  |  |
| 41 | 清单调用接口服务 |  |  |  |  |  |  | resources 钱浩 → 田健 |
| 42 | 保费计算 |  | 2017-10-24 A → 2017-10-25 A (+1d) | 6d → 7d |  |  |  |  |
| 43 | 前后端联调测试 | 2017-11-13 → 2017-11-06 (-7d) | 2017-11-16 → 2017-11-10 (-6d) | 4d → 5d |  | 28d → 21d |  | constraint start no earlier than 2017-11-13 → start no earlier than 2017-11-06; resources 田健 → 祝凯 |
| 44 | **投保单保存服务** |  | 2017-11-06 → 2017-11-25 (+19d) | 8d → 28d | 27% → 89% | 37d → 7d |  |  |
| 45 | 投保单转保单提供双核服务 |  | 2017-11-06 → 2017-11-05 A (-1d) |  | 40% → 100% | 37.7d → none |  |  |
| 46 | 数据校验服务 | 2017-11-03 → 2017-11-24 A (+21d) | 2017-11-06 → 2017-11-25 A (+19d) |  | 0% → 100% | 37d → none |  | constraint start no earlier than 2017-11-03 → start no earlier than 2017-11-24; resources 王心洋 → 何伟东 |
| 47 | 投保保存服务 |  | 2017-11-02 → 2017-11-04 (+2d) |  | 30% → 80% | 39d → 27.2d |  | resources 钱浩 → 何伟东 |
| 48 | **投保单暂存服务** |  | 2017-11-07 → 2017-11-05 (-2d) |  |  | 36d → 26d |  |  |
| 49 | 投保暂存服务 |  | 2017-11-07 → 2017-11-05 (-2d) |  |  | 35d → 26d |  | resources 钱浩 → 宋振振 |
| 50 | 提交核保服务 | 2017-11-16 A → 2017-10-23 A (-24d) | 2017-11-22 A → 2017-10-30 (-23d) | 5d → 6d | 100% → 80% | none → 24d |  |  |
| 51 | 前后端联调测试 | 2017-11-23 → 2017-11-13 (-10d) | 2017-12-04 → 2017-11-21 (-13d) |  |  | 14d → 11d |  | constraint none → start no earlier than 2017-11-13; resources 钱浩; 王心洋; 宋振振 → 钱浩 |
| 52 | **投保单查询** |  | 2017-11-07 → 2017-10-20 (-18d) | 18d → 6d |  | 36d → 38d |  |  |
| 54 | 投保单撤单按钮服务 | 2017-11-07 A → 2017-10-20 A (-18d) | 2017-11-07 A → 2017-10-20 A (-18d) |  |  |  |  | constraint start no earlier than 2017-11-07 → start no earlier than 2017-10-20; resources 王心洋 → 钱浩 |
| 56 | 前后端联调测试 | 2017-11-08 → 2017-11-13 (+5d) | 2017-11-15 → 2017-11-18 (+3d) |  |  | 27d → 13d | none → 57 | constraint start no earlier than 2017-11-08 → start no earlier than 2017-11-13; resources 王心洋 → 王保良 |
| 57 | **保单管理** | 2017-11-16 → 2017-10-25 A (-22d) | 2017-12-08 → 2017-11-09 (-29d) | 17d → 14d | 0% → 56% | 13d → 16d |  |  |
| 58 | **保单查询** | 2017-11-16 → 2017-10-25 A (-22d) | 2017-12-08 → 2017-11-09 (-29d) | 17d → 14d | 0% → 56% | 13d → 16d |  |  |
| 59 | 保单列表查询 | 2017-11-16 → 2017-10-25 A (-22d) | 2017-11-17 → 2017-10-26 A (-22d) |  | 0% → 100% | 24d → none |  | constraint start no earlier than 2017-11-16 → start no earlier than 2017-10-25; resources 宋振振 → 王心洋 |
| 60 | 保单详情查询 | 2017-11-20 → 2017-10-27 A (-24d) | 2017-11-22 → 2017-11-03 A (-19d) |  | 0% → 100% | 24d → none |  | resources 宋振振 → 王心洋 |
| 61 | 前后端联调测试 | 2017-12-05 → 2017-11-06 (-29d) | 2017-12-08 → 2017-11-09 (-29d) |  |  | 10d → 16d |  | constraint start no earlier than 2017-12-05 → start no earlier than 2017-11-06; resources 宋振振; 钱浩 → 王心洋 |
| 62 | **查看页面关联信息查询服务** | 2017-11-16 → 2017-11-13 (-3d) | 2017-11-23 → 2017-11-17 (-6d) | 6d → 5d |  | 24d → 14d |  |  |
| 63 | 投保单、保单关联查询关联信息服务 | 2017-11-16 → 2017-11-13 (-3d) | 2017-11-17 → 2017-11-14 (-3d) |  |  | 24d → 14d | 67 → none | constraint start no earlier than 2017-11-16 → start no earlier than 2017-11-13; resources 王心洋 → 钱浩 |
| 64 | 立案号查询信息服务 | 2017-11-20 → 2017-11-15 (-5d) | 2017-11-21 → 2017-11-15 (-6d) | 2d → 1d |  | 23d → 12d |  | resources 王心洋 → 钱浩 |
| 65 | 预赔号查询信息服务 | 2017-11-22 → 2017-11-16 (-6d) | 2017-11-23 → 2017-11-16 (-7d) | 2d → 1d |  | 21d → 12d |  | resources 王心洋 → 钱浩 |
| 66 | 实赔号查询信息服务 |  | 2017-11-20 → 2017-11-17 (-3d) | 2d → 1d |  | 25d → 12d | none → 65 | constraint start no earlier than 2017-11-17 → none; resources 田健 → 钱浩 |
| 67 | 分保保单号查询信息服务 | 2017-11-21 → 2017-11-16 (-5d) | 2017-11-22 → 2017-11-17 (-5d) |  |  | 22d → 14d | 66 → none | constraint none → start no earlier than 2017-11-16; resources 田健 → 宋振振 |
| 68 | 前后端联调测试 | 2017-12-05 → 2017-11-20 (-15d) | 2017-12-08 → 2017-11-24 (-14d) | 4d → 5d |  | 13d → 8d |  | constraint start no earlier than 2017-12-05 → start no earlier than 2017-11-20; resources 田健; 王心洋 → 宋振振 |
| 69 | **联合出单** | 2017-11-23 → 2017-11-10 (-13d) | 2017-12-27 → 2017-12-02 (-25d) | 25d → 21d |  | 0d → 1d |  |  |
| 70 | **联合出单保存服务** | 2017-11-23 → 2017-11-10 (-13d) | 2017-12-05 → 2017-11-16 (-19d) | 9d → 7d |  | 16d → 15d |  |  |
| 71 | 数据校验服务 | 2017-11-23 → 2017-11-10 (-13d) | 2017-11-28 → 2017-11-12 (-16d) | 4d → 3d |  | 13d → 15d |  | constraint start no earlier than 2017-11-23 → start no earlier than 2017-11-10; resources 田健 → 王心洋 |
| 72 | 联合出单投保保存服务 | 2017-11-29 → 2017-11-13 (-16d) | 2017-12-05 → 2017-11-16 (-19d) | 5d → 4d |  | 16d → 15d |  | constraint start no earlier than 2017-11-29 → start no earlier than 2017-11-09; resources 田健 → 王心洋 |
| 73 | **联合出单暂存服务** | 2017-12-11 → 2017-11-17 (-24d) | 2017-12-12 → 2017-11-18 (-24d) |  |  | 11d → 13d |  |  |
| 74 | 联合出单投保暂存服务 | 2017-12-11 → 2017-11-17 (-24d) | 2017-12-12 → 2017-11-18 (-24d) |  |  | 11d → 13d |  | constraint start no earlier than 2017-12-11 → start no earlier than 2017-11-17; resources 田健 → 王心洋 |
| 75 | 联合出单提交核保 | 2017-12-11 → 2017-11-20 (-21d) | 2017-12-14 → 2017-11-22 (-22d) | 4d → 3d |  | 9d → 1d |  | constraint start no earlier than 2017-12-11 → start no earlier than 2017-11-20 |
| 77 | **客户设置** | 2017-12-11 → 2017-11-04 (-37d) | 2017-12-26 → 2017-12-04 (-22d) | 12d → 28d |  | 1d → 0d |  |  |
| 78 | 客户查询 | 2017-12-11 → 2017-11-04 (-37d) | 2017-12-13 → 2017-11-05 (-38d) | 3d → 2d |  | 5d → 26d |  | constraint start no earlier than 2017-12-11 → finish no earlier than 2017-11-05; resources 宋振振 → 张俊 |
| 79 | 菜单设置及权限 | 2017-12-11 → 2017-11-11 (-30d) | 2017-12-15 → 2017-11-12 (-33d) | 5d → 2d |  | 8d → 19d |  | constraint start no earlier than 2017-12-11 → start no earlier than 2017-11-11; resources 钱浩 → 张俊 |
| 80 | 客户风险等级设置 | 2017-12-14 → 2017-11-28 (-16d) | 2017-12-18 → 2017-11-29 (-19d) | 3d → 2d |  | 7d → 4d | none → 81 | constraint start no earlier than 2017-12-14 → start no earlier than 2017-11-18; resources 宋振振 → 张俊 |
| 81 | 前后端联调测试 | 2017-12-19 → 2017-11-25 (-24d) | 2017-12-26 → 2017-11-27 (-29d) | 6d → 2d |  | 1d → 4d | 78 → none | constraint start no earlier than 2017-12-19 → start no earlier than 2017-11-25; resources 钱浩; 宋振振 → 张俊 |
