How a schedule from MS Project changed from version to version. A marks actual dates.

## Version 1 (saved 2017-10-23, file 承保二组-田健20171023.mpp)

Note of the change: Revert "Revert "source code submit""

| ID | WBS | Task | Duration | Start | Finish | Predecessors | Complete | Total float | Constraint |
| --- | --- | --- | --- | --- | --- | --- | --- | --- | --- |
| 1 |  | 提交核保逻辑实现 | 4d | 2017-10-16 A | 2017-10-19 |  | 75% | 39d | start no earlier than 2017-10-16 |
| 2 |  | 保费计算（从清单系统获取分户信息，计算补贴金额与自缴份额）(已完成) | 4d | 2017-10-16 A | 2017-10-19 A |  | 100% |  | start no earlier than 2006-10-16 |
| 3 |  | 开发自测 | 1d? | 2017-10-20 A | 2017-10-20 A | 2 | 100% |  |  |
| 4 | 4 | **投保单查询** | 8d? | 2017-10-18 A | 2017-10-26 |  | 59% | 36d |  |
| 5 |  | 投保单查询逻辑 | 1d? | 2017-10-18 A | 2017-10-18 A |  | 100% |  | start no earlier than 2017-10-23 |
| 6 |  | 投保单查询信息列表投保单链接 | 1d | 2017-10-19 A | 2017-10-19 A |  | 100% |  | start no earlier than 2017-10-24 |
| 7 |  | 投保单查询信息列表撤单逻辑实现 | 1d | 2017-10-20 A | 2017-10-20 A | 6 | 100% |  |  |
| 8 |  | 开发自测 | 1d? | 2017-10-20 A | 2017-10-20 |  | 50% | 41d | start no earlier than 2017-10-20 |
| 9 |  | 恐怖分子名单查询逻辑 | 0d | 2017-10-21 A | 2017-10-21 A |  | 100% |  |  |
| 10 |  | 开发自测 | 1d? | 2017-10-21 A | 2017-10-21 A | 8 | 100% |  | start no earlier than 2017-10-21 |
| 11 |  | 投保单录入页面所有下拉框配置prpdcode表公用成一个服务 | 1d | 2017-10-21 A | 2017-10-21 A |  | 100% |  | start no earlier than 2017-10-27 |
| 12 |  | 开发自测 | 1d? | 2017-10-23 A | 2017-10-23 A | 11 | 100% |  |  |
| 13 | 4.9 | **新增或修改客户信息逻辑服务** | 1d? | 2017-10-21 A | 2017-10-21 |  | 67% | 40d |  |
| 14 |  | 保存逻辑 | 1d | 2017-10-21 A | 2017-10-21 A |  | 100% |  | start no earlier than 2017-11-02 |
| 15 |  | 变更信息逻辑 | 1d | 2017-10-21 A | 2017-10-21 A | 14 | 100% |  |  |
| 16 |  | 开发自测 | 1d? | 2017-10-21 | 2017-10-21 |  |  | 40d | start no earlier than 2017-10-21 |
| 17 |  | 查看核保信息对接接口（与双核系统） | 3d | 2017-10-23 | 2017-10-25 |  |  | 36d | start no earlier than 2017-10-23 |
| 18 |  | 开发自测 | 1d? | 2017-10-26 | 2017-10-26 | 17 |  | 36d |  |
| 19 |  | 投保单查询信息列表上传对接接口 | 1d | 2017-10-23 A | 2017-10-23 A |  | 100% |  | finish no earlier than 2017-10-23 |
| 20 |  | 开发自测 | 1d? | 2017-10-24 | 2017-10-24 | 19 |  | 38d |  |
| 21 |  | 基本信息页面第三方识别说明逻辑 | 2d | 2017-12-13 A | 2017-12-14 A | 54 | 100% |  |  |
| 22 |  | 开发自测 | 1d? | 2017-12-15 A | 2017-12-15 A | 21 | 100% |  |  |
| 23 |  | 条款查询逻辑 | 1d | 2017-10-30 | 2017-10-30 |  |  | 28d | start no earlier than 2017-10-30 |
| 24 |  | 使用模板查询逻辑 | 1d | 2017-10-31 | 2017-10-31 | 23 |  | 28d |  |
| 25 |  | 开发自测 | 1d? | 2017-11-01 | 2017-11-01 | 24 |  | 28d |  |
| 26 |  | 分户清单下载 | 4d | 2017-11-07 | 2017-11-10 |  |  | 24d | start no earlier than 2017-11-07 |
| 27 |  | 开发自测 | 1d? | 2017-11-13 | 2017-11-13 | 26 |  | 24d |  |
| 28 |  | 险种的查询（联合出单的险种选择与非联合出单的险种查询） | 2d | 2017-11-02 | 2017-11-03 | 25 |  | 28d |  |
| 29 |  | 开发自测 | 1d? | 2017-11-06 | 2017-11-06 | 28 |  | 28d |  |
| 30 |  | 风险等级说明服务 | 1d | 2017-10-23 A | 2017-10-23 A |  | 100% |  | start no earlier than 2017-10-23 |
| 31 |  | 开发自测 | 1d? | 2017-10-24 A | 2017-10-24 A | 30 | 100% |  |  |
| 32 |  | 证件号码查询逻辑 | 2d | 2017-10-20 | 2017-10-21 | 1 |  | 39d |  |
| 33 |  | 开发自测 | 1d? | 2017-10-23 | 2017-10-23 | 32 |  | 39d |  |
| 34 |  | 合同信息页面清单查询（与清单系统对接） | 2d | 2017-11-09 | 2017-11-10 |  |  | 24d | start no earlier than 2017-11-09 |
| 35 |  | 开发自测 | 1d? | 2017-11-13 | 2017-11-13 | 34 |  | 24d |  |
| 36 |  | 客户类型下的国籍、职业等查询逻辑 | 2d | 2006-11-14 | 2006-11-15 |  |  | 2892d | start no earlier than 2006-11-14 |
| 37 |  | 开发自测 | 1d? | 2006-11-16 | 2006-11-16 | 36 |  | 2892d |  |
| 38 |  | 投保单保存逻辑 | 4d | 2017-10-31 A | 2017-11-03 |  | 5% | 25d | start no earlier than 2017-10-31 |
| 39 |  | 开发自测 | 1d? | 2017-11-06 | 2017-11-06 | 38 |  | 25d |  |
| 40 |  | 投保单暂存逻辑 | 3d | 2017-11-07 | 2017-11-09 | 39 |  | 25d |  |
| 41 |  | 开发自测 | 1d? | 2017-11-10 | 2017-11-10 | 40 |  | 25d |  |
| 42 |  | 清单绘制时保存清单表逻辑(与清单系统对接) | 5d | 2017-10-20 | 2017-10-25 |  |  | 32d | start no earlier than 2017-10-20 |
| 43 |  | 开发自测 | 1d | 2017-10-25 | 2017-10-25 |  |  | 37d | start no earlier than 2017-10-25 |
| 44 |  | 共保页面中共保人查询（与再保系统对接） | 2d | 2017-12-08 | 2017-12-11 | 50 |  | 4d | start no earlier than 2017-11-17 |
| 45 |  | 开发自测 | 1d? | 2017-11-21 | 2017-11-21 | 29 |  | 18d | start no earlier than 2017-11-21 |
| 46 |  | 前后端联调测试 | 6d | 2006-11-23 | 2006-11-30 |  |  | 2882d | start no earlier than 2006-11-23 |
| 47 |  | 上传影像对接接口（与影像系统） | 4d | 2017-12-01 | 2017-12-06 |  |  | 6d | start no earlier than 2017-12-01 |
| 48 |  | 开发自测 | 1d? | 2017-12-07 | 2017-12-07 | 47 |  | 6d |  |
| 49 |  | 影像查看对接接口（与影像系统） | 4d | 2017-12-01 | 2017-12-06 |  |  | 4d | start no earlier than 2017-12-01 |
| 50 |  | 开发自测 | 1d? | 2017-12-07 | 2017-12-07 | 49 |  | 4d |  |
| 51 | 35 | **保单查询** | 3d? | 2017-12-08 | 2017-12-12 |  |  | 3d |  |
| 52 |  | 保单查询逻辑 | 1d? | 2017-12-08 | 2017-12-08 |  |  | 0.8d | start no earlier than 2017-12-08 |
| 53 |  | 保单查询信息列表保单号链接 | 1d? | 2017-12-11 | 2017-12-11 | 52 |  | 0.8d |  |
| 54 |  | 开发自测 | 1d? | 2017-12-12 | 2017-12-12 | 53 |  | 0.8d |  |
| 55 |  | 联合出单单号生成的逻辑实现 | 2d | 2017-11-08 | 2017-11-09 |  |  | 26d | start no earlier than 2017-11-08 |
| 56 |  | 开发自测 | 1d? | 2017-12-11 | 2017-12-11 |  |  | 4d | start no earlier than 2017-12-11 |
| 57 |  | 联合出单的投保单生成逻辑 | 5d | 2017-12-01 | 2017-12-07 |  |  | 5d | start no earlier than 2017-12-01 |
| 58 |  | 开发自测 | 1d? | 2017-12-08 | 2017-12-08 | 57 |  | 5d |  |
| 59 |  | 联合出单的提交核保逻辑的实现 | 4d | 2017-12-11 | 2017-12-14 | 42 |  | 0d | start no earlier than 2017-12-11 |
| 60 |  | 开发自测 | 1d | 2017-12-15 | 2017-12-15 | 59 |  | 0d |  |
| 62 |  | 生成投保单工作量：74 | 1d? | 2006-10-27 | 2006-10-27 |  |  | 2906d |  |
| 63 |  | 总计工作量：101 | 1d? | 2006-10-27 | 2006-10-27 |  |  | 2906d |  |

## Version 2 (saved 2017-10-25, file 承保二组-田健20171024.mpp)

Note of the change: source code submit

Last finish stays 2017-12-15. Complete tasks 16 → 22.

Changed:

| ID | Task | Start | Finish | Duration | Complete | Total float |
| --- | --- | --- | --- | --- | --- | --- |
| 4 | **投保单查询** |  |  |  | 59% → 84% |  |
| 17 | 查看核保信息对接接口（与双核系统） | 2017-10-23 A | 2017-10-25 A |  | 0% → 100% | 36d → none |
| 18 | 开发自测 | 2017-10-26 A | 2017-10-26 A |  | 0% → 100% | 36d → none |
| 38 | 投保单保存逻辑 |  |  |  | 5% → 15% |  |
| 42 | 清单绘制时保存清单表逻辑(与清单系统对接) | 2017-10-20 A |  |  | 0% → 40% |  |
| 44 | 共保页面中共保人查询（与再保系统对接） | 2017-12-08 → 2017-11-17 A (-21d) | 2017-12-11 → 2017-11-20 (-21d) |  | 0% → 50% | 4d → 19d |
| 47 | 上传影像对接接口（与影像系统） | 2017-12-01 A | 2017-12-06 → 2017-12-01 A (-5d) | 4d → 1d | 0% → 100% | 6d → none |
| 48 | 开发自测 | 2017-12-07 → 2017-12-04 A (-3d) | 2017-12-07 → 2017-12-04 A (-3d) |  | 0% → 100% | 6d → none |
| 49 | 影像查看对接接口（与影像系统） | 2017-12-01 → 2017-10-24 A (-38d) | 2017-12-06 → 2017-10-24 A (-43d) | 4d → 1d | 0% → 100% | 4d → none |
| 50 | 开发自测 | 2017-12-07 → 2017-10-24 A (-44d) | 2017-12-07 → 2017-10-24 A (-44d) |  | 0% → 100% | 4d → none |

## Version 3 (saved 2017-10-27, file 承保二组-田健20171025.mpp)

Note of the change: Revert "Revert "source code submit""

Last finish stays 2017-12-15.

Changed:

| ID | Task | Start | Complete | Total float | Other |
| --- | --- | --- | --- | --- | --- |
| 32 | 投保单转保单逻辑编写 | 2017-10-20 A | 0% → 30% |  | was named 证件号码查询逻辑 |
| 42 | 清单绘制时保存清单表逻辑(与清单系统对接) |  | 40% → 70% |  |  |
| 51 | **保单查询** | 2017-12-08 A | 0% → 3% | 3d → 0.8d |  |
| 52 | 保单查询逻辑 | 2017-12-08 A | 0% → 10% |  |  |
