# 新一代农险种工作计划v0.9

How a schedule from MS Project changed from version to version. A marks actual dates.

## Version 1 (saved 2017-10-24, file 测试组-戴徐20271024.mpp)

Note of the change: Revert "Revert "source code submit""

| ID | WBS | Task | Duration | Start | Finish | Complete | Total float | Constraint |
| --- | --- | --- | --- | --- | --- | --- | --- | --- |
| 1 | 1 | **第三方测试** | 120d? | 2017-10-16 A | 2018-03-30 | 1% | 0d |  |
| 2 | 1.1 | **版本管理** | 120d? | 2017-10-16 A | 2018-03-30 | 1% | 0d |  |
| 3 |  | jira搭建及工作流制定 | 0d? | 2017-10-23 A | 2017-10-23 A | 100% |  | finish no earlier than 2017-10-24 |
| 4 |  | jenkins持续集成部署 | 5d? | 2017-11-06 | 2017-11-10 |  | 100d | finish no earlier than 2017-11-10 |
| 5 | 1.1.3 | **需求理解分析** | 5d? | 2017-10-23 A | 2017-10-27 | 27% | 110d |  |
| 6 |  | 承保系统需求理解分析 | 5d? | 2017-10-23 A | 2017-10-27 | 80% | 110d | finish no earlier than 2017-10-27 |
| 7 |  | 理赔系统需求理解分析 | 5d | 2017-10-23 | 2017-10-27 |  | 110d | finish no earlier than 2017-10-27 |
| 8 |  | 交易清单系统需求理解分析 | 5d | 2017-10-23 | 2017-10-27 |  | 110d | finish no earlier than 2017-10-27 |
| 9 | 1.1.4 | **测试方案制定** | 5d? | 2017-10-23 A | 2017-10-27 | 10% | 110d |  |
| 10 |  | 承保系统测试功能范围及优先级制定 | 5d? | 2017-10-23 | 2017-10-27 |  | 110d | finish no earlier than 2017-10-27 |
| 11 |  | 理赔系统测试功能范围及优先级制定 | 5d? | 2017-10-23 | 2017-10-27 |  | 110d | finish no earlier than 2017-10-27 |
| 12 |  | 交易清单系统测试功能范围及优先级制定 | 5d? | 2017-10-23 | 2017-10-27 |  | 110d | finish no earlier than 2017-10-27 |
| 13 |  | 里程碑测试计划制定 | 5d? | 2017-10-23 A | 2017-10-27 | 50% | 110d | finish no earlier than 2017-10-27 |
| 14 |  | 详细测试计划制定 | 5d? | 2017-10-23 | 2017-10-27 |  | 110d | finish no earlier than 2017-10-27 |
| 15 | 1.1.5 | **测试用例设计** | 15d? | 2017-10-16 | 2017-11-03 |  | 105d |  |
| 16 |  | 承保系统最小功能用例集 | 10d? | 2017-10-23 | 2017-11-03 |  | 105d | finish no earlier than 2017-11-03 |
| 17 |  | 理赔系统最小功能用例集 | 15d? | 2017-10-16 | 2017-11-03 |  | 105d | finish no earlier than 2017-11-03 |
| 18 |  | 交易清单系统最小功能用例集 | 15d? | 2017-10-16 | 2017-11-03 |  | 105d | finish no earlier than 2017-11-03 |
| 19 |  | 承保系统关键功能用例集 | 15d? | 2017-10-16 | 2017-11-03 |  | 105d | finish no earlier than 2017-11-03 |
| 20 |  | 理赔系统关键功能用例集 | 15d? | 2017-10-16 | 2017-11-03 |  | 105d | finish no earlier than 2017-11-03 |
| 21 |  | 交易清单系统关键功能用例集 | 15d? | 2017-10-16 | 2017-11-03 |  | 105d | finish no earlier than 2017-11-03 |
| 22 |  | 承保系统复杂功能用例集 | 15d? | 2017-10-16 | 2017-11-03 |  | 105d | finish no earlier than 2017-11-03 |
| 23 |  | 理赔系统复杂功能用例集 | 15d? | 2017-10-16 | 2017-11-03 |  | 105d | finish no earlier than 2017-11-03 |
| 24 |  | 交易清单系统复杂功能用例集 | 15d? | 2017-10-16 | 2017-11-03 |  | 105d | finish no earlier than 2017-11-03 |
| 25 | 1.1.6 | **测试执行** | 105d? | 2017-11-06 | 2018-03-30 |  | 0d |  |
| 26 |  | 承保系统测试用例执行 | 94.5d? | 2017-11-06 | 2018-03-16 |  | 10.5d | start no earlier than 2017-11-06 |
| 27 |  | 理赔系统测试用例执行 | 94.5d? | 2017-11-06 | 2018-03-16 |  | 10.5d | start no earlier than 2017-11-06 |
| 28 |  | 交易清单系统测试用例执行 | 94.5d? | 2017-11-06 | 2018-03-16 |  | 10.5d | start no earlier than 2017-11-06 |
| 29 |  | 承保系统性能测试 | 60d? | 2017-12-07 | 2018-02-28 |  | 22d | finish no earlier than 2018-02-28 |
| 30 |  | 理赔系统性能测试 | 60d? | 2017-12-07 | 2018-02-28 |  | 22d | finish no earlier than 2018-02-28 |
| 31 |  | 交易清单系统性能测试 | 60d? | 2017-12-07 | 2018-02-28 |  | 22d | finish no earlier than 2018-02-28 |
| 32 |  | 周边系统联调测试 | 30d? | 2018-01-18 | 2018-02-28 |  | 22d | finish no earlier than 2018-02-28 |
| 33 |  | 承保系统验收问题回归测试 | 30d? | 2018-01-18 | 2018-02-28 |  | 22d | finish no earlier than 2018-02-28 |
| 34 |  | 理赔系统验收问题回归测试 | 33d? | 2018-02-14 | 2018-03-30 |  | 0d | finish no earlier than 2018-03-30 |
| 35 | 1.1.7 | **测试评估** | 22d? | 2018-03-01 | 2018-03-30 |  | 0d |  |
| 36 |  | 项目测试报告输出 | 22d? | 2018-03-01 | 2018-03-30 |  | 0d | finish no earlier than 2018-03-30 |
| 37 |  | 性能测试报告输出 | 22d? | 2018-03-01 | 2018-03-30 |  | 0d | finish no earlier than 2018-03-30 |
| 38 |  | 缺陷统计分析清单 | 22d? | 2018-03-01 | 2018-03-30 |  | 0d | finish no earlier than 2018-03-30 |
| 39 |  | UAT | 44d? | 2018-01-15 | 2018-03-15 |  | 11d | start no earlier than 2018-01-15 |
| 40 |  | 上线前准备 | 44d? | 2018-01-15 | 2018-03-15 |  | 11d | start no earlier than 2018-01-15 |
| 41 |  | 系统上线 | 25d? | 2018-02-26 | 2018-03-30 |  | 0d | start no earlier than 2018-02-26 |

## Version 2 (saved 2017-10-25, file 测试组-戴徐20271025.mpp)

Note of the change: Revert "Revert "source code submit""

Last finish stays 2018-03-30. Complete tasks 1 → 3.

Changed:

| ID | Task | Start | Finish | Complete | Total float |
| --- | --- | --- | --- | --- | --- |
| 1 | **第三方测试** |  |  | 1% → 2% |  |
| 2 | **版本管理** |  |  | 1% → 2% |  |
| 5 | **需求理解分析** |  |  | 27% → 67% |  |
| 6 | 承保系统需求理解分析 |  | 2017-10-27 A | 80% → 100% | 110d → none |
| 8 | 交易清单系统需求理解分析 | 2017-10-23 A | 2017-10-27 A | 0% → 100% | 110d → none |
