How a schedule from MS Project changed from version to version. A marks actual dates.

## Version 1 (saved 2017-10-25, file 理赔二组-祁小龙20171025.mpp)

Note of the change: source code submit

| ID | WBS | Task | Duration | Start | Finish | Predecessors | Complete | Total float | Constraint |
| --- | --- | --- | --- | --- | --- | --- | --- | --- | --- |
| 1 | 1 | **理赔二组开发** | 30d? | 2017-10-23 A | 2017-11-30 |  | 20% | 0d |  |
| 2 | 1.1 | **1.结案任务处理** | 10d | 2017-10-23 A | 2017-11-02 |  | 45% | 0d |  |
| 3 |  | 需求理解 | 1d | 2017-10-23 A | 2017-10-23 A |  | 100% |  |  |
| 4 | 1.1.2 | **系统设计** | 2d | 2017-10-23 A | 2017-10-24 A |  | 100% |  |  |
| 5 | 1.1.2.1 | **接口设计** | 2d | 2017-10-23 A | 2017-10-24 A |  | 100% |  |  |
| 6 |  | 涉及接口清单整理 | 1d | 2017-10-23 A | 2017-10-23 A |  | 100% |  |  |
| 7 |  | 接口涉及数据表结构整理 | 1d | 2017-10-23 A | 2017-10-23 A |  | 100% |  |  |
| 8 |  | 接口设计 | 1d | 2017-10-24 A | 2017-10-24 A | 7 | 100% |  |  |
| 9 |  | 接口设计评审 | 1d | 2017-10-24 A | 2017-10-24 A | 7 | 100% |  |  |
| 10 | 1.1.3 | **功能开发** | 8d | 2017-10-25 A | 2017-11-02 | 9 | 10% | 0d |  |
| 11 | 1.1.3.1 | **未处理结案任务** | 3d | 2017-10-25 A | 2017-10-27 |  | 27% | 0d |  |
| 12 |  | 后端服务开发 | 2d | 2017-10-25 A | 2017-10-26 |  | 40% | 0d | start no earlier than 2017-10-23 |
| 13 |  | 单元测试 | 1d | 2017-10-27 | 2017-10-27 | 12 |  | 0d |  |
| 14 | 1.1.3.2 | **结案任务查询** | 2d | 2017-10-28 | 2017-10-30 | 13 |  | 0d |  |
| 15 |  | 后端服务开发 | 1d | 2017-10-28 | 2017-10-28 |  |  | 0d | start no earlier than 2017-10-28 |
| 16 |  | 单元测试 | 1d | 2017-10-30 | 2017-10-30 | 15 |  | 0d |  |
| 17 | 1.1.3.3 | **理赔沟通** | 2d | 2017-10-31 | 2017-11-01 | 16 |  | 0d |  |
| 18 |  | 后端服务开发 | 1d | 2017-10-31 | 2017-10-31 |  |  | 0d |  |
| 19 |  | 单元测试 | 1d | 2017-11-01 | 2017-11-01 | 18 |  | 0d |  |
| 20 |  | 前后端联调 | 1d | 2017-11-02 | 2017-11-02 | 19 |  | 0d |  |
| 21 | 1.2 | **2.重开赔案** | 8d | 2017-10-23 A | 2017-10-31 |  | 58% | 4d |  |
| 22 |  | 需求理解 | 1d | 2017-10-23 A | 2017-10-23 A |  | 100% |  |  |
| 23 | 1.2.2 | **系统设计** | 1d | 2017-10-23 A | 2017-10-23 A |  | 100% |  |  |
| 24 | 1.2.2.1 | **接口设计** | 1d | 2017-10-23 A | 2017-10-23 A |  | 100% |  |  |
| 25 |  | 涉及接口清单整理 | 1d | 2017-10-23 A | 2017-10-23 A |  | 100% |  |  |
| 26 |  | 接口涉及数据表结构整理 | 1d | 2017-10-23 A | 2017-10-23 A |  | 100% |  |  |
| 27 |  | 接口设计 | 1d | 2017-10-23 A | 2017-10-23 A |  | 100% |  |  |
| 28 |  | 接口设计评审 | 1d | 2017-10-23 A | 2017-10-23 A |  | 100% |  |  |
| 29 | 1.2.3 | **功能开发** | 6d | 2017-10-24 A | 2017-10-30 |  | 33% | 4d |  |
| 30 |  | 后端服务开发 | 5d | 2017-10-24 A | 2017-10-28 | 28 | 40% | 4d | start no earlier than 2017-10-23 |
| 31 |  | 单元测试 | 1d | 2017-10-30 | 2017-10-30 | 30 |  | 4d |  |
| 32 |  | 前后端联调 | 1d | 2017-10-31 | 2017-10-31 | 31 |  | 4d |  |
| 33 | 1.3 | **3.班表管理** | 15d | 2017-10-23 A | 2017-11-09 |  | 33% | 3d |  |
| 34 |  | 需求理解 | 1d | 2017-10-23 A | 2017-10-23 A |  | 100% |  |  |
| 35 | 1.3.2 | **系统设计** | 1d | 2017-10-23 A | 2017-10-23 A |  | 100% |  |  |
| 36 | 1.3.2.1 | **接口设计** | 1d | 2017-10-23 A | 2017-10-23 A |  | 100% |  |  |
| 37 |  | 涉及接口清单整理 | 1d | 2017-10-23 A | 2017-10-23 A |  | 100% |  |  |
| 38 |  | 接口涉及数据表结构整理 | 1d | 2017-10-23 A | 2017-10-23 A |  | 100% |  |  |
| 39 |  | 接口设计 | 1d | 2017-10-23 A | 2017-10-23 A |  | 100% |  |  |
| 40 |  | 接口设计评审 | 1d | 2017-10-23 A | 2017-10-23 A |  | 100% |  |  |
| 41 | 1.3.3 | **功能开发** | 13d | 2017-10-24 A | 2017-11-08 |  | 9% | 3d |  |
| 42 |  | 后端服务开发 | 12d | 2017-10-24 A | 2017-11-07 | 40 | 10% | 3d | start no earlier than 2017-10-23 |
| 43 |  | 单元测试 | 1d | 2017-11-08 | 2017-11-08 | 42 |  | 3d |  |
| 44 |  | 前后端联调 | 1d | 2017-11-09 | 2017-11-09 | 43 |  | 3d |  |
| 45 | 1.4 | **4.区域设置** | 7d | 2017-10-25 A | 2017-11-01 |  | 45% | 20d |  |
| 46 |  | 需求理解 | 1d | 2017-10-25 A | 2017-10-25 A |  | 100% |  |  |
| 47 | 1.4.2 | **系统设计** | 1d | 2017-10-25 A | 2017-10-25 A |  | 100% |  |  |
| 48 | 1.4.2.1 | **接口设计** | 1d | 2017-10-25 A | 2017-10-25 A |  | 100% |  |  |
| 49 |  | 涉及接口清单整理 | 1d | 2017-10-25 A | 2017-10-25 A |  | 100% |  |  |
| 50 |  | 接口涉及数据表结构整理 | 1d | 2017-10-25 A | 2017-10-25 A |  | 100% |  |  |
| 51 |  | 接口设计 | 1d | 2017-10-25 A | 2017-10-25 A |  | 100% |  |  |
| 52 |  | 接口设计评审 | 1d | 2017-10-25 A | 2017-10-25 A |  | 100% |  |  |
| 53 | 1.4.3 | **功能开发** | 5d | 2017-10-26 | 2017-10-31 |  |  | 20d |  |
| 54 |  | 区域设置后端服务开发 | 4d | 2017-10-26 | 2017-10-30 | 52 |  | 20d | start no earlier than 2017-10-25 |
| 55 |  | 区域设置单元测试 | 1d | 2017-10-31 | 2017-10-31 | 54 |  | 20d | finish no earlier than 2017-10-30 |
| 56 |  | 前后端联调 | 1d | 2017-11-01 | 2017-11-01 | 55 |  | 20d |  |
| 57 | 1.5 | **5.流程查询** | 6d | 2017-11-02 | 2017-11-09 |  |  | 8d |  |
| 58 |  | 需求理解 | 1d | 2017-11-02 | 2017-11-02 | 56 |  | 20d |  |
| 59 | 1.5.2 | **系统设计** | 1d | 2017-11-02 | 2017-11-02 |  |  | 8d |  |
| 60 | 1.5.2.1 | **接口设计** | 1d | 2017-11-02 | 2017-11-02 |  |  | 8d |  |
| 61 |  | 涉及接口清单整理 | 1d | 2017-11-02 | 2017-11-02 |  |  | 20d | start no earlier than 2017-11-02 |
| 62 |  | 接口涉及数据表结构整理 | 1d | 2017-11-02 | 2017-11-02 |  |  | 20d | start no earlier than 2017-11-02 |
| 63 |  | 接口设计 | 1d | 2017-11-02 | 2017-11-02 |  |  | 20d | start no earlier than 2017-11-02 |
| 64 |  | 接口设计评审 | 1d | 2017-11-02 | 2017-11-02 |  |  | 8d | start no earlier than 2017-11-02 |
| 65 | 1.5.3 | **功能开发** | 4d | 2017-11-03 | 2017-11-08 | 64 |  | 8d |  |
| 66 |  | 流程查询后端服务开发 | 3d | 2017-11-03 | 2017-11-07 |  |  | 8d | start no earlier than 2017-11-02 |
| 67 |  | 单元测试 | 1d | 2017-11-08 | 2017-11-08 | 66 |  | 8d | start no earlier than 2017-11-02 |
| 68 |  | 前后端联调 | 1d | 2017-11-09 | 2017-11-09 | 67 |  | 8d |  |
| 69 | 1.6 | **6.理赔打印** | 18d | 2017-11-01 | 2017-11-24 |  |  | 4d |  |
| 70 |  | 需求理解 | 1d | 2017-11-01 | 2017-11-01 | 32 |  | 4d |  |

| ID | WBS | Task | Duration | Start | Finish | Predecessors | Complete | Total float | Constraint |
| --- | --- | --- | --- | --- | --- | --- | --- | --- | --- |
| 71 | 1.6.2 | **系统设计** | 1d | 2017-11-02 | 2017-11-02 |  |  | 4d |  |
| 72 | 1.6.2.1 | **接口设计** | 1d | 2017-11-02 | 2017-11-02 |  |  | 4d |  |
| 73 |  | 涉及接口清单整理 | 1d | 2017-11-02 | 2017-11-02 | 70 |  | 20d |  |
| 74 |  | 接口涉及数据表结构整理 | 1d | 2017-11-02 | 2017-11-02 | 70 |  | 20d |  |
| 75 |  | 接口设计 | 1d | 2017-11-02 | 2017-11-02 | 70 |  | 20d |  |
| 76 |  | 接口设计评审 | 1d | 2017-11-02 | 2017-11-02 | 70 |  | 4d |  |
| 77 | 1.6.3 | **功能开发** | 15d | 2017-11-03 | 2017-11-23 |  |  | 4d |  |
| 78 |  | 农险赔案卷宗封面查询及打印数据查询 | 1d | 2017-11-03 | 2017-11-03 | 76 |  | 4d | finish no earlier than 2017-10-25 |
| 79 |  | 农房保险赔案卷宗封面查询及打印数据查询 | 1d | 2017-11-06 | 2017-11-06 | 78 |  | 4d | finish no earlier than 2017-10-25 |
| 80 |  | 现场查勘报告打印查询及打印数据查询 | 1d | 2017-11-07 | 2017-11-07 | 79 |  | 4d | start no earlier than 2017-10-30 |
| 81 |  | 赔款理算书打印查询及打印数据查询 | 2d | 2017-11-08 | 2017-11-09 | 80 |  | 4d |  |
| 82 |  | 结案报告查询及打印数据查询 | 2d | 2017-11-10 | 2017-11-13 | 81 |  | 4d |  |
| 83 |  | 赔款收据查询及打印数据查询 | 2d | 2017-11-14 | 2017-11-15 | 82 |  | 4d |  |
| 84 |  | 注销/拒赔通知书查询及打印数据查询 | 1d | 2017-11-16 | 2017-11-16 | 83 |  | 4d |  |
| 85 |  | 保单抄件查询及打印数据查询 | 2d | 2017-11-17 | 2017-11-20 | 84 |  | 4d |  |
| 86 |  | 自动生成电子单证及发送影像资料 | 2d | 2017-11-21 | 2017-11-22 | 85 |  | 4d |  |
| 87 |  | 单元测试 | 1d | 2017-11-23 | 2017-11-23 | 86 |  | 4d |  |
| 88 |  | 前后端联调 | 1d | 2017-11-24 | 2017-11-24 | 87 |  | 4d |  |
| 89 | 1.7 | **7.支付录入** | 18d? | 2017-10-24 A | 2017-11-15 |  | 29% | 11d |  |
| 90 |  | 7.支付录入 | 0d? | 2017-10-24 | 2017-10-24 |  |  | 0d | must start on 2017-10-24 |
| 91 |  | 7.支付录入 | 0d? | 2017-11-15 | 2017-11-15 |  |  | 0d | must finish on 2017-11-15 |
| 92 |  | 需求理解 | 1d | 2017-10-24 A | 2017-10-24 A |  | 100% |  |  |
| 93 | 1.7.4 | **系统设计** | 2d | 2017-10-24 A | 2017-10-25 A |  | 100% |  |  |
| 94 | 1.7.4.1 | **接口设计** | 2d | 2017-10-24 A | 2017-10-25 A |  | 100% |  |  |
| 95 |  | 涉及接口清单整理 | 1d | 2017-10-24 A | 2017-10-24 A |  | 100% |  |  |
| 96 |  | 接口涉及数据表结构整理 | 1d | 2017-10-24 A | 2017-10-24 A |  | 100% |  |  |
| 97 |  | 接口设计 | 1d | 2017-10-25 A | 2017-10-25 A | 92 | 100% |  |  |
| 98 |  | 接口设计评审 | 1d | 2017-10-25 A | 2017-10-25 A | 92 | 100% |  |  |
| 99 | 1.7.5 | **功能开发** | 16d | 2017-10-25 A | 2017-11-14 |  | 9% | 11d |  |
| 100 |  | 支付管理查询 | 2d | 2017-10-25 A | 2017-10-26 | 98 | 70% | 11d | start no earlier than 2017-10-24 |
| 101 |  | 整单支付保存 | 2d | 2017-10-27 | 2017-10-28 | 100 |  | 11d |  |
| 102 |  | 清单支付模板查询及下载 | 2d | 2017-10-30 | 2017-10-31 | 101 |  | 11d |  |
| 103 |  | 清单支付清单导入保存 | 2d | 2017-11-01 | 2017-11-02 | 102 |  | 11d |  |
| 104 |  | 整单支付修改 | 1d | 2017-11-03 | 2017-11-03 | 103 |  | 11d |  |
| 105 |  | 清单支付修改 | 1d | 2017-11-06 | 2017-11-06 | 104 |  | 11d |  |
| 106 |  | 电子回单下载 | 2d | 2017-11-07 | 2017-11-08 | 105 |  | 11d |  |
| 107 |  | 支付信息查询 | 1d | 2017-11-09 | 2017-11-09 | 106 |  | 11d |  |
| 108 |  | 支付情况统计表 | 2d | 2017-11-10 | 2017-11-13 | 107 |  | 11d |  |
| 109 |  | 单元测试 | 1d | 2017-11-14 | 2017-11-14 | 108 |  | 11d |  |
| 110 |  | 前后端联调 | 1d | 2017-11-15 | 2017-11-15 | 109 |  | 11d |  |
| 111 | 1.8 | **8.运维管理** | 7d | 2017-11-10 | 2017-11-20 |  |  | 8d |  |
| 112 |  | 需求理解 | 1d | 2017-11-10 | 2017-11-10 | 68 |  | 14d |  |
| 113 | 1.8.2 | **系统设计** | 2d | 2017-11-10 | 2017-11-13 |  |  | 8d |  |
| 114 | 1.8.2.1 | **接口设计** | 2d | 2017-11-10 | 2017-11-13 |  |  | 8d |  |
| 115 |  | 涉及接口清单整理 | 1d | 2017-11-10 | 2017-11-10 | 68 |  | 14d |  |
| 116 |  | 接口涉及数据表结构整理 | 1d | 2017-11-10 | 2017-11-10 | 68 |  | 8d |  |
| 117 |  | 接口设计 | 1d | 2017-11-13 | 2017-11-13 | 116 |  | 13d |  |
| 118 |  | 接口设计评审 | 1d | 2017-11-13 | 2017-11-13 | 116 |  | 8d |  |
| 119 | 1.8.3 | **功能开发** | 5d | 2017-11-14 | 2017-11-20 |  |  | 8d |  |
| 120 |  | 核赔工作流补传 | 3d | 2017-11-14 | 2017-11-16 | 118 |  | 8d |  |
| 121 |  | 单元测试 | 1d | 2017-11-17 | 2017-11-17 | 120 |  | 8d |  |
| 122 |  | 前后端联调 | 1d | 2017-11-20 | 2017-11-20 | 121 |  | 8d |  |
| 123 | 1.9 | **9.交易清单系统** | 20d | 2017-11-03 | 2017-11-30 |  |  | 0d |  |
| 124 |  | 需求规则收集学习 | 1d | 2017-11-03 | 2017-11-03 | 20 |  | 0d |  |
| 125 | 1.9.2 | **系统设计** | 2d | 2017-11-06 | 2017-11-07 |  |  | 0d |  |
| 126 | 1.9.2.1 | **接口设计** | 2d | 2017-11-06 | 2017-11-07 |  |  | 0d |  |
| 127 |  | 涉及接口清单整理 | 1d | 2017-11-06 | 2017-11-06 | 124 |  | 0d |  |
| 128 |  | 接口涉及数据表结构整理 | 1d | 2017-11-06 | 2017-11-06 | 124 |  | 18d |  |
| 129 |  | 接口设计 | 1d | 2017-11-07 | 2017-11-07 | 127 |  | 17d |  |
| 130 |  | 接口设计评审 | 1d | 2017-11-07 | 2017-11-07 | 127 |  | 0d |  |
| 131 | 1.9.3 | **功能开发** | 16d | 2017-11-08 | 2017-11-29 |  |  | 0d |  |
| 132 |  | 提供损失清单同步接口 | 6d | 2017-11-08 | 2017-11-15 | 130 |  | 0d |  |
| 133 |  | 提供理算损失清单回写信息接口 | 6d | 2017-11-16 | 2017-11-23 | 132 |  | 0d |  |
| 134 |  | 提供险别损失清单同步接口 | 3d | 2017-11-24 | 2017-11-28 | 133 |  | 0d |  |
| 135 |  | 单元测试 | 1d | 2017-11-29 | 2017-11-29 | 134 |  | 0d |  |
| 136 |  | 前后端联调 | 1d | 2017-11-30 | 2017-11-30 | 135 |  | 0d |  |
| 137 | 1.10 | **10.个人中心** | 14d | 2017-11-10 | 2017-11-29 |  |  | 1d |  |
| 138 |  | 需求理解 | 1d | 2017-11-10 | 2017-11-10 | 44 |  | 3d |  |
| 139 | 1.10.2 | **系统设计** | 2d | 2017-11-13 | 2017-11-14 |  |  | 3d |  |
| 140 | 1.10.2.1 | **接口设计** | 2d | 2017-11-13 | 2017-11-14 |  |  | 3d |  |

| ID | WBS | Task | Duration | Start | Finish | Predecessors | Total float | Constraint |
| --- | --- | --- | --- | --- | --- | --- | --- | --- |
| 141 |  | 涉及接口清单整理 | 1d | 2017-11-13 | 2017-11-13 | 138 | 3d |  |
| 142 |  | 接口涉及数据表结构整理 | 1d | 2017-11-13 | 2017-11-13 | 138 | 13d |  |
| 143 |  | 接口设计 | 1d | 2017-11-14 | 2017-11-14 | 141 | 12d |  |
| 144 |  | 接口设计评审 | 1d | 2017-11-14 | 2017-11-14 | 141 | 3d |  |
| 145 | 1.10.3 | **功能开发** | 8d | 2017-11-17 | 2017-11-28 |  | 1d |  |
| 146 |  | 公共查询 | 2d | 2017-11-17 | 2017-11-20 | 144 | 1d | start no earlier than 2017-11-17 |
| 147 |  | 调度任务 | 1d | 2017-11-21 | 2017-11-21 | 146 | 1d |  |
| 148 |  | 查勘定损任务 | 1d | 2017-11-22 | 2017-11-22 | 147 | 1d |  |
| 149 |  | 立案任务 | 1d | 2017-11-23 | 2017-11-23 | 148 | 1d |  |
| 150 |  | 理算任务 | 1d | 2017-11-24 | 2017-11-24 | 149 | 1d |  |
| 151 |  | 结案任务 | 1d | 2017-11-27 | 2017-11-27 | 150 | 1d |  |
| 152 |  | 单元测试 | 1d | 2017-11-28 | 2017-11-28 | 151 | 1d |  |
| 153 |  | 前后端联调 | 1d | 2017-11-29 | 2017-11-29 | 152 | 1d |  |

## Version 2 (saved 2017-10-27, file 理赔二组-祁小龙20171026.mpp)

Note of the change: source code submit

Last finish 2017-11-30 → 2017-12-08 (+8d). Complete tasks 25 → 0.

Added:

| ID | Task | Duration | Start | Finish | Predecessors | Constraint | Resources |
| --- | --- | --- | --- | --- | --- | --- | --- |
| 3 | **结案任务处理** | 1d? | 2017-10-27 A | 2017-10-27 |  |  |  |
| 4 | 业务分析 | 1d? | 2017-10-27 A | 2017-10-27 |  | start no earlier than 2017-10-27 | 董坤 |
| 6 | 接口设计、文档编写 | 1d? | 2017-10-27 A | 2017-10-27 |  | start no earlier than 2017-10-27 | 董坤 |
| 8 | **系统主页** | 1d? | 2017-10-26 A | 2017-10-26 |  |  |  |
| 9 | 业务分析 | 1d? | 2017-10-26 A | 2017-10-26 |  | start no earlier than 2017-10-26 | 祁小龙 |
| 11 | 接口设计、文档编写 | 1d? | 2017-10-26 A | 2017-10-26 |  | start no earlier than 2017-10-26 | 祁小龙 |
| 13 | **重开赔案** | 1d? | 2017-10-26 A | 2017-10-26 |  |  |  |
| 14 | 业务分析 | 1d? | 2017-10-26 A | 2017-10-26 |  |  | 祁小龙 |
| 16 | 接口设计、文档编写 | 1d? | 2017-10-26 A | 2017-10-26 |  |  | 祁小龙 |
| 18 | **个人中心** | 1d? | 2017-10-28 A | 2017-10-28 | 7 |  |  |
| 19 | 业务分析 | 1d? | 2017-10-28 A | 2017-10-28 |  | start no earlier than 2017-10-27 | 董坤 |
| 21 | 接口设计、文档编写 | 1d? | 2017-10-28 A | 2017-10-28 |  | start no earlier than 2017-10-27 | 董坤 |
| 23 | **理赔打印** | 1d? | 2017-10-27 | 2017-10-27 | 17 |  |  |
| 24 | 业务分析 | 1d? | 2017-10-27 | 2017-10-27 |  |  | 祁小龙 |
| 26 | 接口设计、文档编写 | 1d? | 2017-10-27 | 2017-10-27 |  |  | 祁小龙 |
| 28 | **流程查询** | 1d? | 2017-10-28 | 2017-10-28 | 27 |  |  |
| 29 | 业务分析 | 1d? | 2017-10-28 | 2017-10-28 |  |  | 祁小龙 |
| 31 | 接口设计、文档编写 | 1d? | 2017-10-28 | 2017-10-28 |  |  | 祁小龙 |
| 33 | **运维管理** | 1d? | 2017-10-30 | 2017-10-30 | 22 |  |  |
| 34 | 业务分析 | 1d? | 2017-10-30 | 2017-10-30 |  |  | 董坤 |
| 36 | 接口设计、文档编写 | 1d? | 2017-10-30 | 2017-10-30 |  |  | 董坤 |
| 38 | **支付管理** | 1d? | 2017-10-31 A | 2017-10-31 | 32 |  |  |
| 39 | 业务分析 | 1d? | 2017-10-31 A | 2017-10-31 |  |  | 祁小龙 |
| 41 | 接口设计、文档编写 | 1d? | 2017-10-31 A | 2017-10-31 |  |  | 祁小龙 |
| 43 | **班表管理** | 1d? | 2017-10-31 A | 2017-10-31 | 37 |  |  |
| 44 | 业务分析 | 1d? | 2017-10-31 A | 2017-10-31 |  |  | 董坤 |
| 46 | 接口设计、文档编写 | 1d? | 2017-10-31 A | 2017-10-31 |  |  | 董坤 |
| 48 | **损失率清单查询接口（种植险）** | 1d? | 2017-11-01 | 2017-11-01 | 47 |  |  |
| 49 | 业务分析 | 1d? | 2017-11-01 | 2017-11-01 |  |  | 董坤 |
| 51 | 接口设计、文档编写 | 1d? | 2017-11-01 | 2017-11-01 |  |  | 董坤 |
| 53 | **理赔支付清单持久化接口（种植险）** | 1d? | 2017-11-01 | 2017-11-01 | 47 |  |  |
| 54 | 业务分析 | 1d? | 2017-11-01 | 2017-11-01 |  |  | 董坤 |
| 55 | 接口涉及数据表结构整理 | 1d? | 2017-11-01 | 2017-11-01 |  |  | 董坤 |
| 56 | 接口设计、文档编写 | 1d? | 2017-11-01 | 2017-11-01 |  |  | 董坤 |
| 57 | 接口设计评审 | 1d? | 2017-11-01 | 2017-11-01 |  |  | 董坤 |
| 58 | **损失清单查询接口（养殖险）** | 1d? | 2017-11-01 | 2017-11-01 | 42 |  |  |
| 59 | 业务分析 | 1d? | 2017-11-01 | 2017-11-01 |  |  | 祁小龙 |
| 60 | 接口涉及数据表结构整理 | 1d? | 2017-11-01 | 2017-11-01 |  |  | 祁小龙 |
| 61 | 接口设计、文档编写 | 1d? | 2017-11-01 | 2017-11-01 |  |  | 祁小龙 |
| 62 | 接口设计评审 | 1d? | 2017-11-01 | 2017-11-01 |  |  | 祁小龙 |
| 63 | **理赔支付清单持久化接口（养殖险）** | 1d? | 2017-11-01 | 2017-11-01 | 42 |  |  |
| 64 | 业务分析 | 1d? | 2017-11-01 | 2017-11-01 |  |  | 祁小龙 |
| 65 | 接口涉及数据表结构整理 | 1d? | 2017-11-01 | 2017-11-01 |  |  | 祁小龙 |
| 66 | 接口设计、文档编写 | 1d? | 2017-11-01 | 2017-11-01 |  |  | 祁小龙 |
| 67 | 接口设计评审 | 1d? | 2017-11-01 | 2017-11-01 |  |  | 祁小龙 |
| 136 | 理赔支付清单持久化接口（养殖险） | 3d | 2017-12-04 | 2017-12-06 | 135 |  |  |

Removed: 3 需求理解; 5 接口设计; 6 涉及接口清单整理; 8 接口设计; 22 需求理解; 23 系统设计; 24 接口设计; 25 涉及接口清单整理; 27 接口设计; 34 需求理解; 35 系统设计; 36 接口设计; 37 涉及接口清单整理; 39 接口设计; 46 需求理解; 47 系统设计; 48 接口设计; 49 涉及接口清单整理; 51 接口设计; 58 需求理解; 59 系统设计; 60 接口设计; 61 涉及接口清单整理; 63 接口设计; 70 需求理解; 71 系统设计; 72 接口设计; 73 涉及接口清单整理; 75 接口设计; 90 7.支付录入; 91 7.支付录入; 92 需求理解; 93 系统设计; 94 接口设计; 95 涉及接口清单整理; 97 接口设计; 112 需求理解; 113 系统设计; 114 接口设计; 115 涉及接口清单整理; 117 接口设计; 124 需求规则收集学习; 125 系统设计; 126 接口设计; 127 涉及接口清单整理; 129 接口设计; 138 需求理解; 139 系统设计; 140 接口设计; 141 涉及接口清单整理; 143 接口设计

Changed:

| ID | Task | Start | Finish | Duration | Complete | Total float | Predecessors | Other |
| --- | --- | --- | --- | --- | --- | --- | --- | --- |
| 1 | **理赔二组开发** | 2017-10-23 A → 2017-10-24 A (+1d) | 2017-11-30 → 2017-12-08 (+8d) | 30d? → 36d? | 20% → 9% |  |  |  |
| 2 | **系统设计** | 2017-10-23 A → 2017-10-26 A (+3d) | 2017-10-24 A → 2017-11-01 (+8d) | 2d → 6d? | 100% → 12% | none → 28d |  |  |
| 5 | 接口涉及数据表结构整理 | 2017-10-23 A → 2017-10-27 A (+4d) | 2017-10-23 A → 2017-10-27 (+4d) | 1d → 1d? | 100% → 30% | none → 32d |  | constraint none → start no earlier than 2017-10-27 |
| 7 | 接口设计评审 | 2017-10-24 A → 2017-10-27 A (+3d) | 2017-10-24 A → 2017-10-27 (+3d) | 1d → 1d? | 100% → 30% | none → 0d | 5 → none | constraint none → start no earlier than 2017-10-27 |
| 10 | 接口涉及数据表结构整理 | 2017-10-23 A → 2017-10-26 A (+3d) | 2017-10-23 A → 2017-10-26 (+3d) | 1d → 1d? | 100% → 50% | none → 33d |  | constraint none → start no earlier than 2017-10-26; resources 王志文 → 祁小龙 |
| 12 | 接口设计评审 | 2017-10-23 A → 2017-10-26 A (+3d) | 2017-10-23 A → 2017-10-26 (+3d) | 1d → 1d? | 100% → 50% | none → 33d |  | constraint none → start no earlier than 2017-10-26; resources 王志文 → 祁小龙 |
| 15 | 接口涉及数据表结构整理 | 2017-10-23 A → 2017-10-26 A (+3d) | 2017-10-23 A → 2017-10-26 (+3d) | 1d → 1d? | 100% → 40% | none → 33d |  | resources 李文刚 → 祁小龙 |
| 17 | 接口设计评审 | 2017-10-23 A → 2017-10-26 A (+3d) | 2017-10-23 A → 2017-10-26 (+3d) | 1d → 1d? | 100% → 40% | none → 1d |  | resources 李文刚 → 祁小龙 |
| 20 | 接口涉及数据表结构整理 | 2017-10-25 A → 2017-10-28 A (+3d) | 2017-10-25 A → 2017-10-28 (+3d) | 1d → 1d? | 100% → 10% | none → 31d |  | constraint none → start no earlier than 2017-10-27; resources 孙朋飞 → 董坤 |
| 22 | 接口设计评审 | 2017-10-25 A → 2017-10-28 A (+3d) | 2017-10-25 A → 2017-10-28 (+3d) | 1d → 1d? | 100% → 10% | none → 0d |  | constraint none → start no earlier than 2017-10-27; resources 孙朋飞 → 董坤 |
| 25 | 接口涉及数据表结构整理 | 2017-11-02 → 2017-10-27 (-6d) | 2017-11-02 → 2017-10-27 (-6d) | 1d → 1d? |  | 20d → 32d |  | constraint start no earlier than 2017-11-02 → none; resources 孙朋飞 → 祁小龙 |
| 27 | 接口设计评审 | 2017-11-02 → 2017-10-27 (-6d) | 2017-11-02 → 2017-10-27 (-6d) | 1d → 1d? |  | 8d → 1d |  | constraint start no earlier than 2017-11-02 → none; resources 孙朋飞 → 祁小龙 |
| 30 | 接口涉及数据表结构整理 | 2017-11-02 → 2017-10-28 (-5d) | 2017-11-02 → 2017-10-28 (-5d) | 1d → 1d? |  | 20d → 31d | 需求理解 → none | resources 王志文 → 祁小龙 |
| 32 | 接口设计评审 | 2017-11-02 → 2017-10-28 (-5d) | 2017-11-02 → 2017-10-28 (-5d) | 1d → 1d? |  | 4d → 1d | 需求理解 → none | resources 王志文 → 祁小龙 |
| 35 | 接口涉及数据表结构整理 | 2017-10-24 A → 2017-10-30 (+6d) | 2017-10-24 A → 2017-10-30 (+6d) | 1d → 1d? | 100% → 0% | none → 30d |  | resources 祁小龙 → 董坤 |
| 37 | 接口设计评审 | 2017-10-25 A → 2017-10-30 (+5d) | 2017-10-25 A → 2017-10-30 (+5d) | 1d → 1d? | 100% → 0% | none → 0d | 需求理解 → none | resources 祁小龙 → 董坤 |
| 40 | 接口涉及数据表结构整理 | 2017-11-10 → 2017-10-31 A (-10d) | 2017-11-10 → 2017-10-31 (-10d) | 1d → 1d? | 0% → 10% | 8d → 29d | 99 → none | resources 孙朋飞 → 祁小龙 |
| 42 | 接口设计评审 | 2017-11-13 → 2017-10-31 A (-13d) | 2017-11-13 → 2017-10-31 (-13d) | 1d → 1d? | 0% → 10% | 8d → 0d | 40 → none | resources 孙朋飞 → 祁小龙 |
| 45 | 接口涉及数据表结构整理 | 2017-11-06 → 2017-10-31 A (-6d) | 2017-11-06 → 2017-10-31 (-6d) | 1d → 1d? | 0% → 10% | 18d → 29d | 需求规则收集学习 → none |  |
| 47 | 接口设计评审 | 2017-11-07 → 2017-10-31 A (-7d) | 2017-11-07 → 2017-10-31 (-7d) | 1d → 1d? | 0% → 10% |  | 涉及接口清单整理 → none |  |
| 50 | 接口涉及数据表结构整理 | 2017-11-13 → 2017-11-01 (-12d) | 2017-11-13 → 2017-11-01 (-12d) | 1d → 1d? |  | 13d → 28d | 需求理解 → none | resources 李文刚 → 董坤 |
| 52 | 接口设计评审 | 2017-11-14 → 2017-11-01 (-13d) | 2017-11-14 → 2017-11-01 (-13d) | 1d → 1d? |  | 3d → 28d | 涉及接口清单整理 → none | resources 李文刚 → 董坤 |
| 68 | **功能开发** | 2017-10-25 A → 2017-10-24 A (-1d) | 2017-11-02 → 2017-12-08 (+36d) | 8d → 36d | 10% → 7% |  | 7 → none |  |
| 69 | **1.结案任务处理** | 2017-10-23 A → 2017-11-02 A (+10d) | 2017-11-02 → 2017-11-10 (+8d) | 10d → 8d | 45% → 10% |  | none → 57 |  |
| 70 | **未处理结案任务** | 2017-10-25 A → 2017-11-02 A (+8d) | 2017-10-27 → 2017-11-04 (+8d) |  |  |  |  |  |
| 71 | 后端服务开发 | 2017-10-25 A → 2017-11-02 A (+8d) | 2017-10-26 → 2017-11-03 (+8d) |  |  |  |  | constraint start no earlier than 2017-10-23 → none |
| 72 | 单元测试 | 2017-10-27 → 2017-11-04 (+8d) | 2017-10-27 → 2017-11-04 (+8d) |  |  |  |  |  |
| 73 | **结案任务查询** | 2017-10-28 → 2017-11-06 (+9d) | 2017-10-30 → 2017-11-07 (+8d) |  |  |  |  |  |
| 74 | 后端服务开发 | 2017-10-28 → 2017-11-06 (+9d) | 2017-10-28 → 2017-11-06 (+9d) |  |  |  |  |  |
| 75 | 单元测试 | 2017-10-30 → 2017-11-07 (+8d) | 2017-10-30 → 2017-11-07 (+8d) |  |  |  |  |  |
| 76 | **理赔沟通** | 2017-10-31 → 2017-11-08 (+8d) | 2017-11-01 → 2017-11-09 (+8d) |  |  |  |  |  |
| 77 | 后端服务开发 | 2017-10-31 → 2017-11-08 (+8d) | 2017-10-31 → 2017-11-08 (+8d) |  |  |  |  |  |
| 78 | 单元测试 | 2017-11-01 → 2017-11-09 (+8d) | 2017-11-01 → 2017-11-09 (+8d) |  |  |  |  |  |
| 79 | 前后端联调 | 2017-11-02 → 2017-11-10 (+8d) | 2017-11-02 → 2017-11-10 (+8d) |  |  |  |  |  |
| 80 | **2.重开赔案** | 2017-10-23 A → 2017-10-24 A (+1d) |  | 8d → 7d | 58% → 29% | 4d → 13d |  |  |
| 82 | 后端服务开发 |  |  |  |  | 4d → 13d | 12 → none |  |
| 85 | **3.班表管理** | 2017-10-23 A → 2017-10-24 A (+1d) | 2017-11-09 → 2017-11-08 (-1d) | 15d → 14d | 33% → 13% | 3d → 13d |  |  |
| 86 | **功能开发** |  | 2017-11-08 → 2017-11-07 (-1d) |  | 9% → 14% | 3d → 13d |  |  |
| 87 | 后端服务开发 |  | 2017-11-07 → 2017-11-06 (-1d) |  | 10% → 15% | 3d → 13d | 17 → none |  |
| 88 | 单元测试 | 2017-11-08 → 2017-11-07 (-1d) | 2017-11-08 → 2017-11-07 (-1d) |  |  | 3d → 13d |  |  |
| 89 | 前后端联调 | 2017-11-09 → 2017-11-08 (-1d) | 2017-11-09 → 2017-11-08 (-1d) |  |  | 3d → 13d |  |  |
| 90 | **4.区域设置** |  | 2017-11-01 → 2017-10-31 (-1d) | 7d → 6d | 45% → 33% | 20d → 29d |  |  |
| 91 | **功能开发** | 2017-10-26 → 2017-10-25 A (-1d) | 2017-10-31 → 2017-10-30 (-1d) |  | 0% → 40% | 20d → 29d |  |  |
| 92 | 区域设置后端服务开发 | 2017-10-26 → 2017-10-25 A (-1d) | 2017-10-30 → 2017-10-28 (-2d) |  | 0% → 50% | 20d → 29d | 22 → none |  |
| 93 | 区域设置单元测试 | 2017-10-31 → 2017-10-30 (-1d) | 2017-10-31 → 2017-10-30 (-1d) |  |  | 20d → 29d |  |  |
| 94 | 前后端联调 | 2017-11-01 → 2017-10-31 (-1d) | 2017-11-01 → 2017-10-31 (-1d) |  |  | 20d → 29d |  |  |
| 95 | **5.流程查询** |  | 2017-11-09 → 2017-11-07 (-2d) | 6d → 5d |  | 8d → 18d |  |  |
| 96 | **功能开发** | 2017-11-03 → 2017-11-02 (-1d) | 2017-11-08 → 2017-11-06 (-2d) |  |  | 8d → 18d | 27 → none |  |
| 97 | 流程查询后端服务开发 | 2017-11-03 → 2017-11-02 (-1d) | 2017-11-07 → 2017-11-04 (-3d) |  |  | 8d → 18d |  |  |
| 98 | 单元测试 | 2017-11-08 → 2017-11-06 (-2d) | 2017-11-08 → 2017-11-06 (-2d) |  |  | 8d → 18d |  |  |
| 99 | 前后端联调 | 2017-11-09 → 2017-11-07 (-2d) | 2017-11-09 → 2017-11-07 (-2d) |  |  | 8d → 18d |  |  |
| 100 | **6.理赔打印** |  | 2017-11-24 → 2017-11-21 (-3d) | 18d → 16d |  | 4d → 13d |  |  |
| 101 | **功能开发** | 2017-11-03 → 2017-11-01 (-2d) | 2017-11-23 → 2017-11-20 (-3d) |  |  | 4d → 13d |  |  |
| 102 | 农险赔案卷宗封面查询及打印数据查询 | 2017-11-03 → 2017-11-01 (-2d) | 2017-11-03 → 2017-11-01 (-2d) |  |  | 4d → 13d | 32 → 84 |  |
| 103 | 农房保险赔案卷宗封面查询及打印数据查询 | 2017-11-06 → 2017-11-02 (-4d) | 2017-11-06 → 2017-11-02 (-4d) |  |  | 4d → 13d |  |  |
| 104 | 现场查勘报告打印查询及打印数据查询 | 2017-11-07 → 2017-11-03 (-4d) | 2017-11-07 → 2017-11-03 (-4d) |  |  | 4d → 13d |  |  |
| 105 | 赔款理算书打印查询及打印数据查询 | 2017-11-08 → 2017-11-04 (-4d) | 2017-11-09 → 2017-11-06 (-3d) |  |  | 4d → 13d |  |  |
| 106 | 结案报告查询及打印数据查询 | 2017-11-10 → 2017-11-07 (-3d) | 2017-11-13 → 2017-11-08 (-5d) |  |  | 4d → 13d |  |  |
| 107 | 赔款收据查询及打印数据查询 | 2017-11-14 → 2017-11-09 (-5d) | 2017-11-15 → 2017-11-10 (-5d) |  |  | 4d → 13d |  |  |
| 108 | 注销/拒赔通知书查询及打印数据查询 | 2017-11-16 → 2017-11-13 (-3d) | 2017-11-16 → 2017-11-13 (-3d) |  |  | 4d → 13d |  |  |
| 109 | 保单抄件查询及打印数据查询 | 2017-11-17 → 2017-11-14 (-3d) | 2017-11-20 → 2017-11-15 (-5d) |  |  | 4d → 13d |  |  |
| 110 | 自动生成电子单证及发送影像资料 | 2017-11-21 → 2017-11-16 (-5d) | 2017-11-22 → 2017-11-17 (-5d) |  |  | 4d → 13d |  |  |
| 111 | 单元测试 | 2017-11-23 → 2017-11-20 (-3d) | 2017-11-23 → 2017-11-20 (-3d) |  |  | 4d → 13d |  |  |
| 112 | 前后端联调 | 2017-11-24 → 2017-11-21 (-3d) | 2017-11-24 → 2017-11-21 (-3d) |  |  | 4d → 13d |  |  |
| 113 | **7.支付录入** | 2017-10-24 A → 2017-11-02 A (+9d) | 2017-11-15 → 2017-11-23 (+8d) | 18d? → 17d | 29% → 8% |  | none → 67 |  |
| 114 | **功能开发** | 2017-10-25 A → 2017-11-02 A (+8d) | 2017-11-14 → 2017-11-22 (+8d) |  |  |  |  |  |
| 115 | 支付管理查询 | 2017-10-25 A → 2017-11-02 A (+8d) | 2017-10-26 → 2017-11-03 (+8d) |  |  |  | 37 → none |  |
| 116 | 整单支付保存 | 2017-10-27 → 2017-11-04 (+8d) | 2017-10-28 → 2017-11-06 (+9d) |  |  |  |  |  |
| 117 | 清单支付模板查询及下载 | 2017-10-30 → 2017-11-07 (+8d) | 2017-10-31 → 2017-11-08 (+8d) |  |  |  |  |  |
| 118 | 清单支付清单导入保存 | 2017-11-01 → 2017-11-09 (+8d) | 2017-11-02 → 2017-11-10 (+8d) |  |  |  |  |  |

| ID | Task | Start | Finish | Duration | Total float | Predecessors | Other |
| --- | --- | --- | --- | --- | --- | --- | --- |
| 119 | 整单支付修改 | 2017-11-03 → 2017-11-13 (+10d) | 2017-11-03 → 2017-11-13 (+10d) |  |  |  |  |
| 120 | 清单支付修改 | 2017-11-06 → 2017-11-14 (+8d) | 2017-11-06 → 2017-11-14 (+8d) |  |  |  |  |
| 121 | 电子回单下载 | 2017-11-07 → 2017-11-15 (+8d) | 2017-11-08 → 2017-11-16 (+8d) |  |  |  |  |
| 122 | 支付信息查询 | 2017-11-09 → 2017-11-17 (+8d) | 2017-11-09 → 2017-11-17 (+8d) |  |  |  |  |
| 123 | 支付情况统计表 | 2017-11-10 → 2017-11-20 (+10d) | 2017-11-13 → 2017-11-21 (+8d) |  |  |  |  |
| 124 | 单元测试 | 2017-11-14 → 2017-11-22 (+8d) | 2017-11-14 → 2017-11-22 (+8d) |  |  |  |  |
| 125 | 前后端联调 | 2017-11-15 → 2017-11-23 (+8d) | 2017-11-15 → 2017-11-23 (+8d) |  |  |  |  |
| 126 | **8.运维管理** | 2017-11-10 → 2017-11-08 (-2d) | 2017-11-20 → 2017-11-14 (-6d) | 7d → 5d | 8d → 18d | none → 99 |  |
| 127 | **功能开发** | 2017-11-14 → 2017-11-08 (-6d) | 2017-11-20 → 2017-11-14 (-6d) |  | 8d → 18d |  |  |
| 128 | 核赔工作流补传 | 2017-11-14 → 2017-11-08 (-6d) | 2017-11-16 → 2017-11-10 (-6d) |  | 8d → 18d | 42 → none |  |
| 129 | 单元测试 | 2017-11-17 → 2017-11-13 (-4d) | 2017-11-17 → 2017-11-13 (-4d) |  | 8d → 18d |  |  |
| 130 | 前后端联调 | 2017-11-20 → 2017-11-14 (-6d) | 2017-11-20 → 2017-11-14 (-6d) |  | 8d → 18d |  |  |
| 131 | **9.交易清单系统** | 2017-11-03 → 2017-11-13 (+10d) | 2017-11-30 → 2017-12-08 (+8d) |  |  | none → 79 |  |
| 132 | **功能开发** | 2017-11-08 → 2017-11-13 (+5d) | 2017-11-29 → 2017-12-07 (+8d) | 16d → 19d |  |  |  |
| 133 | 损失率清单查询接口（种植险） | 2017-11-08 → 2017-11-13 (+5d) | 2017-11-15 → 2017-11-20 (+5d) |  |  | 47 → none | was named 提供损失清单同步接口 |
| 134 | 理赔支付清单持久化接口（种植险） | 2017-11-16 → 2017-11-21 (+5d) | 2017-11-23 → 2017-11-28 (+5d) |  |  |  | was named 提供理算损失清单回写信息接口 |
| 135 | 损失清单查询接口（养殖险） | 2017-11-24 → 2017-11-29 (+5d) | 2017-11-28 → 2017-12-01 (+3d) |  |  |  | was named 提供险别损失清单同步接口 |
| 137 | 单元测试 | 2017-11-29 → 2017-12-07 (+8d) | 2017-11-29 → 2017-12-07 (+8d) |  |  | 135 → 136 |  |
| 138 | 前后端联调 | 2017-11-30 → 2017-12-08 (+8d) | 2017-11-30 → 2017-12-08 (+8d) |  |  |  |  |
| 139 | **10.个人中心** | 2017-11-10 → 2017-11-17 (+7d) |  | 14d → 9d | 1d → 7d | none → 89 |  |
| 141 | 公共查询 |  |  |  | 1d → 7d | 52 → none |  |

## Version 3 (saved 2017-11-02, file 理赔二组-祁小龙20171102.mpp)

Note of the change: Revert "Revert "source code submit""

Last finish 2017-12-08 → 2017-12-13 (+5d). Complete tasks 0 → 20.

Removed: 47 接口设计评审

Changed:

| ID | Task | Start | Finish | Duration | Complete | Total float | Predecessors |
| --- | --- | --- | --- | --- | --- | --- | --- |
| 1 | **理赔二组开发** |  | 2017-12-08 → 2017-12-13 (+5d) | 36d? → 37d? | 9% → 22% |  |  |
| 2 | **系统设计** |  | 2017-11-01 → 2017-11-03 (+2d) | 6d? → 7d? | 12% → 38% |  |  |
| 3 | **结案任务处理** |  | 2017-10-27 A |  | 30% → 100% | 32d → none |  |
| 4 | 业务分析 |  | 2017-10-27 A |  | 30% → 100% | 32d → none |  |
| 5 | 接口涉及数据表结构整理 |  | 2017-10-27 A |  | 30% → 100% | 32d → none |  |
| 6 | 接口设计、文档编写 |  | 2017-10-27 A |  | 30% → 100% | 32d → none |  |
| 7 | 接口设计评审 |  | 2017-10-27 A |  | 30% → 100% | 0d → none |  |
| 8 | **系统主页** |  | 2017-10-26 A |  | 50% → 100% | 33d → none |  |
| 9 | 业务分析 |  | 2017-10-26 A |  | 50% → 100% | 33d → none |  |
| 10 | 接口涉及数据表结构整理 |  | 2017-10-26 A |  | 50% → 100% | 33d → none |  |
| 11 | 接口设计、文档编写 |  | 2017-10-26 A |  | 50% → 100% | 33d → none |  |
| 12 | 接口设计评审 |  | 2017-10-26 A |  | 50% → 100% | 33d → none |  |
| 13 | **重开赔案** | 2017-10-26 A → 2017-10-27 A (+1d) | 2017-10-26 → 2017-10-27 A (+1d) | 1d? → 0.4d | 40% → 100% | 33d → none |  |
| 14 | 业务分析 | 2017-10-26 A → 2017-10-27 A (+1d) | 2017-10-26 → 2017-10-27 A (+1d) | 1d? → 0.4d | 40% → 100% | 33d → none | none → 12 |
| 15 | 接口涉及数据表结构整理 | 2017-10-26 A → 2017-10-27 A (+1d) | 2017-10-26 → 2017-10-27 A (+1d) | 1d? → 0.4d | 40% → 100% | 33d → none |  |
| 16 | 接口设计、文档编写 | 2017-10-26 A → 2017-10-27 A (+1d) | 2017-10-26 → 2017-10-27 A (+1d) | 1d? → 0.4d | 40% → 100% | 33d → none |  |
| 17 | 接口设计评审 | 2017-10-26 A → 2017-10-27 A (+1d) | 2017-10-26 → 2017-10-27 A (+1d) | 1d? → 0.4d | 40% → 100% | 1d → none |  |
| 18 | **班表管理** | 2017-10-31 A → 2017-10-30 A (-1d) | 2017-10-31 → 2017-10-30 A (-1d) | 1d? → 1d | 10% → 100% | 29d → none | 41 → 7 |
| 19 | 业务分析 | 2017-10-31 A → 2017-10-30 A (-1d) | 2017-10-31 → 2017-10-30 A (-1d) | 1d? → 1d | 10% → 100% | 29d → none |  |
| 20 | 接口涉及数据表结构整理 | 2017-10-31 A → 2017-10-30 A (-1d) | 2017-10-31 → 2017-10-30 A (-1d) | 1d? → 1d | 10% → 100% | 29d → none |  |
| 21 | 接口设计、文档编写 | 2017-10-31 A → 2017-10-30 A (-1d) | 2017-10-31 → 2017-10-30 A (-1d) | 1d? → 1d | 10% → 100% | 29d → none |  |
| 22 | **个人中心** | 2017-10-28 A → 2017-10-31 A (+3d) | 2017-10-28 → 2017-10-31 (+3d) | 1d? → 1d | 10% → 32% |  | 7 → 21 |
| 23 | 业务分析 | 2017-10-28 A → 2017-10-31 A (+3d) | 2017-10-28 → 2017-10-31 A (+3d) | 1d? → 1d | 10% → 100% | 31d → none |  |
| 24 | 接口涉及数据表结构整理 | 2017-10-28 A → 2017-10-31 A (+3d) | 2017-10-28 → 2017-10-31 (+3d) | 1d? → 1d |  |  |  |
| 25 | 接口设计、文档编写 | 2017-10-28 A → 2017-10-31 A (+3d) | 2017-10-28 → 2017-10-31 (+3d) | 1d? → 1d |  |  |  |
| 26 | 接口设计评审 | 2017-10-28 A → 2017-10-31 A (+3d) | 2017-10-28 → 2017-10-31 (+3d) | 1d? → 1d |  |  |  |
| 27 | **理赔打印** |  | 2017-10-27 → 2017-10-30 (+3d) |  |  | 1d → 0.6d |  |
| 28 | 业务分析 |  | 2017-10-27 → 2017-10-30 (+3d) |  |  | 32d → 32.6d |  |
| 29 | 接口涉及数据表结构整理 |  | 2017-10-27 → 2017-10-30 (+3d) |  |  | 32d → 32.6d |  |
| 30 | 接口设计、文档编写 |  | 2017-10-27 → 2017-10-30 (+3d) |  |  | 32d → 32.6d |  |
| 31 | 接口设计评审 |  | 2017-10-27 → 2017-10-30 (+3d) |  |  | 1d → 0.6d |  |
| 32 | **流程查询** | 2017-10-28 → 2017-10-30 (+2d) | 2017-10-28 → 2017-10-31 (+3d) |  |  | 1d → 0.6d |  |
| 33 | 业务分析 | 2017-10-28 → 2017-10-30 (+2d) | 2017-10-28 → 2017-10-31 (+3d) |  |  | 31d → 31.6d |  |
| 34 | 接口涉及数据表结构整理 | 2017-10-28 → 2017-10-30 (+2d) | 2017-10-28 → 2017-10-31 (+3d) |  |  | 31d → 31.6d |  |
| 35 | 接口设计、文档编写 | 2017-10-28 → 2017-10-30 (+2d) | 2017-10-28 → 2017-10-31 (+3d) |  |  | 31d → 31.6d |  |
| 36 | 接口设计评审 | 2017-10-28 → 2017-10-30 (+2d) | 2017-10-28 → 2017-10-31 (+3d) |  |  | 1d → 0.6d |  |
| 37 | **运维管理** | 2017-10-30 → 2017-11-01 A (+2d) | 2017-10-30 → 2017-11-01 A (+2d) |  | 0% → 100% | 0d → none |  |
| 38 | 业务分析 | 2017-10-30 → 2017-11-01 A (+2d) | 2017-10-30 → 2017-11-01 A (+2d) |  | 0% → 100% | 30d → none |  |
| 39 | 接口涉及数据表结构整理 | 2017-10-30 → 2017-11-01 A (+2d) | 2017-10-30 → 2017-11-01 A (+2d) |  | 0% → 100% | 30d → none |  |
| 40 | 接口设计、文档编写 | 2017-10-30 → 2017-11-01 A (+2d) | 2017-10-30 → 2017-11-01 A (+2d) |  | 0% → 100% | 30d → none |  |
| 41 | 接口设计评审 | 2017-10-30 → 2017-11-01 A (+2d) | 2017-10-30 → 2017-11-01 A (+2d) |  | 0% → 100% | 0d → none |  |
| 42 | **支付管理** | 2017-10-31 A → 2017-11-01 A (+1d) | 2017-10-31 → 2017-11-01 (+1d) |  |  | 29d → 30d |  |
| 43 | 业务分析 | 2017-10-31 A → 2017-11-01 A (+1d) | 2017-10-31 → 2017-11-01 (+1d) |  |  | 29d → 30d |  |
| 44 | 接口涉及数据表结构整理 | 2017-10-31 A → 2017-11-01 A (+1d) | 2017-10-31 → 2017-11-01 (+1d) |  |  | 29d → 30d |  |
| 45 | 接口设计、文档编写 | 2017-10-31 A → 2017-11-01 A (+1d) | 2017-10-31 → 2017-11-01 (+1d) |  |  | 29d → 30d |  |
| 46 | 接口设计评审 | 2017-10-31 A → 2017-11-01 A (+1d) | 2017-10-31 → 2017-11-01 (+1d) |  |  | 0d → 1.4d |  |
| 47 | **损失率清单查询接口（种植险）** | 2017-11-01 → 2017-11-02 (+1d) | 2017-11-01 → 2017-11-02 (+1d) |  |  | 28d → 0.8d | 接口设计评审 → 41 |
| 48 | 业务分析 | 2017-11-01 → 2017-11-02 (+1d) | 2017-11-01 → 2017-11-02 (+1d) |  |  | 28d → 29d |  |
| 49 | 接口涉及数据表结构整理 | 2017-11-01 → 2017-11-02 (+1d) | 2017-11-01 → 2017-11-02 (+1d) |  |  | 28d → 29d |  |
| 50 | 接口设计、文档编写 | 2017-11-01 → 2017-11-02 (+1d) | 2017-11-01 → 2017-11-02 (+1d) |  |  | 28d → 29d |  |
| 51 | 接口设计评审 | 2017-11-01 → 2017-11-02 (+1d) | 2017-11-01 → 2017-11-02 (+1d) |  |  | 28d → 0.8d |  |
| 52 | **理赔支付清单持久化接口（种植险）** | 2017-11-01 → 2017-11-03 (+2d) | 2017-11-01 → 2017-11-03 (+2d) |  |  | 0d → 0.8d | 接口设计评审 → 51 |
| 53 | 业务分析 | 2017-11-01 → 2017-11-03 (+2d) | 2017-11-01 → 2017-11-03 (+2d) |  |  |  |  |
| 54 | 接口涉及数据表结构整理 | 2017-11-01 → 2017-11-03 (+2d) | 2017-11-01 → 2017-11-03 (+2d) |  |  |  |  |
| 55 | 接口设计、文档编写 | 2017-11-01 → 2017-11-03 (+2d) | 2017-11-01 → 2017-11-03 (+2d) |  |  |  |  |
| 56 | 接口设计评审 | 2017-11-01 → 2017-11-03 (+2d) | 2017-11-01 → 2017-11-03 (+2d) |  |  | 0d → 0.8d |  |
| 57 | **损失清单查询接口（养殖险）** | 2017-11-01 → 2017-11-02 (+1d) | 2017-11-01 → 2017-11-02 (+1d) |  |  | 28d → 29d |  |
| 58 | 业务分析 | 2017-11-01 → 2017-11-02 (+1d) | 2017-11-01 → 2017-11-02 (+1d) |  |  | 28d → 29d |  |
| 59 | 接口涉及数据表结构整理 | 2017-11-01 → 2017-11-02 (+1d) | 2017-11-01 → 2017-11-02 (+1d) |  |  | 28d → 29d |  |
| 60 | 接口设计、文档编写 | 2017-11-01 → 2017-11-02 (+1d) | 2017-11-01 → 2017-11-02 (+1d) |  |  | 28d → 29d |  |
| 61 | 接口设计评审 | 2017-11-01 → 2017-11-02 (+1d) | 2017-11-01 → 2017-11-02 (+1d) |  |  | 28d → 29d |  |
| 62 | **理赔支付清单持久化接口（养殖险）** | 2017-11-01 → 2017-11-02 (+1d) | 2017-11-01 → 2017-11-02 (+1d) |  |  | 0d → 1.4d |  |
| 63 | 业务分析 | 2017-11-01 → 2017-11-02 (+1d) | 2017-11-01 → 2017-11-02 (+1d) |  |  | 28d → 29d |  |
| 64 | 接口涉及数据表结构整理 | 2017-11-01 → 2017-11-02 (+1d) | 2017-11-01 → 2017-11-02 (+1d) |  |  | 28d → 29d |  |
| 65 | 接口设计、文档编写 | 2017-11-01 → 2017-11-02 (+1d) | 2017-11-01 → 2017-11-02 (+1d) |  |  | 28d → 29d |  |
| 66 | 接口设计评审 | 2017-11-01 → 2017-11-02 (+1d) | 2017-11-01 → 2017-11-02 (+1d) |  |  | 0d → 1.4d |  |
| 67 | **功能开发** |  | 2017-12-08 → 2017-12-13 (+5d) | 36d → 37d | 7% → 15% |  |  |
| 68 | **1.结案任务处理** | 2017-11-02 A → 2017-11-06 A (+4d) | 2017-11-10 → 2017-11-15 (+5d) |  |  |  | 56 → none |
| 69 | **未处理结案任务** | 2017-11-02 A → 2017-11-06 A (+4d) | 2017-11-04 → 2017-11-08 (+4d) |  |  |  |  |
| 70 | 后端服务开发 | 2017-11-02 A → 2017-11-06 A (+4d) | 2017-11-03 → 2017-11-07 (+4d) |  |  |  | none → 56 |

| ID | Task | Start | Finish | Complete | Total float | Predecessors |
| --- | --- | --- | --- | --- | --- | --- |
| 71 | 单元测试 | 2017-11-04 → 2017-11-08 (+4d) | 2017-11-04 → 2017-11-08 (+4d) |  |  |  |
| 72 | **结案任务查询** | 2017-11-06 → 2017-11-09 (+3d) | 2017-11-07 → 2017-11-10 (+3d) |  |  |  |
| 73 | 后端服务开发 | 2017-11-06 → 2017-11-09 (+3d) | 2017-11-06 → 2017-11-09 (+3d) |  |  |  |
| 74 | 单元测试 | 2017-11-07 → 2017-11-10 (+3d) | 2017-11-07 → 2017-11-10 (+3d) |  |  |  |
| 75 | **理赔沟通** | 2017-11-08 → 2017-11-13 (+5d) | 2017-11-09 → 2017-11-14 (+5d) |  |  |  |
| 76 | 后端服务开发 | 2017-11-08 → 2017-11-13 (+5d) | 2017-11-08 → 2017-11-13 (+5d) |  |  |  |
| 77 | 单元测试 | 2017-11-09 → 2017-11-14 (+5d) | 2017-11-09 → 2017-11-14 (+5d) |  |  |  |
| 78 | 前后端联调 | 2017-11-10 → 2017-11-15 (+5d) | 2017-11-10 → 2017-11-15 (+5d) |  |  |  |
| 79 | **2.重开赔案** |  | 2017-10-31 → 2017-11-01 (+1d) | 29% → 69% | 13d → 14.3d |  |
| 80 | **功能开发** |  | 2017-10-30 → 2017-10-31 (+1d) | 33% → 80% | 13d → 14.3d |  |
| 81 | 后端服务开发 |  | 2017-10-28 → 2017-10-30 (+2d) | 40% → 80% | 13d → 14.3d |  |
| 82 | 单元测试 | 2017-10-30 → 2017-10-31 A (+1d) | 2017-10-30 → 2017-10-31 (+1d) | 0% → 80% | 13d → 14.3d |  |
| 83 | 前后端联调 | 2017-10-31 → 2017-11-01 (+1d) | 2017-10-31 → 2017-11-01 (+1d) |  | 13d → 14.3d |  |
| 84 | **3.班表管理** |  | 2017-11-08 → 2017-11-10 (+2d) | 13% → 26% | 13d → 14d |  |
| 85 | **功能开发** |  | 2017-11-07 → 2017-11-09 (+2d) | 14% → 28% | 13d → 14d |  |
| 86 | 后端服务开发 |  | 2017-11-06 → 2017-11-08 (+2d) | 15% → 30% | 13d → 14d |  |
| 87 | 单元测试 | 2017-11-07 → 2017-11-09 (+2d) | 2017-11-07 → 2017-11-09 (+2d) |  | 13d → 14d |  |
| 88 | 前后端联调 | 2017-11-08 → 2017-11-10 (+2d) | 2017-11-08 → 2017-11-10 (+2d) |  | 13d → 14d |  |
| 89 | **4.区域设置** |  | 2017-10-31 → 2017-11-01 (+1d) | 33% → 67% | 29d → 21.5d |  |
| 90 | **功能开发** |  | 2017-10-30 → 2017-10-31 (+1d) | 40% → 80% | 29d → 21.5d |  |
| 91 | 区域设置后端服务开发 |  | 2017-10-28 → 2017-10-30 (+2d) | 50% → 80% | 29d → 22.3d |  |
| 92 | 区域设置单元测试 | 2017-10-30 → 2017-10-31 A (+1d) | 2017-10-30 → 2017-10-31 (+1d) | 0% → 80% | 29d → 21.5d |  |
| 93 | 前后端联调 | 2017-10-31 → 2017-11-01 (+1d) | 2017-10-31 → 2017-11-01 (+1d) |  | 29d → 21.5d |  |
| 94 | **5.流程查询** | 2017-11-02 A | 2017-11-07 → 2017-11-08 (+1d) | 0% → 18% | 18d → 20d | none → 93 |
| 95 | **功能开发** | 2017-11-02 A | 2017-11-06 → 2017-11-07 (+1d) | 0% → 23% | 18d → 20d |  |
| 96 | 流程查询后端服务开发 | 2017-11-02 A | 2017-11-04 → 2017-11-06 (+2d) | 0% → 30% | 18d → 20d |  |
| 97 | 单元测试 | 2017-11-06 → 2017-11-07 (+1d) | 2017-11-06 → 2017-11-07 (+1d) |  | 18d → 20d |  |
| 98 | 前后端联调 | 2017-11-07 → 2017-11-08 (+1d) | 2017-11-07 → 2017-11-08 (+1d) |  | 18d → 20d |  |
| 99 | **6.理赔打印** | 2017-11-01 → 2017-11-02 A (+1d) | 2017-11-21 → 2017-11-23 (+2d) | 0% → 2% | 13d → 14d |  |
| 100 | **功能开发** | 2017-11-01 → 2017-11-02 A (+1d) | 2017-11-20 → 2017-11-22 (+2d) | 0% → 2% | 13d → 14d |  |
| 101 | 农险赔案卷宗封面查询及打印数据查询 | 2017-11-01 → 2017-11-02 A (+1d) | 2017-11-01 → 2017-11-02 (+1d) | 0% → 30% | 13d → 14d |  |
| 102 | 农房保险赔案卷宗封面查询及打印数据查询 | 2017-11-02 → 2017-11-03 (+1d) | 2017-11-02 → 2017-11-03 (+1d) |  | 13d → 14d |  |
| 103 | 现场查勘报告打印查询及打印数据查询 | 2017-11-03 → 2017-11-06 (+3d) | 2017-11-03 → 2017-11-06 (+3d) |  | 13d → 14d |  |
| 104 | 赔款理算书打印查询及打印数据查询 | 2017-11-04 → 2017-11-07 (+3d) | 2017-11-06 → 2017-11-08 (+2d) |  | 13d → 14d |  |
| 105 | 结案报告查询及打印数据查询 | 2017-11-07 → 2017-11-09 (+2d) | 2017-11-08 → 2017-11-10 (+2d) |  | 13d → 14d |  |
| 106 | 赔款收据查询及打印数据查询 | 2017-11-09 → 2017-11-13 (+4d) | 2017-11-10 → 2017-11-14 (+4d) |  | 13d → 14d |  |
| 107 | 注销/拒赔通知书查询及打印数据查询 | 2017-11-13 → 2017-11-15 (+2d) | 2017-11-13 → 2017-11-15 (+2d) |  | 13d → 14d |  |
| 108 | 保单抄件查询及打印数据查询 | 2017-11-14 → 2017-11-16 (+2d) | 2017-11-15 → 2017-11-17 (+2d) |  | 13d → 14d |  |
| 109 | 自动生成电子单证及发送影像资料 | 2017-11-16 → 2017-11-20 (+4d) | 2017-11-17 → 2017-11-21 (+4d) |  | 13d → 14d |  |
| 110 | 单元测试 | 2017-11-20 → 2017-11-22 (+2d) | 2017-11-20 → 2017-11-22 (+2d) |  | 13d → 14d |  |
| 111 | 前后端联调 | 2017-11-21 → 2017-11-23 (+2d) | 2017-11-21 → 2017-11-23 (+2d) |  | 13d → 14d |  |
| 112 | **7.支付录入** | 2017-11-02 A → 2017-11-03 A (+1d) | 2017-11-23 → 2017-11-27 (+4d) |  | 11d → 12d | 66 → none |
| 113 | **功能开发** | 2017-11-02 A → 2017-11-03 A (+1d) | 2017-11-22 → 2017-11-24 (+2d) |  | 11d → 12d |  |
| 114 | 支付管理查询 | 2017-11-02 A → 2017-11-03 A (+1d) | 2017-11-03 → 2017-11-06 (+3d) |  | 11d → 12d | none → 66 |
| 115 | 整单支付保存 | 2017-11-04 → 2017-11-07 (+3d) | 2017-11-06 → 2017-11-08 (+2d) |  | 11d → 12d |  |
| 116 | 清单支付模板查询及下载 | 2017-11-07 → 2017-11-09 (+2d) | 2017-11-08 → 2017-11-10 (+2d) |  | 11d → 12d |  |
| 117 | 清单支付清单导入保存 | 2017-11-09 → 2017-11-13 (+4d) | 2017-11-10 → 2017-11-14 (+4d) |  | 11d → 12d |  |
| 118 | 整单支付修改 | 2017-11-13 → 2017-11-15 (+2d) | 2017-11-13 → 2017-11-15 (+2d) |  | 11d → 12d |  |
| 119 | 清单支付修改 | 2017-11-14 → 2017-11-16 (+2d) | 2017-11-14 → 2017-11-16 (+2d) |  | 11d → 12d |  |
| 120 | 电子回单下载 | 2017-11-15 → 2017-11-17 (+2d) | 2017-11-16 → 2017-11-20 (+4d) |  | 11d → 12d |  |
| 121 | 支付信息查询 | 2017-11-17 → 2017-11-21 (+4d) | 2017-11-17 → 2017-11-21 (+4d) |  | 11d → 12d |  |
| 122 | 支付情况统计表 | 2017-11-20 → 2017-11-22 (+2d) | 2017-11-21 → 2017-11-23 (+2d) |  | 11d → 12d |  |
| 123 | 单元测试 | 2017-11-22 → 2017-11-24 (+2d) | 2017-11-22 → 2017-11-24 (+2d) |  | 11d → 12d |  |
| 124 | 前后端联调 | 2017-11-23 → 2017-11-27 (+4d) | 2017-11-23 → 2017-11-27 (+4d) |  | 11d → 12d |  |
| 125 | **8.运维管理** | 2017-11-08 → 2017-11-09 (+1d) | 2017-11-14 → 2017-11-15 (+1d) |  | 18d → 20d |  |
| 126 | **功能开发** | 2017-11-08 → 2017-11-09 (+1d) | 2017-11-14 → 2017-11-15 (+1d) |  | 18d → 20d |  |
| 127 | 核赔工作流补传 | 2017-11-08 → 2017-11-09 (+1d) | 2017-11-10 → 2017-11-13 (+3d) |  | 18d → 20d |  |
| 128 | 单元测试 | 2017-11-13 → 2017-11-14 (+1d) | 2017-11-13 → 2017-11-14 (+1d) |  | 18d → 20d |  |
| 129 | 前后端联调 | 2017-11-14 → 2017-11-15 (+1d) | 2017-11-14 → 2017-11-15 (+1d) |  | 18d → 20d |  |
| 130 | **9.交易清单系统** | 2017-11-13 → 2017-11-16 (+3d) | 2017-12-08 → 2017-12-13 (+5d) |  |  |  |
| 131 | **功能开发** | 2017-11-13 → 2017-11-16 (+3d) | 2017-12-07 → 2017-12-12 (+5d) |  |  |  |
| 132 | 损失率清单查询接口（种植险） | 2017-11-13 → 2017-11-16 (+3d) | 2017-11-20 → 2017-11-23 (+3d) |  |  |  |
| 133 | 理赔支付清单持久化接口（种植险） | 2017-11-21 → 2017-11-24 (+3d) | 2017-11-28 → 2017-12-01 (+3d) |  |  |  |
| 134 | 损失清单查询接口（养殖险） | 2017-11-29 → 2017-12-04 (+5d) | 2017-12-01 → 2017-12-06 (+5d) |  |  |  |
| 135 | 理赔支付清单持久化接口（养殖险） | 2017-12-04 → 2017-12-07 (+3d) | 2017-12-06 → 2017-12-11 (+5d) |  |  |  |
| 136 | 单元测试 | 2017-12-07 → 2017-12-12 (+5d) | 2017-12-07 → 2017-12-12 (+5d) |  |  |  |
| 137 | 前后端联调 | 2017-12-08 → 2017-12-13 (+5d) | 2017-12-08 → 2017-12-13 (+5d) |  |  |  |

## Version 4 (saved 2017-11-02, file 理赔二组-祁小龙20171027.mpp)

Note of the change: Revert "Revert "source code submit""

Last finish stays 2017-12-13. Complete tasks 20 → 12.

Changed:

| ID | Task | Start | Finish | Complete | Total float |
| --- | --- | --- | --- | --- | --- |
| 1 | **理赔二组开发** |  |  | 22% → 12% |  |
| 2 | **系统设计** |  |  | 38% → 22% |  |
| 18 | **班表管理** |  | 2017-10-30 A → 2017-10-30 | 100% → 10% | none → 32d |
| 19 | 业务分析 |  | 2017-10-30 A → 2017-10-30 | 100% → 10% | none → 32d |
| 20 | 接口涉及数据表结构整理 |  | 2017-10-30 A → 2017-10-30 | 100% → 10% | none → 32d |
| 21 | 接口设计、文档编写 |  | 2017-10-30 A → 2017-10-30 | 100% → 10% | none → 0d |
| 22 | **个人中心** |  |  | 32% → 10% |  |
| 23 | 业务分析 |  | 2017-10-31 A → 2017-10-31 | 100% → 10% | none → 31d |
| 37 | **运维管理** | 2017-11-01 A → 2017-11-01 | 2017-11-01 A → 2017-11-01 | 100% → 0% | none → 0.8d |
| 38 | 业务分析 | 2017-11-01 A → 2017-11-01 | 2017-11-01 A → 2017-11-01 | 100% → 0% | none → 30d |
| 39 | 接口涉及数据表结构整理 | 2017-11-01 A → 2017-11-01 | 2017-11-01 A → 2017-11-01 | 100% → 0% | none → 30d |
| 40 | 接口设计、文档编写 | 2017-11-01 A → 2017-11-01 | 2017-11-01 A → 2017-11-01 | 100% → 0% | none → 30d |
| 41 | 接口设计评审 | 2017-11-01 A → 2017-11-01 | 2017-11-01 A → 2017-11-01 | 100% → 0% | none → 0.8d |
| 67 | **功能开发** |  |  | 15% → 8% |  |
| 79 | **2.重开赔案** |  |  | 69% → 36% | 14.3d → 14d |
| 80 | **功能开发** |  |  | 80% → 42% | 14.3d → 14d |
| 81 | 后端服务开发 |  |  | 80% → 50% | 14.3d → 14d |
| 82 | 单元测试 | 2017-10-31 A → 2017-10-31 |  | 80% → 0% | 14.3d → 14d |
| 84 | **3.班表管理** |  |  | 26% → 13% |  |
| 85 | **功能开发** |  |  | 28% → 14% |  |
| 86 | 后端服务开发 |  |  | 30% → 15% |  |
| 89 | **4.区域设置** |  |  | 67% → 33% | 21.5d → 20d |
| 90 | **功能开发** |  |  | 80% → 40% | 21.5d → 20d |
| 91 | 区域设置后端服务开发 |  |  | 80% → 50% | 22.3d → 20d |
| 92 | 区域设置单元测试 | 2017-10-31 A → 2017-10-31 |  | 80% → 0% | 21.5d → 20d |
| 94 | **5.流程查询** | 2017-11-02 A → 2017-11-02 |  | 18% → 0% |  |
| 95 | **功能开发** | 2017-11-02 A → 2017-11-02 |  | 23% → 0% |  |
| 96 | 流程查询后端服务开发 | 2017-11-02 A → 2017-11-02 |  | 30% → 0% |  |
| 99 | **6.理赔打印** | 2017-11-02 A → 2017-11-02 |  | 2% → 0% |  |
| 100 | **功能开发** | 2017-11-02 A → 2017-11-02 |  | 2% → 0% |  |
| 101 | 农险赔案卷宗封面查询及打印数据查询 | 2017-11-02 A → 2017-11-02 |  | 30% → 0% |  |

## Version 5 (saved 2017-11-06, file 理赔二组-祁小龙20171106.mpp)

Note of the change: source code submit

Last finish stays 2017-12-13. Complete tasks 12 → 27.

Changed:

| ID | Task | Start | Finish | Complete | Total float |
| --- | --- | --- | --- | --- | --- |
| 1 | **理赔二组开发** |  |  | 12% → 29% |  |
| 2 | **系统设计** |  |  | 22% → 59% |  |
| 18 | **班表管理** |  | 2017-10-30 A | 10% → 100% | 32d → none |
| 19 | 业务分析 |  | 2017-10-30 A | 10% → 100% | 32d → none |
| 20 | 接口涉及数据表结构整理 |  | 2017-10-30 A | 10% → 100% | 32d → none |
| 21 | 接口设计、文档编写 |  | 2017-10-30 A | 10% → 100% | 0d → none |
| 22 | **个人中心** |  |  | 10% → 50% |  |
| 23 | 业务分析 |  |  | 10% → 50% |  |
| 24 | 接口涉及数据表结构整理 |  |  | 10% → 50% |  |
| 25 | 接口设计、文档编写 |  |  | 10% → 50% |  |
| 26 | 接口设计评审 |  |  | 10% → 50% | 0.8d → 31d |
| 27 | **理赔打印** | 2017-10-27 A |  | 0% → 50% | 0.6d → 32.6d |
| 28 | 业务分析 | 2017-10-27 A |  | 0% → 50% |  |
| 29 | 接口涉及数据表结构整理 | 2017-10-27 A |  | 0% → 50% |  |
| 30 | 接口设计、文档编写 | 2017-10-27 A |  | 0% → 50% |  |
| 31 | 接口设计评审 | 2017-10-27 A |  | 0% → 50% | 0.6d → 32.6d |
| 32 | **流程查询** | 2017-10-30 A | 2017-10-31 A | 0% → 100% | 0.6d → none |
| 33 | 业务分析 | 2017-10-30 A | 2017-10-31 A | 0% → 100% | 31.6d → none |
| 34 | 接口涉及数据表结构整理 | 2017-10-30 A | 2017-10-31 A | 0% → 100% | 31.6d → none |
| 35 | 接口设计、文档编写 | 2017-10-30 A | 2017-10-31 A | 0% → 100% | 31.6d → none |
| 36 | 接口设计评审 | 2017-10-30 A | 2017-10-31 A | 0% → 100% | 0.6d → none |
| 37 | **运维管理** | 2017-11-01 A | 2017-11-01 A | 0% → 100% | 0.8d → none |
| 38 | 业务分析 | 2017-11-01 A | 2017-11-01 A | 0% → 100% | 30d → none |
| 39 | 接口涉及数据表结构整理 | 2017-11-01 A | 2017-11-01 A | 0% → 100% | 30d → none |
| 40 | 接口设计、文档编写 | 2017-11-01 A | 2017-11-01 A | 0% → 100% | 30d → none |
| 41 | 接口设计评审 | 2017-11-01 A | 2017-11-01 A | 0% → 100% | 0.8d → none |
| 42 | **支付管理** |  | 2017-11-01 A | 10% → 100% | 30d → none |
| 43 | 业务分析 |  | 2017-11-01 A | 10% → 100% | 30d → none |
| 44 | 接口涉及数据表结构整理 |  | 2017-11-01 A | 10% → 100% | 30d → none |
| 45 | 接口设计、文档编写 |  | 2017-11-01 A | 10% → 100% | 30d → none |
| 46 | 接口设计评审 |  | 2017-11-01 A | 10% → 100% | 1.4d → none |
| 67 | **功能开发** |  |  | 8% → 15% |  |
| 79 | **2.重开赔案** |  |  | 36% → 69% | 14d → 14.3d |
| 80 | **功能开发** |  |  | 42% → 80% | 14d → 14.3d |
| 81 | 后端服务开发 |  |  | 50% → 80% | 14d → 14.3d |
| 82 | 单元测试 | 2017-10-31 A |  | 0% → 80% | 14d → 14.3d |
| 84 | **3.班表管理** |  |  | 13% → 30% |  |
| 85 | **功能开发** |  |  | 14% → 32% |  |
| 86 | 后端服务开发 |  |  | 15% → 35% |  |
| 89 | **4.区域设置** |  |  | 33% → 67% | 20d → 21.5d |
| 90 | **功能开发** |  |  | 40% → 80% | 20d → 21.5d |
| 91 | 区域设置后端服务开发 |  |  | 50% → 80% | 20d → 22.3d |
| 92 | 区域设置单元测试 | 2017-10-31 A |  | 0% → 80% | 20d → 21.5d |
| 94 | **5.流程查询** | 2017-11-02 A |  | 0% → 20% |  |
| 95 | **功能开发** | 2017-11-02 A |  | 0% → 25% |  |
| 96 | 流程查询后端服务开发 | 2017-11-02 A |  | 0% → 33% |  |
| 99 | **6.理赔打印** | 2017-11-02 A |  | 0% → 2% |  |
| 100 | **功能开发** | 2017-11-02 A |  | 0% → 2% |  |
| 101 | 农险赔案卷宗封面查询及打印数据查询 | 2017-11-02 A |  | 0% → 30% |  |

## Version 6 (saved 2017-11-08, file 理赔二组-祁小龙20171107.mpp)

Note of the change: source code submit

Last finish stays 2017-12-13. Complete tasks 27 → 35.

Changed:

| ID | Task | Finish | Complete | Total float |
| --- | --- | --- | --- | --- |
| 1 | **理赔二组开发** |  | 29% → 33% |  |
| 2 | **系统设计** |  | 59% → 67% |  |
| 22 | **个人中心** | 2017-10-31 A | 50% → 100% | 31d → none |
| 23 | 业务分析 | 2017-10-31 A | 50% → 100% | 31d → none |
| 24 | 接口涉及数据表结构整理 | 2017-10-31 A | 50% → 100% | 31d → none |
| 25 | 接口设计、文档编写 | 2017-10-31 A | 50% → 100% | 31d → none |
| 26 | 接口设计评审 | 2017-10-31 A | 50% → 100% | 31d → none |
| 27 | **理赔打印** | 2017-10-30 A | 50% → 100% | 32.6d → none |
| 28 | 业务分析 | 2017-10-30 A | 50% → 100% | 32.6d → none |
| 29 | 接口涉及数据表结构整理 | 2017-10-30 A | 50% → 100% | 32.6d → none |
| 30 | 接口设计、文档编写 | 2017-10-30 A | 50% → 100% | 32.6d → none |
| 31 | 接口设计评审 | 2017-10-30 A | 50% → 100% | 32.6d → none |
| 67 | **功能开发** |  | 15% → 17% |  |
| 68 | **1.结案任务处理** |  | 10% → 13% |  |
| 69 | **未处理结案任务** |  | 27% → 33% |  |
| 70 | 后端服务开发 |  | 40% → 50% |  |
| 84 | **3.班表管理** |  | 30% → 33% |  |
| 85 | **功能开发** |  | 32% → 35% |  |
| 86 | 后端服务开发 |  | 35% → 38% |  |
| 94 | **5.流程查询** |  | 20% → 40% |  |
| 95 | **功能开发** |  | 25% → 50% |  |
| 96 | 流程查询后端服务开发 |  | 33% → 67% |  |
| 99 | **6.理赔打印** |  | 2% → 3% |  |
| 100 | **功能开发** |  | 2% → 3% |  |
| 101 | 农险赔案卷宗封面查询及打印数据查询 |  | 30% → 40% |  |

## Version 7 (saved 2017-11-14, file 理赔二组-祁小龙20171114.mpp)

Note of the change: source code submit

Last finish stays 2017-12-13. Complete tasks 35 → 56.

Removed: 125 8.运维管理; 126 功能开发; 127 核赔工作流补传; 128 单元测试; 129 前后端联调

Changed:

| ID | Task | Start | Finish | Complete | Total float |
| --- | --- | --- | --- | --- | --- |
| 1 | **理赔二组开发** |  |  | 33% → 56% |  |
| 2 | **系统设计** |  | 2017-11-03 A | 67% → 100% | 28d → none |
| 47 | **损失率清单查询接口（种植险）** | 2017-11-02 A | 2017-11-02 A | 0% → 100% | 1d → none |
| 48 | 业务分析 | 2017-11-02 A | 2017-11-02 A | 0% → 100% | 29d → none |
| 49 | 接口涉及数据表结构整理 | 2017-11-02 A | 2017-11-02 A | 0% → 100% | 29d → none |
| 50 | 接口设计、文档编写 | 2017-11-02 A | 2017-11-02 A | 0% → 100% | 29d → none |
| 51 | 接口设计评审 | 2017-11-02 A | 2017-11-02 A | 0% → 100% | 1d → none |
| 52 | **理赔支付清单持久化接口（种植险）** | 2017-11-03 A | 2017-11-03 A | 0% → 100% | 1d → none |
| 53 | 业务分析 | 2017-11-03 A | 2017-11-03 A | 0% → 100% | 28d → none |
| 54 | 接口涉及数据表结构整理 | 2017-11-03 A | 2017-11-03 A | 0% → 100% | 28d → none |
| 55 | 接口设计、文档编写 | 2017-11-03 A | 2017-11-03 A | 0% → 100% | 28d → none |
| 56 | 接口设计评审 | 2017-11-03 A | 2017-11-03 A | 0% → 100% | 1d → none |
| 57 | **损失清单查询接口（养殖险）** | 2017-11-02 A | 2017-11-02 A | 0% → 100% | 29d → none |
| 58 | 业务分析 | 2017-11-02 A | 2017-11-02 A | 0% → 100% | 29d → none |
| 59 | 接口涉及数据表结构整理 | 2017-11-02 A | 2017-11-02 A | 0% → 100% | 29d → none |
| 60 | 接口设计、文档编写 | 2017-11-02 A | 2017-11-02 A | 0% → 100% | 29d → none |
| 61 | 接口设计评审 | 2017-11-02 A | 2017-11-02 A | 0% → 100% | 29d → none |
| 62 | **理赔支付清单持久化接口（养殖险）** | 2017-11-02 A | 2017-11-02 A | 0% → 100% | 1.4d → none |
| 63 | 业务分析 | 2017-11-02 A | 2017-11-02 A | 0% → 100% | 29d → none |
| 64 | 接口涉及数据表结构整理 | 2017-11-02 A | 2017-11-02 A | 0% → 100% | 29d → none |
| 65 | 接口设计、文档编写 | 2017-11-02 A | 2017-11-02 A | 0% → 100% | 29d → none |
| 66 | 接口设计评审 | 2017-11-02 A | 2017-11-02 A | 0% → 100% | 1.4d → none |
| 67 | **功能开发** |  |  | 17% → 35% |  |
| 68 | **1.结案任务处理** |  |  | 13% → 59% | 0d → 20d |
| 69 | **未处理结案任务** |  |  | 33% → 93% | 0d → 25d |
| 70 | 后端服务开发 |  |  | 50% → 90% | 0d → 26d |
| 71 | 单元测试 | 2017-11-08 A | 2017-11-08 A | 0% → 100% | 0d → none |
| 72 | **结案任务查询** | 2017-11-09 A |  | 0% → 95% | 0d → 23d |
| 73 | 后端服务开发 | 2017-11-09 A |  | 0% → 90% | 0d → 24d |
| 74 | 单元测试 | 2017-11-10 A | 2017-11-10 A | 0% → 100% | 0d → none |
| 79 | **2.重开赔案** |  |  | 69% → 79% | 0.4d → 30d |
| 80 | **功能开发** |  |  | 80% → 92% | 0.4d → 31d |
| 81 | 后端服务开发 |  |  | 80% → 90% | 0.8d → 0.4d |
| 82 | 单元测试 |  | 2017-10-31 A | 80% → 100% | 0.4d → none |
| 89 | **4.区域设置** |  |  | 67% → 77% | 0d → 30d |
| 90 | **功能开发** |  |  | 80% → 92% | 0d → 31d |
| 91 | 区域设置后端服务开发 |  |  | 80% → 90% | 0.8d → 32d |
| 92 | 区域设置单元测试 |  | 2017-10-31 A | 80% → 100% | 0d → none |
| 94 | **5.流程查询** |  |  | 40% → 74% | 20d → 25d |
| 95 | **功能开发** |  |  | 50% → 93% | 20d → 26d |
| 96 | 流程查询后端服务开发 |  |  | 67% → 90% | 20d → 27d |
| 97 | 单元测试 | 2017-11-07 A | 2017-11-07 A | 0% → 100% | 20d → none |
| 99 | **6.理赔打印** |  |  | 3% → 64% |  |
| 100 | **功能开发** |  |  | 3% → 68% |  |
| 101 | 农险赔案卷宗封面查询及打印数据查询 |  |  | 40% → 90% | 14d → 0.9d |
| 102 | 农房保险赔案卷宗封面查询及打印数据查询 | 2017-11-03 A |  | 0% → 90% | 14d → 0.9d |
| 103 | 现场查勘报告打印查询及打印数据查询 | 2017-11-06 A |  | 0% → 90% | 14d → 1.8d |
| 104 | 赔款理算书打印查询及打印数据查询 | 2017-11-07 A |  | 0% → 90% | 14d → 1.8d |
| 105 | 结案报告查询及打印数据查询 | 2017-11-09 A |  | 0% → 90% | 14d → 1.8d |
| 106 | 赔款收据查询及打印数据查询 | 2017-11-13 A |  | 0% → 90% | 14d → 0.9d |
| 107 | 注销/拒赔通知书查询及打印数据查询 | 2017-11-15 A |  | 0% → 90% | 14d → 1.2d |
| 108 | 保单抄件查询及打印数据查询 | 2017-11-16 A |  | 0% → 60% |  |
| 133 | **10.个人中心** | 2017-11-17 A |  | 0% → 11% |  |
| 134 | **功能开发** | 2017-11-17 A |  | 0% → 13% |  |
| 135 | 公共查询 | 2017-11-17 A |  | 0% → 50% |  |
