How a schedule from MS Project changed from version to version. A marks actual dates.

## Version 1 (saved 2018-02-09, file 国元新农险理赔组开发计划0.1.mpp)

Note of the change: source code submit

| ID | WBS | Task | Duration | Start | Finish | Predecessors | Complete | Total float | Constraint |
| --- | --- | --- | --- | --- | --- | --- | --- | --- | --- |
| 1 | 1 | **理赔系统联调工作** | 26d | 2018-02-06 A | 2018-03-19 |  | 16% | 9d |  |
| 2 | 1.1 | **首页** | 5d | 2018-02-07 A | 2018-02-13 |  | 40% | 29d |  |
| 3 |  | 快捷操作配置及展示联调 | 0.5d | 2018-02-07 A | 2018-02-07 A |  | 100% |  | start no earlier than 2018-02-07 |
| 4 |  | 机构切换联动菜单 | 0.5d | 2018-02-07 A | 2018-02-08 A | 3 | 100% |  |  |
| 5 |  | 机构切换联动待处理数字显示 | 1d | 2018-02-08 | 2018-02-09 | 4 |  | 31d |  |
| 6 |  | 机构切换联动待处理数据列表 | 1d | 2018-02-09 | 2018-02-11 | 5 |  | 31d |  |
| 7 |  | 个人信息查看及修改联调 | 1d | 2018-02-11 A | 2018-02-12 A | 6 | 100% |  | start no earlier than 2018-02-06 |
| 8 |  | 首页功能单元测试 | 1d | 2018-02-12 | 2018-02-13 | 7 |  | 16d |  |
| 9 | 1.2 | **报案环节** | 3d | 2018-02-13 | 2018-02-23 |  |  | 16d |  |
| 10 |  | 报案登记需求验证及调整 | 1d | 2018-02-13 | 2018-02-14 | 8 |  | 16d |  |
| 11 |  | 报案环节校验内容调试 | 1d | 2018-02-14 | 2018-02-22 | 10 |  | 16d |  |
| 12 |  | 报案环节单元测试 | 1d | 2018-02-22 | 2018-02-23 | 11 |  | 16d |  |
| 13 | 1.3 | **调度环节** | 5d | 2018-02-23 | 2018-03-01 |  |  | 16d |  |
| 14 |  | 调度环节需求验证及调整 | 1d | 2018-02-23 | 2018-02-24 | 12 |  | 16d |  |
| 15 |  | 调度环节校验内容调整 | 1d | 2018-02-24 | 2018-02-26 | 14 |  | 16d |  |
| 16 |  | 发起调查接口对接 | 2d | 2018-02-26 | 2018-02-28 | 15 |  | 16d | start no earlier than 2018-02-06 |
| 17 |  | 调度环节单元测试 | 1d | 2018-02-28 | 2018-03-01 | 16 |  | 16d |  |
| 18 | 1.4 | **查勘定损** | 5d | 2018-02-07 A | 2018-02-13 |  | 20% | 22d |  |
| 19 |  | 查勘定损需求验证及调整 | 1d | 2018-02-07 A | 2018-02-08 A |  | 100% |  | start no earlier than 2018-02-07 |
| 20 |  | 关联清单功能联调 | 1d | 2018-02-08 | 2018-02-09 | 19 |  | 22d |  |
| 21 |  | 定损清单下载功能联调 | 1d | 2018-02-09 | 2018-02-11 | 20 |  | 22d |  |
| 22 |  | 查勘定损校验内容调试 | 1d | 2018-02-11 | 2018-02-12 | 21 |  | 22d |  |
| 23 |  | 查勘定损环节单元测试 | 1d | 2018-02-12 | 2018-02-13 | 22 |  | 22d |  |
| 24 | 1.5 | **立案环节** | 13d | 2018-02-06 A | 2018-02-28 |  | 22% | 22d |  |
| 25 |  | 立案环节流程调试 | 2d | 2018-02-06 A | 2018-02-08 A |  | 100% |  |  |
| 26 |  | 立案环节需求验证及调试 | 1d | 2018-02-13 | 2018-02-14 | 23 |  | 22d |  |
| 27 |  | 立案环节校验内容调整 | 1d | 2018-02-14 | 2018-02-22 | 26 |  | 22d |  |
| 28 |  | 关联清单功能联调 | 0.5d | 2018-02-22 | 2018-02-22 | 27 |  | 22d |  |
| 29 |  | 定损清单下载功能联调 | 0.5d | 2018-02-22 | 2018-02-23 | 28 |  | 22d |  |
| 30 |  | 自动立案功能测试及问题修改 | 3d | 2018-02-23 | 2018-02-27 | 29 |  | 22d |  |
| 31 |  | 立案环节单元测试 | 1d | 2018-02-27 | 2018-02-28 | 30 |  | 22d |  |
| 32 | 1.6 | **特殊赔案** | 6d | 2018-02-09 | 2018-02-23 |  |  | 9d |  |
| 33 |  | 特殊赔案环节需求验证及调试 | 1d | 2018-02-09 | 2018-02-11 | 83 |  | 9d |  |
| 34 |  | 特殊赔案环节校验内容调整 | 1d | 2018-02-11 | 2018-02-12 | 33 |  | 9d |  |
| 35 |  | 特殊赔案流程调试 | 1d | 2018-02-12 | 2018-02-13 | 34 |  | 9d |  |
| 36 |  | 特殊赔案清单功能验证及调试 | 1d | 2018-02-13 | 2018-02-14 | 35 |  | 9d |  |
| 37 |  | 特殊赔案双核对接 | 1d | 2018-02-14 | 2018-02-22 | 36 |  | 9d |  |
| 38 |  | 特殊赔案单元测试 | 1d | 2018-02-22 | 2018-02-23 | 37 |  | 9d |  |
| 39 | 1.7 | **理算环节** | 11d | 2018-02-08 A | 2018-02-28 |  | 5% | 10d |  |
| 40 |  | 计算书需求验证及调试 | 1d | 2018-02-08 A | 2018-02-09 | 25 | 50% | 10d |  |
| 41 |  | 计算书校验内容调整 | 1d | 2018-02-09 | 2018-02-11 | 40 |  | 10d |  |
| 42 |  | 关联清单功能验证 | 1d | 2018-02-11 | 2018-02-12 | 41 |  | 10d |  |
| 43 |  | 理赔清单功能验证 | 2d | 2018-02-12 | 2018-02-14 | 42 |  | 10d |  |
| 44 |  | 清单下载功能验证 | 1d | 2018-02-14 | 2018-02-22 | 43 |  | 10d |  |
| 45 |  | 共保赔款计算功能验证 | 1d | 2018-02-22 | 2018-02-23 | 44 |  | 10d |  |
| 46 |  | 金额汇总计算功能验证 | 1d | 2018-02-23 | 2018-02-24 | 45 |  | 10d |  |
| 47 |  | 双核对接 | 2d | 2018-02-24 | 2018-02-27 | 46 |  | 10d |  |
| 48 |  | 理算环节单元测试 | 1d | 2018-02-27 | 2018-02-28 | 47 |  | 10d |  |
| 49 | 1.8 | **双核核赔** | 3d | 2018-02-28 | 2018-03-05 |  |  | 10d |  |
| 50 |  | 理赔对接 | 3d | 2018-02-28 | 2018-03-05 | 48 |  | 10d |  |
| 51 | 1.9 | **结案环节** | 5d | 2018-03-01 | 2018-03-08 |  |  | 16d |  |
| 52 |  | 结案功能需求验证及调试 | 1d | 2018-03-01 | 2018-03-02 | 17 |  | 16d |  |
| 53 |  | 结案功能验证内容调整 | 1d | 2018-03-02 | 2018-03-05 | 52 |  | 16d |  |
| 54 |  | 自动结案功能验证 | 2d | 2018-03-05 | 2018-03-07 | 53 |  | 16d |  |
| 55 |  | 结案环节单元测试 | 1d | 2018-03-07 | 2018-03-08 | 54 |  | 16d |  |
| 56 | 1.10 | **重开赔案** | 5d | 2018-02-23 | 2018-03-01 |  |  | 9d |  |
| 57 |  | 重开赔案需求验证及调试 | 1d | 2018-02-23 | 2018-02-24 | 38 |  | 9d |  |
| 58 |  | 重开赔案校验功能调整 | 1d | 2018-02-24 | 2018-02-26 | 57 |  | 9d |  |
| 59 |  | 双核对接 | 2d | 2018-02-26 | 2018-02-28 | 58 |  | 9d |  |
| 60 |  | 重开赔案单元测试 | 1d | 2018-02-28 | 2018-03-01 | 59 |  | 9d |  |
| 61 | 1.11 | **支付录入** | 21d | 2018-02-06 A | 2018-03-12 |  | 31% | 14d |  |
| 62 |  | 支付管理前后端联调 | 2d | 2018-02-06 A | 2018-02-08 A |  | 100% |  |  |
| 63 |  | 支付录入查询前后端联调 | 2d | 2018-02-08 A | 2018-02-11 A | 62 | 100% |  |  |
| 64 |  | 整单支付前后端联调 | 1d | 2018-03-05 | 2018-03-06 | 50 |  | 10d |  |
| 65 |  | 清单支付前后端联调 | 1d | 2018-03-06 | 2018-03-07 | 64 |  | 10d |  |
| 66 |  | 支付情况统计前后端联调 | 2d | 2018-02-11 A | 2018-02-13 | 63 | 20% | 29d |  |
| 67 |  | 支付环节校验内容调整 | 2d | 2018-03-07 | 2018-03-09 | 65 |  | 10d |  |
| 68 |  | 双核对接 | 3d | 2018-02-24 | 2018-02-28 | 77 |  | 12d |  |
| 69 |  | 支付环节单元测试 | 1d | 2018-03-09 | 2018-03-12 | 67 |  | 14d |  |
| 70 | 1.12 | **区域设置** | 5d | 2018-02-06 A | 2018-02-12 |  | 60% | 27d |  |

| ID | WBS | Task | Duration | Start | Finish | Predecessors | Complete | Total float | Constraint |
| --- | --- | --- | --- | --- | --- | --- | --- | --- | --- |
| 71 |  | 区域设置前后端联调（前端页面开发） | 3d | 2018-02-06 A | 2018-02-09 A |  | 100% |  |  |
| 72 |  | 区域设置校验内容调整 | 1d | 2018-02-09 | 2018-02-11 | 71 |  | 27d |  |
| 73 |  | 区域设置单元测试 | 1d | 2018-02-11 | 2018-02-12 | 72 |  | 27d |  |
| 74 | 1.13 | **流程查询** | 5d | 2018-02-12 A | 2018-02-24 |  | 20% | 25d |  |
| 75 |  | 流程查询需求验证及调试 | 3d | 2018-02-12 | 2018-02-22 | 73 |  | 27d |  |
| 76 |  | 流程查询校验内容调整 | 1d | 2018-02-22 A | 2018-02-23 A | 75 | 100% |  |  |
| 77 |  | 流程查询单元测试 | 1d | 2018-02-23 | 2018-02-24 | 76 |  | 12d |  |
| 78 | 1.14 | **班表管理** | 3d | 2018-02-06 A | 2018-02-09 A |  | 100% |  |  |
| 79 |  | 班表管理需求验证及问题调整 | 1d | 2018-02-06 A | 2018-02-07 A |  | 100% |  |  |
| 80 |  | 班表管理检验内容调整 | 1d | 2018-02-07 A | 2018-02-08 A | 79 | 100% |  |  |
| 81 |  | 班表管理单元测试 | 1d | 2018-02-08 A | 2018-02-09 A | 80 | 100% |  |  |
| 82 | 1.15 | **自动理赔** | 3d | 2018-02-06 A | 2018-02-09 A |  | 100% |  |  |
| 83 |  | 自动理赔集成测试 | 3d | 2018-02-06 A | 2018-02-09 A |  | 100% |  |  |
| 84 | 1.16 | **理赔打印** | 14d | 2018-02-09 | 2018-03-06 |  |  | 18d |  |
| 85 |  | 农险卷宗封面前后端联调验证 | 2d | 2018-02-09 | 2018-02-12 | 81 |  | 18d |  |
| 86 |  | 现场查勘报告前后端联调验证 | 2d | 2018-02-12 | 2018-02-14 | 85 |  | 18d |  |
| 87 |  | 保单抄件前后端联调验证 | 2d | 2018-02-14 | 2018-02-23 | 86 |  | 18d |  |
| 88 |  | 结案报告前后端联调验证 | 2d | 2018-02-23 | 2018-02-26 | 87 |  | 18d |  |
| 89 |  | 赔款理算书前后端联调验证 | 2d | 2018-02-26 | 2018-02-28 | 88 |  | 18d |  |
| 90 |  | 赔款收据前后端联调验证 | 2d | 2018-02-28 | 2018-03-02 | 89 |  | 18d |  |
| 91 |  | 注销拒赔通知书前后端联调验证 | 2d | 2018-03-02 | 2018-03-06 | 90 |  | 18d |  |
| 92 | 1.17 | **工作流管理** | 11d | 2018-03-02 | 2018-03-19 |  |  | 9d |  |
| 93 |  | 工作流模板管理调试 | 3d | 2018-03-02 | 2018-03-07 | 105 |  | 9d |  |
| 94 |  | 工作流权限管理 | 2d | 2018-03-07 | 2018-03-09 | 93 |  | 9d |  |
| 95 |  | 工作流模板数据区分调整 | 4d | 2018-03-09 | 2018-03-15 | 94 |  | 9d |  |
| 96 |  | 单元测试 | 2d | 2018-03-15 | 2018-03-19 | 95 |  | 9d |  |
| 97 | 1.18 | **并案处理** | 7d | 2018-03-07 | 2018-03-16 |  |  | 10d |  |
| 98 |  | 并案处理需求验证及调整 | 3d | 2018-03-07 | 2018-03-12 | 104 |  | 12d |  |
| 99 |  | 并案处理校验调整 | 2d | 2018-03-12 | 2018-03-14 | 98 |  | 12d |  |
| 100 |  | 并案处理各环节处理验证 | 3d | 2018-03-09 | 2018-03-14 | 67 |  | 10d |  |
| 101 |  | 单元测试 | 2d | 2018-03-14 | 2018-03-16 | 100 |  | 10d |  |
| 102 | 2 | **对外提供接口** | 5d | 2018-02-28 | 2018-03-07 |  |  | 10d |  |
| 103 |  | 补充流程节点接口开发 | 3d | 2018-02-28 | 2018-03-05 | 68 |  | 12d |  |
| 104 |  | 对外提供流程图展示URL开发 | 2d | 2018-03-05 | 2018-03-07 | 103 |  | 12d |  |
| 105 |  | 损失清单接口封装 | 1d | 2018-03-01 | 2018-03-02 | 60 |  | 9d |  |
| 106 |  | 理赔系统测试环节 | 28d | 2018-02-14 | 2018-03-30 |  |  | 0d | start no earlier than 2018-02-14 |

## Version 2 (saved 2018-03-14, file 国元新农险理赔组开发计划--.mpp)

Note of the change: Revert "Revert "source code submit""

Last finish 2018-03-30 → 2018-04-06 (+7d). Complete tasks 13 → 85.

Added:

| ID | Task | Duration | Start | Finish | Predecessors | Resources |
| --- | --- | --- | --- | --- | --- | --- |
| 1 | **理赔部分** | 40d | 2018-02-06 A | 2018-04-06 |  |  |
| 31 | 电子单证功能验证及调整 | 4d | 2018-02-23 A | 2018-02-28 A | 30 | 陈道洋 |
| 37 | 特殊赔案任务处理环节需求验证及调试 | 2d | 2018-02-14 A | 2018-02-23 A | 36 | 王心洋 |
| 38 | 特殊赔案处理环节校验内容调整及调试 | 2d | 2018-02-23 A | 2018-02-26 A | 37 | 王心洋 |
| 59 | 预赔双核接口对接 | 2d | 2018-03-08 A | 2018-03-12 A | 53 | 王心洋 |
| 110 | 预报案调度接口 | 5d | 2018-03-22 A | 2018-03-29 | 105 | 孙朋飞 |
| 111 | **新险种开发** | 40d | 2018-02-06 A | 2018-04-06 |  |  |
| 112 | **能繁母猪险种（3220）** | 10d | 2018-03-06 A | 2018-03-20 |  |  |
| 113 | 需求分析 | 2d | 2018-03-06 A | 2018-03-08 A | 33 | 陈道洋 |
| 114 | 手动导入清单 | 3d | 2018-03-08 A | 2018-03-13 A | 113 | 陈道洋 |
| 115 | 耳标号验证 | 1d | 2018-03-13 A | 2018-03-14 A | 114 | 陈道洋 |
| 116 | 赔款金额计算规则配置 | 2d | 2018-03-14 | 2018-03-16 | 115 | 陈道洋 |
| 117 | 新险种个性化 | 1d | 2018-03-16 | 2018-03-19 | 116 | 陈道洋 |
| 118 | 单元测试 | 1d | 2018-03-19 | 2018-03-20 | 117 | 陈道洋 |
| 119 | **河南省小麦种植保险（3107）** | 2d | 2018-03-20 | 2018-03-22 |  |  |
| 120 | 需求分析 | 0.5d | 2018-03-20 | 2018-03-20 | 118 | 陈道洋 |
| 121 | 赔款金额计算规则配置 | 0.5d | 2018-03-20 | 2018-03-21 | 120 | 陈道洋 |
| 122 | 单元测试 | 1d | 2018-03-21 | 2018-03-22 | 121 | 陈道洋 |
| 123 | **安徽省河蟹养殖物联网天气指数保险(3237)** | 3d | 2018-03-22 | 2018-03-27 |  |  |
| 124 | 需求分析 | 1d | 2018-03-22 | 2018-03-23 | 122 | 陈道洋 |
| 125 | 新险种个性化 | 1d | 2018-03-23 | 2018-03-26 | 124 | 陈道洋 |
| 126 | 单元测试 | 1d | 2018-03-26 | 2018-03-27 | 125 | 陈道洋 |
| 127 | **安徽省玉米目标价格保险(3195)** | 3d | 2018-03-27 | 2018-03-30 |  |  |
| 128 | 需求分析 | 1d | 2018-03-27 | 2018-03-28 | 126 | 陈道洋 |
| 129 | 新险种个性化 | 1d | 2018-03-28 | 2018-03-29 | 128 | 陈道洋 |
| 130 | 单元测试 | 1d | 2018-03-29 | 2018-03-30 | 129 | 陈道洋 |
| 131 | **安徽省中央财政油菜种植保险（3108）** | 3d | 2018-03-08 A | 2018-03-13 A |  |  |
| 132 | 需求分析 | 0.5d | 2018-03-08 A | 2018-03-08 A | 58 | 王保良 |
| 133 | 赔款金额计算规则配置 | 0.5d | 2018-03-08 A | 2018-03-09 A | 132 | 王保良 |
| 134 | 新险种个性化 | 1d | 2018-03-09 A | 2018-03-12 A | 133 | 王保良 |
| 135 | 单元测试 | 1d | 2018-03-12 A | 2018-03-13 A | 134 | 王保良 |
| 136 | **安徽省地方财政小麦种植补充保险条款(3155)** | 3d | 2018-03-13 A | 2018-03-16 |  |  |
| 137 | 需求分析 | 0.5d | 2018-03-13 A | 2018-03-13 A | 135 | 王保良 |
| 138 | 赔款金额计算规则配置 | 0.5d | 2018-03-13 A | 2018-03-14 A | 137 | 王保良 |
| 139 | 新险种个性化 | 1d | 2018-03-14 | 2018-03-15 | 138 | 王保良 |
| 140 | 单元测试 | 1d | 2018-03-15 | 2018-03-16 | 139 | 王保良 |
| 141 | **安徽省中央财政玉米种植大灾保险条款(3162)** | 3d | 2018-03-16 | 2018-03-21 |  |  |
| 142 | 需求分析 | 0.5d | 2018-03-16 | 2018-03-16 | 140 | 王保良 |
| 143 | 赔款金额计算规则配置 | 0.5d | 2018-03-16 | 2018-03-19 | 142 | 王保良 |
| 144 | 新险种个性化 | 1d | 2018-03-19 | 2018-03-20 | 143 | 王保良 |
| 145 | 单元测试 | 1d | 2018-03-20 | 2018-03-21 | 144 | 王保良 |
| 146 | **河南省基础母牛养殖保险（3233）** | 3.5d | 2018-03-21 | 2018-03-26 |  |  |
| 147 | 需求分析 | 0.5d | 2018-03-21 | 2018-03-21 | 145 | 王保良 |
| 148 | 赔款金额计算规则配置 | 1d | 2018-03-21 | 2018-03-22 | 147 | 王保良 |
| 149 | 新险种个性化 | 1d | 2018-03-22 | 2018-03-23 | 148 | 王保良 |
| 150 | 单元测试 | 1d | 2018-03-23 | 2018-03-26 | 149 | 王保良 |
| 151 | **安徽省大豆目标价格保险(3198)** | 1d | 2018-02-06 | 2018-02-07 |  |  |
| 152 | 需求分析 | 1d | 2018-02-06 | 2018-02-07 |  |  |
| 153 | 新险种个性化 | 1d | 2018-02-06 | 2018-02-07 |  |  |
| 154 | 单元测试 | 1d | 2018-02-06 | 2018-02-07 |  |  |
| 155 | **安徽省玉米目标价格保险(3195)** | 1d | 2018-02-06 | 2018-02-07 |  |  |
| 156 | 需求分析 | 1d | 2018-02-06 | 2018-02-07 |  |  |
| 157 | 新险种个性化 | 1d | 2018-02-06 | 2018-02-07 |  |  |
| 158 | 单元测试 | 1d | 2018-02-06 | 2018-02-07 |  |  |
| 159 | **安徽省大棚草莓种植保险(3130)** | 3d | 2018-03-21 | 2018-03-26 |  |  |
| 160 | 需求分析 | 0.5d | 2018-03-21 | 2018-03-21 | 71 | 王心洋 |
| 161 | 赔款金额计算规则配置 | 0.5d | 2018-03-21 | 2018-03-22 | 160 | 王心洋 |
| 162 | 新险种个性化 | 1d | 2018-03-22 | 2018-03-23 | 161 | 王心洋 |
| 163 | 单元测试 | 1d | 2018-03-23 | 2018-03-26 | 162 | 王心洋 |
| 164 | **安徽省大棚蔬菜种植保险（A款）(3147)** | 3d | 2018-03-26 | 2018-03-29 |  |  |
| 165 | 需求分析 | 0.5d | 2018-03-26 | 2018-03-26 | 163 | 王心洋 |
| 166 | 赔款金额计算规则配置 | 0.5d | 2018-03-26 | 2018-03-27 | 165 | 王心洋 |
| 167 | 新险种个性化 | 1d | 2018-03-27 | 2018-03-28 | 166 | 王心洋 |
| 168 | 单元测试 | 1d | 2018-03-28 | 2018-03-29 | 167 | 王心洋 |
| 169 | **贵州省地方财政大棚蔬菜种植保险(3141)** | 5d | 2018-03-08 A | 2018-03-15 |  |  |
| 170 | 需求分析 | 1d | 2018-03-08 A | 2018-03-09 A | 53 | 王志文 |
| 171 | 赔款金额计算规则配置 | 2d | 2018-03-09 A | 2018-03-13 A | 170 | 王志文 |
| 172 | 新险种个性化 | 1d | 2018-03-13 A | 2018-03-14 A | 171 | 王志文 |
| 173 | 单元测试 | 1d | 2018-03-14 A | 2018-03-15 | 172 | 王志文 |
| 174 | **安徽省淡水养殖（鱼）保险(3224)** | 4d | 2018-03-15 | 2018-03-21 |  |  |
| 175 | 需求分析 | 0.5d | 2018-03-15 | 2018-03-15 | 173 | 王志文 |
| 176 | 赔款金额计算规则配置 | 1.5d | 2018-03-15 | 2018-03-19 | 175 | 王志文 |
| 177 | 新险种个性化 | 1d | 2018-03-19 | 2018-03-20 | 176 | 王志文 |
| 178 | 单元测试 | 1d | 2018-03-20 | 2018-03-21 | 177 | 王志文 |
| 179 | **安徽省大棚蔬菜种植保险（B款）(3141)** | 2d | 2018-03-21 | 2018-03-23 |  |  |
| 180 | 需求分析 | 0.5d | 2018-03-21 | 2018-03-21 | 178 | 王志文 |
| 181 | 赔款金额计算规则配置 | 0.5d | 2018-03-21 | 2018-03-22 | 180 | 王志文 |
| 182 | 单元测试 | 1d | 2018-03-22 | 2018-03-23 | 181 | 王志文 |
| 183 | **河南省大棚蔬菜种植保险（B款）(3141)** | 1.5d | 2018-03-23 | 2018-03-26 |  |  |
| 184 | 赔款金额计算规则配置 | 0.5d | 2018-03-23 | 2018-03-23 | 182 | 王志文 |
| 185 | 单元测试 | 1d | 2018-03-23 | 2018-03-26 | 184 | 王志文 |
| 186 | **湖北省大棚蔬菜种植保险（B款）(3141)** | 1.5d | 2018-03-26 | 2018-03-28 |  |  |
| 187 | 赔款金额计算规则配置 | 0.5d | 2018-03-26 | 2018-03-27 | 185 | 王志文 |
| 188 | 单元测试 | 1d | 2018-03-27 | 2018-03-28 | 187 | 王志文 |
| 189 | **湖北省蔬菜（露地型）种植保险(3134)** | 3d | 2018-03-28 | 2018-04-02 |  |  |
| 190 | 需求分析 | 0.5d | 2018-03-28 | 2018-03-28 | 188 | 王志文 |
| 191 | 赔款金额计算规则配置 | 0.5d | 2018-03-28 | 2018-03-29 | 190 | 王志文 |
| 192 | 新险种个性化 | 1d | 2018-03-29 | 2018-03-30 | 191 | 王志文 |
| 193 | 单元测试 | 1d | 2018-03-30 | 2018-04-02 | 192 | 王志文 |
| 194 | **草莓种植小额信贷组合保险(3129)** | 4d | 2018-04-02 | 2018-04-06 |  |  |
| 195 | 需求分析 | 1d | 2018-04-02 | 2018-04-03 | 193 | 王志文 |
| 196 | 赔款金额计算规则配置 | 1d | 2018-04-03 | 2018-04-04 | 195 | 王志文 |
| 197 | 新险种个性化 | 1d | 2018-04-04 | 2018-04-05 | 196 | 王志文 |
| 198 | 单元测试 | 1d | 2018-04-05 | 2018-04-06 | 197 | 王志文 |

Removed: 37 特殊赔案双核对接; 106 理赔系统测试环节

Changed:

| ID | Task | Start | Finish | Duration | Complete | Total float | Predecessors | Other |
| --- | --- | --- | --- | --- | --- | --- | --- | --- |
| 2 | **理赔系统联调工作** |  | 2018-03-19 → 2018-03-22 (+3d) | 26d → 29d | 16% → 77% | 9d → 11d |  |  |
| 3 | **首页** |  | 2018-02-13 → 2018-02-23 A (+10d) | 5d → 8d | 40% → 100% | 29d → none |  |  |
| 6 | 机构切换联动待处理数字显示 | 2018-02-08 → 2018-02-13 A (+5d) | 2018-02-09 → 2018-02-14 A (+5d) |  | 0% → 100% | 31d → none | 5 → 13 | constraint none → start no earlier than 2018-02-12 |
| 7 | 机构切换联动待处理数据列表 | 2018-02-09 → 2018-02-14 A (+5d) | 2018-02-11 → 2018-02-22 A (+11d) |  | 0% → 100% | 31d → none |  |  |
| 8 | 个人信息查看及修改联调 | 2018-02-11 A → 2018-02-08 A (-3d) | 2018-02-12 A → 2018-02-09 A (-3d) |  |  |  | 7 → 5 |  |
| 9 | 首页功能单元测试 | 2018-02-12 → 2018-02-22 A (+10d) | 2018-02-13 → 2018-02-23 A (+10d) |  | 0% → 100% | 16d → none | 8 → 7 |  |
| 10 | **报案环节** | 2018-02-13 → 2018-02-09 A (-4d) | 2018-02-23 → 2018-02-13 A (-10d) |  | 0% → 100% | 16d → none |  |  |
| 11 | 报案登记需求验证及调整 | 2018-02-13 → 2018-02-09 A (-4d) | 2018-02-14 → 2018-02-11 A (-3d) |  | 0% → 100% | 16d → none | 9 → 8 |  |
| 12 | 报案环节校验内容调试 | 2018-02-14 → 2018-02-11 A (-3d) | 2018-02-22 → 2018-02-12 A (-10d) |  | 0% → 100% | 16d → none |  |  |
| 13 | 报案环节单元测试 | 2018-02-22 → 2018-02-12 A (-10d) | 2018-02-23 → 2018-02-13 A (-10d) |  | 0% → 100% | 16d → none |  |  |
| 14 | **调度环节** | 2018-02-23 A | 2018-03-01 A |  | 0% → 100% | 16d → none |  |  |
| 15 | 调度环节需求验证及调整 | 2018-02-23 A | 2018-02-24 A |  | 0% → 100% | 16d → none | 13 → 9 |  |
| 16 | 调度环节校验内容调整 | 2018-02-24 A | 2018-02-26 A |  | 0% → 100% | 16d → none |  |  |
| 17 | 发起调查接口对接 | 2018-02-26 A | 2018-02-28 A |  | 0% → 100% | 16d → none |  |  |
| 18 | 调度环节单元测试 | 2018-02-28 A | 2018-03-01 A |  | 0% → 100% | 16d → none |  |  |
| 19 | **查勘定损** |  | 2018-02-13 A |  | 20% → 100% | 22d → none |  |  |
| 21 | 关联清单功能联调 | 2018-02-08 A | 2018-02-09 A |  | 0% → 100% | 22d → none |  |  |
| 22 | 定损清单下载功能联调 | 2018-02-09 A | 2018-02-11 A |  | 0% → 100% | 22d → none |  |  |
| 23 | 查勘定损校验内容调试 | 2018-02-11 A | 2018-02-12 A |  | 0% → 100% | 22d → none |  |  |
| 24 | 查勘定损环节单元测试 | 2018-02-12 A | 2018-02-13 A |  | 0% → 100% | 22d → none |  |  |
| 25 | **立案环节** |  | 2018-02-28 → 2018-03-06 A (+6d) | 13d → 17d | 22% → 100% | 22d → none |  |  |
| 27 | 立案环节需求验证及调试 | 2018-02-13 A | 2018-02-14 A |  | 0% → 100% | 22d → none |  |  |
| 28 | 立案环节校验内容调整 | 2018-02-14 A | 2018-02-22 A |  | 0% → 100% | 22d → none |  |  |
| 29 | 关联清单功能联调 | 2018-02-22 A | 2018-02-22 A |  | 0% → 100% | 22d → none |  |  |
| 30 | 定损清单下载功能联调 | 2018-02-22 A | 2018-02-23 A |  | 0% → 100% | 22d → none |  |  |
| 32 | 自动立案功能测试及问题修改 | 2018-02-23 → 2018-02-28 A (+5d) | 2018-02-27 → 2018-03-05 A (+6d) |  | 0% → 100% | 22d → none | 30 → 31 |  |
| 33 | 立案环节单元测试 | 2018-02-27 → 2018-03-05 A (+6d) | 2018-02-28 → 2018-03-06 A (+6d) |  | 0% → 100% | 22d → none |  |  |
| 34 | **特殊赔案** | 2018-02-09 A | 2018-02-23 → 2018-03-01 A (+6d) | 6d → 11d | 0% → 100% | 9d → none |  |  |
| 35 | 特殊赔案申请环节需求验证及调试 | 2018-02-09 A | 2018-02-11 → 2018-02-12 A (+1d) | 1d → 2d | 0% → 100% | 9d → none |  | was named 特殊赔案环节需求验证及调试 |
| 36 | 特殊赔案申请环节校验内容调整 | 2018-02-11 → 2018-02-12 A (+1d) | 2018-02-12 → 2018-02-14 A (+2d) | 1d → 2d | 0% → 100% | 9d → none |  | was named 特殊赔案环节校验内容调整 |
| 39 | 特殊赔案流程调试 | 2018-02-12 → 2018-02-26 A (+14d) | 2018-02-13 → 2018-02-27 A (+14d) |  | 0% → 100% | 9d → none | 36 → 38 |  |
| 40 | 特殊赔案清单功能验证及调试 | 2018-02-13 → 2018-02-27 A (+14d) | 2018-02-14 → 2018-02-28 A (+14d) |  | 0% → 100% | 9d → none |  |  |
| 41 | 特殊赔案单元测试 | 2018-02-22 → 2018-02-28 A (+6d) | 2018-02-23 → 2018-03-01 A (+6d) |  | 0% → 100% | 9d → none | 特殊赔案双核对接 → 40 |  |
| 42 | **理算环节** |  | 2018-02-28 → 2018-02-27 A (-1d) | 11d → 10d | 5% → 100% | 10d → none |  |  |
| 43 | 计算书需求验证及调试 |  | 2018-02-09 A |  | 50% → 100% | 10d → none |  |  |
| 44 | 关联清单功能验证 | 2018-02-11 → 2018-02-09 A (-2d) | 2018-02-12 → 2018-02-11 A (-1d) |  | 0% → 100% | 10d → none | 49 → 43 |  |
| 45 | 理赔清单功能验证 | 2018-02-12 → 2018-02-11 A (-1d) | 2018-02-14 → 2018-02-13 A (-1d) |  | 0% → 100% | 10d → none |  |  |
| 46 | 清单下载功能验证 | 2018-02-14 → 2018-02-13 A (-1d) | 2018-02-22 → 2018-02-14 A (-8d) |  | 0% → 100% | 10d → none |  |  |
| 47 | 共保赔款计算功能验证 | 2018-02-22 → 2018-02-14 A (-8d) | 2018-02-23 → 2018-02-22 A (-1d) |  | 0% → 100% | 10d → none |  |  |
| 48 | 金额汇总计算功能验证 | 2018-02-23 → 2018-02-22 A (-1d) | 2018-02-24 → 2018-02-23 A (-1d) |  | 0% → 100% | 10d → none |  |  |
| 49 | 计算书校验内容调整 | 2018-02-09 → 2018-02-23 A (+14d) | 2018-02-11 → 2018-02-24 A (+13d) |  | 0% → 100% | 10d → none | 43 → 48 |  |
| 50 | 双核对接(理赔方面) | 2018-02-24 A | 2018-02-27 → 2018-02-26 A (-1d) | 2d → 1d | 0% → 100% | 10d → none | 48 → 49 | was named 双核对接 |
| 51 | 理算环节单元测试 | 2018-02-27 → 2018-02-26 A (-1d) | 2018-02-28 → 2018-02-27 A (-1d) |  | 0% → 100% | 10d → none |  |  |
| 52 | **双核核赔** | 2018-02-28 → 2018-02-27 A (-1d) | 2018-03-05 → 2018-03-08 A (+3d) | 3d → 7d | 0% → 100% | 10d → none |  |  |
| 53 | 实赔双核接口对接 | 2018-02-28 → 2018-02-27 A (-1d) | 2018-03-05 → 2018-03-08 A (+3d) | 3d → 7d | 0% → 100% | 10d → none |  | was named 理赔对接 |
| 54 | **结案环节** | 2018-03-01 A | 2018-03-08 → 2018-03-12 A (+4d) | 5d → 7d | 0% → 100% | 16d → none |  |  |
| 55 | 结案功能需求验证及调试 | 2018-03-01 A | 2018-03-02 A |  | 0% → 100% | 16d → none |  |  |
| 56 | 结案功能验证内容调整 | 2018-03-02 A | 2018-03-05 A |  | 0% → 100% | 16d → none |  |  |
| 57 | 自动结案功能验证 | 2018-03-05 A | 2018-03-07 A |  | 0% → 100% | 16d → none |  |  |
| 58 | 结案环节单元测试 | 2018-03-07 A | 2018-03-08 A |  | 0% → 100% | 16d → none |  |  |
| 60 | **重开赔案** | 2018-02-23 → 2018-03-06 (+11d) | 2018-03-01 → 2018-03-22 (+21d) | 5d → 12d |  | 9d → 11d |  |  |
| 61 | 重开赔案需求验证及调试 | 2018-02-23 → 2018-03-06 (+11d) | 2018-02-24 → 2018-03-09 (+13d) | 1d → 3d |  | 9d → 11d | 41 → 95 | constraint none → start no earlier than 2018-02-27; resources 王心洋 → 李文刚 |
| 62 | 重开赔案校验功能调整 | 2018-02-24 → 2018-03-09 (+13d) | 2018-02-26 → 2018-03-14 (+16d) | 1d → 3d |  | 9d → 11d |  | resources 王心洋 → 李文刚 |
| 63 | 双核对接 | 2018-02-26 → 2018-03-14 (+16d) | 2018-02-28 → 2018-03-19 (+19d) | 2d → 3d |  | 9d → 11d |  | resources 王心洋 → 李文刚 |
| 64 | 重开赔案单元测试 | 2018-02-28 → 2018-03-19 (+19d) | 2018-03-01 → 2018-03-22 (+21d) | 1d → 3d |  | 9d → 11d |  | resources 王心洋 → 李文刚 |
| 65 | **支付录入** |  | 2018-03-12 → 2018-03-21 (+9d) | 21d → 28d | 31% → 47% | 14d → 12d |  |  |
| 68 | 整单支付前后端联调 | 2018-03-05 → 2018-03-14 (+9d) | 2018-03-06 → 2018-03-15 (+9d) | 1d → 1.5d |  | 10d → 5d | 53 → 109 | resources 王志文 → 王心洋 |
| 69 | 清单支付前后端联调 | 2018-03-06 → 2018-03-15 (+9d) | 2018-03-07 → 2018-03-16 (+9d) |  |  | 10d → 5d |  | resources 王志文 → 王心洋 |
| 70 | 支付情况统计前后端联调 |  | 2018-02-13 A |  | 20% → 100% | 29d → none |  |  |
| 71 | 支付环节校验内容调整 | 2018-03-07 → 2018-03-16 (+9d) | 2018-03-09 → 2018-03-21 (+12d) | 2d → 2.5d |  | 10d → 5d |  | resources 王志文 → 王心洋 |
| 73 | 支付环节单元测试 | 2018-03-09 → 2018-03-08 A (-1d) | 2018-03-12 → 2018-03-09 A (-3d) |  | 0% → 100% | 14d → none |  |  |
| 74 | **区域设置** |  | 2018-02-12 A |  | 60% → 100% | 27d → none |  |  |
| 76 | 区域设置校验内容调整 | 2018-02-09 A | 2018-02-11 A |  | 0% → 100% | 27d → none |  |  |
| 77 | 区域设置单元测试 | 2018-02-11 A | 2018-02-12 A |  | 0% → 100% | 27d → none |  |  |
| 78 | **流程查询** |  | 2018-02-24 A |  | 20% → 100% | 25d → none |  |  |
| 79 | 流程查询需求验证及调试 | 2018-02-12 A | 2018-02-22 A |  | 0% → 100% | 27d → none |  |  |
| 81 | 流程查询单元测试 | 2018-02-23 A | 2018-02-24 A |  | 0% → 100% | 12d → none |  |  |
| 88 | **理赔打印** | 2018-02-09 A | 2018-03-06 A |  | 0% → 100% | 18d → none |  |  |
| 89 | 农险卷宗封面前后端联调验证 | 2018-02-09 A | 2018-02-12 A |  | 0% → 100% | 18d → none |  |  |
| 90 | 现场查勘报告前后端联调验证 | 2018-02-12 A | 2018-02-14 A |  | 0% → 100% | 18d → none |  |  |

| ID | Task | Start | Finish | Duration | Complete | Total float | Predecessors | Other |
| --- | --- | --- | --- | --- | --- | --- | --- | --- |
| 91 | 保单抄件前后端联调验证 | 2018-02-14 A | 2018-02-23 A |  | 0% → 100% | 18d → none |  |  |
| 92 | 结案报告前后端联调验证 | 2018-02-23 A | 2018-02-26 A |  | 0% → 100% | 18d → none |  |  |
| 93 | 赔款理算书前后端联调验证 | 2018-02-26 A | 2018-02-28 A |  | 0% → 100% | 18d → none |  |  |
| 94 | 赔款收据前后端联调验证 | 2018-02-28 A | 2018-03-02 A |  | 0% → 100% | 18d → none |  |  |
| 95 | 注销拒赔通知书前后端联调验证 | 2018-03-02 A | 2018-03-06 A |  | 0% → 100% | 18d → none |  |  |
| 96 | **工作流管理** | 2018-03-02 → 2018-03-05 (+3d) | 2018-03-19 → 2018-03-14 (-5d) | 11d → 7d |  | 9d → 17d |  |  |
| 97 | 工作流模板管理调试 | 2018-03-02 → 2018-03-05 (+3d) | 2018-03-07 → 2018-03-06 (-1d) | 3d → 1d |  | 9d → 16d | 109 → none | constraint none → start no earlier than 2018-03-05; resources 王心洋 → 龚翔 |
| 98 | 工作流权限管理 | 2018-03-07 → 2018-03-06 (-1d) | 2018-03-09 → 2018-03-07 (-2d) | 2d → 1d |  | 9d → 16d |  | resources 王心洋 → 龚翔 |
| 99 | 工作流模板数据区分调整 | 2018-03-09 → 2018-03-07 (-2d) | 2018-03-15 → 2018-03-12 (-3d) | 4d → 3d |  | 9d → 16d |  | resources 王心洋 → 龚翔 |
| 100 | 单元测试 | 2018-03-15 → 2018-03-12 (-3d) | 2018-03-19 → 2018-03-14 (-5d) |  |  | 9d → 16d |  | resources 王心洋 → 龚翔 |
| 101 | **并案处理** | 2018-03-07 → 2018-03-12 A (+5d) | 2018-03-16 → 2018-03-22 (+6d) | 7d → 8d | 0% → 40% | 10d → 2.5d |  |  |
| 102 | 并案处理需求验证及调整 | 2018-03-07 → 2018-03-12 A (+5d) | 2018-03-12 → 2018-03-14 A (+2d) | 3d → 2d | 0% → 100% | 12d → none |  |  |
| 103 | 并案处理校验调整 | 2018-03-12 → 2018-03-14 A (+2d) | 2018-03-14 → 2018-03-16 (+2d) |  | 0% → 60% | 12d → 2.5d |  |  |
| 104 | 并案处理各环节处理验证 | 2018-03-09 → 2018-03-16 (+7d) | 2018-03-14 → 2018-03-20 (+6d) | 3d → 2d |  | 10d → 2.5d | 71 → 103 | resources 王志文 → 孙朋飞 |
| 105 | 单元测试 | 2018-03-14 → 2018-03-20 (+6d) | 2018-03-16 → 2018-03-22 (+6d) |  |  | 10d → 2.5d |  | resources 王志文; 孙朋飞 → 孙朋飞 |
| 106 | **对外提供接口** | 2018-02-28 A | 2018-03-07 → 2018-03-29 (+22d) | 5d → 21d | 0% → 83% | 10d → 6d |  |  |
| 107 | 补充流程节点接口开发 | 2018-02-28 A | 2018-03-05 → 2018-03-07 A (+2d) | 3d → 5d | 0% → 100% | 12d → none |  |  |
| 108 | 对外提供流程图展示URL开发 | 2018-03-05 → 2018-03-07 A (+2d) | 2018-03-07 → 2018-03-12 A (+5d) | 2d → 3d | 0% → 100% | 12d → none |  |  |
| 109 | 损失清单接口封装 | 2018-03-01 → 2018-03-12 A (+11d) | 2018-03-02 → 2018-03-14 A (+12d) | 1d → 2d | 0% → 100% | 9d → none | 64 → 59 |  |
