How a schedule from MS Project changed from version to version. A marks actual dates.

## Version 1 (data date 2017-10-17, saved 2017-10-23, file 综合组-何伟东20171023.mpp)

Note of the change: Revert "Revert "source code submit""

| ID | WBS | Task | Duration | Start | Finish | Predecessors | Complete | Total float | Constraint |
| --- | --- | --- | --- | --- | --- | --- | --- | --- | --- |
| 1 | 1 | **承保系统** | 28d | 2017-10-23 A | 2017-11-24 |  | 13% | 12d |  |
| 2 | 1.1 | **单证打印** | 16d | 2017-10-23 A | 2017-11-08 |  | 29% | 24d |  |
| 3 | 1.1.1 | **投保单打印** | 4d | 2017-10-23 A | 2017-10-26 |  | 50% | 36d |  |
| 4 |  | 投保单打印查询逻辑 | 1d | 2017-10-23 A | 2017-10-23 A |  | 100% |  |  |
| 5 |  | 投保单打印回写是否打印字段（单个打印与批量打印） | 1d | 2017-10-24 A | 2017-10-24 A |  | 100% |  | start no earlier than 2017-10-24 |
| 6 |  | 开发自测 | 2d | 2017-10-25 | 2017-10-26 |  |  | 36d | start no earlier than 2017-10-25 |
| 7 |  | 联调测试 | 3d | 2017-10-27 | 2017-10-30 |  |  | 33d | start no earlier than 2017-10-27 |
| 8 | 1.1.3 | **保单打印** | 10d | 2017-10-23 A | 2017-11-02 |  | 36% | 30d |  |
| 9 |  | 单证类型查询逻辑（从单证系统查询） | 2d | 2017-10-23 | 2017-10-24 |  |  | 38d | start no earlier than 2017-10-23 |
| 10 |  | 印刷流水号获取逻辑（从单证系统查询） | 2d | 2017-10-25 | 2017-10-26 |  |  | 36d | start no earlier than 2017-10-25 |
| 11 |  | 开发自测 | 1d | 2017-10-27 | 2017-10-27 |  |  | 35d | start no earlier than 2017-10-27 |
| 12 |  | 保单正本全打 | 1d | 2017-10-30 A | 2017-10-30 A |  | 100% |  | start no earlier than 2017-10-30 |
| 13 |  | 保单副本打印 | 1d | 2017-10-31 | 2017-10-31 |  |  | 32d | start no earlier than 2017-10-31 |
| 14 |  | 保单抄件打印 | 1d | 2017-11-01 | 2017-11-01 |  |  | 31d | start no earlier than 2017-11-01 |
| 15 |  | 主险清单打印 | 1d | 2017-11-02 A | 2017-11-02 A |  | 100% |  | start no earlier than 2017-11-02 |
| 16 |  | 特别约定打印 | 1d | 2017-10-23 A | 2017-10-23 A |  | 100% |  | start no earlier than 2017-10-23 |
| 17 |  | 标的地址打印 | 1d | 2017-10-24 A | 2017-10-24 A |  | 100% |  | start no earlier than 2017-10-24 |
| 18 |  | 附加险清单打印 | 1d | 2017-10-25 A | 2017-10-25 A |  | 100% |  | start no earlier than 2017-10-25 |
| 19 |  | 缴费计划打印 | 1d | 2017-10-26 A | 2017-10-26 A |  | 100% |  | start no earlier than 2017-10-26 |
| 20 |  | 缴费通知书打印 | 1d | 2017-10-27 A | 2017-10-27 |  | 50% | 35d | start no earlier than 2017-10-27 |
| 21 |  | 承保卷宗封面打印 | 1d | 2017-10-30 | 2017-10-30 |  |  | 33d | start no earlier than 2017-10-30 |
| 22 |  | B5条款打印 | 1d | 2017-10-31 | 2017-10-31 |  |  | 32d | start no earlier than 2017-10-31 |
| 23 |  | 开发自测 | 2d | 2017-11-01 | 2017-11-02 |  |  | 30d | start no earlier than 2017-11-01 |
| 24 |  | 保险凭证打印 | 1d | 2017-11-03 | 2017-11-03 |  |  | 29d | start no earlier than 2017-11-03 |
| 25 |  | 批单打印 | 1d | 2017-11-06 | 2017-11-06 |  |  | 26d | start no earlier than 2017-11-06 |
| 26 |  | 开发自测 | 2d | 2017-11-07 | 2017-11-08 |  |  | 24d | start no earlier than 2017-11-07 |
| 27 |  | 联调测试 | 2d | 2017-11-09 | 2017-11-10 |  |  | 22d | start no earlier than 2017-11-09 |
| 28 | 1.3 | **凭证短信发送** | 4d | 2017-10-30 | 2017-11-02 |  |  | 30d |  |
| 29 |  | 短信模板创建 | 1d | 2017-10-30 | 2017-10-30 |  |  | 33d | start no earlier than 2017-10-30 |
| 30 |  | 短信发送查询 | 1d | 2017-10-31 | 2017-10-31 |  |  | 32d | start no earlier than 2017-10-31 |
| 31 | 1.3.3 | **发送短信** | 2d | 2017-11-01 | 2017-11-02 |  |  | 30d |  |
| 32 |  | 短信模板查询（页面双击域） | 1d | 2017-11-01 | 2017-11-01 |  |  | 31d | start no earlier than 2017-11-01 |
| 33 |  | 发送短信后端逻辑 | 1d | 2017-11-02 | 2017-11-02 |  |  | 30d | start no earlier than 2017-11-02 |
| 34 |  | 联调测试 | 4d | 2017-11-03 | 2017-11-06 |  |  | 26d | start no earlier than 2017-11-03 |
| 35 | 1.5 | **支付信息维护** | 8d | 2017-10-23 | 2017-10-31 |  |  | 32d |  |
| 36 | 1.5.1 | **支付信息查询** | 3d | 2017-10-23 | 2017-10-25 |  |  | 36d |  |
| 37 |  | 支付信息查询（列表信息） | 1d | 2017-10-23 | 2017-10-23 |  |  | 38d | start no earlier than 2017-10-23 |
| 38 |  | 支付信息查询（详细信息） | 1d | 2017-10-24 | 2017-10-24 |  |  | 36d | start no earlier than 2017-10-24 |
| 39 |  | 导出账户信息 | 1d | 2017-10-25 | 2017-10-25 | 38 |  | 36d |  |
| 40 | 1.5.2 | **支付信息录入** | 4d | 2017-10-26 | 2017-10-30 | 36 |  | 33d |  |
| 41 |  | 整单支付信息录入 | 1d | 2017-10-26 | 2017-10-26 |  |  | 36d |  |
| 42 | 1.5.2.2 | **清单支付信息录入** | 3d | 2017-10-27 | 2017-10-30 |  |  | 33d |  |
| 43 |  | 导入账户信息 | 1d | 2017-10-27 | 2017-10-27 |  |  | 35d | start no earlier than 2017-10-27 |
| 44 |  | 导出账户信息 | 1d | 2017-10-30 | 2017-10-30 |  |  | 33d | start no earlier than 2017-10-30 |
| 45 |  | 支付信息维护 | 1d | 2017-10-31 | 2017-10-31 |  |  | 32d | start no earlier than 2017-10-31 |
| 46 |  | 联调测试 | 2d | 2017-11-01 | 2017-11-02 |  |  | 30d | start no earlier than 2017-11-01 |
| 47 | 1.7 | **业务清单查询** | 2d | 2017-11-07 | 2017-11-08 |  |  | 24d |  |
| 48 |  | 业务清单查询（列表信息） | 1d | 2017-11-07 | 2017-11-07 |  |  | 25d | start no earlier than 2017-11-07 |
| 49 |  | 业务清单查询（详细信息） | 1d | 2017-11-08 | 2017-11-08 |  |  | 24d | start no earlier than 2017-11-08 |
| 50 | 1.8 | **影像资料** | 2d | 2017-11-09 | 2017-11-10 |  |  | 22d |  |
| 51 |  | 影像资料查询（列表信息） | 1d | 2017-11-09 | 2017-11-09 |  |  | 23d | start no earlier than 2017-11-09 |
| 52 |  | 影像资料查看 | 1d | 2017-11-10 | 2017-11-10 |  |  | 22d | start no earlier than 2017-11-10 |
| 53 |  | 联调测试 | 4d | 2017-11-13 | 2017-11-16 |  |  | 18d | start no earlier than 2017-11-13 |
| 54 | 1.10 | **精准扶贫** | 9d | 2017-11-10 | 2017-11-22 |  |  | 14d |  |
| 55 | 1.10.1 | **扶贫清单导入** | 3d | 2017-11-10 | 2017-11-14 |  |  | 20d |  |
| 56 |  | 清单归属区域查询（页面双击域） | 1d | 2017-11-10 | 2017-11-10 |  |  | 22d | start no earlier than 2017-11-10 |
| 57 |  | 贫困农户信息Excel模板下载 | 1d | 2017-11-13 | 2017-11-13 |  |  | 21d | start no earlier than 2017-11-13 |
| 58 |  | 贫困农户信息Excel导入 | 1d | 2017-11-14 | 2017-11-14 |  |  | 20d | start no earlier than 2017-11-14 |
| 59 | 1.10.2 | **贫困户信息查询** | 6d | 2017-11-15 | 2017-11-22 |  |  | 14d |  |
| 60 |  | 贫困户信息查询（列表信息） | 1d | 2017-11-15 | 2017-11-15 |  |  | 19d | start no earlier than 2017-11-15 |
| 61 |  | 贫困户信息查询（详细信息） | 1d | 2017-11-16 | 2017-11-16 |  |  | 18d | start no earlier than 2017-11-16 |
| 62 |  | 贫困户信息修改 | 1d | 2017-11-17 | 2017-11-17 |  |  | 17d | start no earlier than 2017-11-17 |
| 63 |  | 导出户主清单 | 1d | 2017-11-20 | 2017-11-20 |  |  | 16d | start no earlier than 2017-11-20 |
| 64 |  | 导出人员信息 | 1d | 2017-11-21 | 2017-11-21 |  |  | 15d | start no earlier than 2017-11-21 |
| 65 |  | 贫困户信息删除 | 1d | 2017-11-22 | 2017-11-22 |  |  | 14d | start no earlier than 2017-11-22 |
| 66 |  | 联调测试 | 2d | 2017-11-23 | 2017-11-24 |  |  | 12d | start no earlier than 2017-11-23 |
| 67 | 2 | **交易清单系统** | 10d | 2017-11-03 | 2017-11-14 |  |  | 20d |  |
| 68 |  | 清单同步服务接口 | 1d | 2017-11-03 | 2017-11-03 |  |  | 29d | start no earlier than 2017-11-03 |
| 69 |  | 投保单回写接口 | 1d | 2017-11-06 | 2017-11-06 |  |  | 26d | start no earlier than 2017-11-06 |
| 70 |  | 清单查询接口 | 1d | 2017-11-07 | 2017-11-07 |  |  | 25d | start no earlier than 2017-11-07 |

| ID | WBS | Task | Duration | Start | Finish | Complete | Total float | Constraint |
| --- | --- | --- | --- | --- | --- | --- | --- | --- |
| 71 |  | 批改前清单信息回写接口 | 1d | 2017-11-08 | 2017-11-08 |  | 24d | start no earlier than 2017-11-08 |
| 72 |  | 批改后清单信息回写接口 | 1d | 2017-11-09 | 2017-11-09 |  | 23d | start no earlier than 2017-11-09 |
| 73 |  | 批改变化量清单信息回写 | 1d | 2017-11-10 | 2017-11-10 |  | 22d | start no earlier than 2017-11-10 |
| 74 |  | 保单相关信息回写接口 | 1d | 2017-11-13 | 2017-11-13 |  | 21d | start no earlier than 2017-11-13 |
| 75 |  | 险别清单回写接口 | 1d | 2017-11-14 | 2017-11-14 |  | 20d | start no earlier than 2017-11-14 |
| 76 |  | 联调测试 | 1d | 2017-11-15 | 2017-11-15 |  | 19d | start no earlier than 2017-11-15 |
| 77 | 4 | **核心系统对接以及周边** | 17d | 2017-11-13 A | 2017-12-05 | 6% | 5d |  |
| 78 | 4.1 | **再保** | 2d | 2017-11-16 | 2017-11-17 |  | 17d |  |
| 79 |  | 承保调用再保生成危险单位 | 2d | 2017-11-16 | 2017-11-17 |  | 17d | start no earlier than 2017-11-16 |
| 80 | 4.2 | **双核** | 4d | 2017-11-13 A | 2017-11-16 | 30% | 18d |  |
| 81 |  | 提交核保 | 3d | 2017-11-13 A | 2017-11-15 | 50% | 19d | start no earlier than 2017-11-13 |
| 82 |  | 核保通过投保单转保单 | 2d | 2017-11-15 | 2017-11-16 |  | 18d | start no earlier than 2017-11-15 |
| 83 | 4.3 | **与金禾系统对接** | 13d | 2017-11-17 | 2017-12-05 |  | 5d |  |
| 84 | 4.3.1 | **承保系统** | 4d | 2017-11-20 | 2017-11-23 |  | 13d |  |
| 85 |  | 关联清单数据 | 2d | 2017-11-20 | 2017-11-21 |  | 15d | start no earlier than 2017-11-20 |
| 86 |  | 投保人/被保险人信息 | 2d | 2017-11-22 | 2017-11-23 |  | 13d | start no earlier than 2017-11-22 |
| 87 | 4.3.2 | **种植险理赔** | 8d | 2017-11-24 | 2017-12-05 |  | 5d |  |
| 88 |  | 案件信息 | 2d | 2017-11-24 | 2017-11-27 |  | 11d | start no earlier than 2017-11-24 |
| 89 |  | 定损清单 | 2d | 2017-11-28 | 2017-11-29 |  | 9d | start no earlier than 2017-11-28 |
| 90 |  | 获取银行支付信息 | 2d | 2017-11-30 | 2017-12-01 |  | 7d | start no earlier than 2017-11-30 |
| 91 |  | 更新客户银行基础数据 | 2d | 2017-12-04 | 2017-12-05 |  | 5d | start no earlier than 2017-12-04 |
| 92 | 4.3.3 | **养殖险理赔** | 8d | 2017-11-17 | 2017-11-28 |  | 10d |  |
| 93 |  | 案件信息 | 2d | 2017-11-17 | 2017-11-20 |  | 16d | start no earlier than 2017-11-17 |
| 94 |  | 定损清单 | 2d | 2017-11-21 | 2017-11-22 |  | 14d | start no earlier than 2017-11-21 |
| 95 |  | 当前案件理赔节点查询 | 2d | 2017-11-23 | 2017-11-24 |  | 12d | start no earlier than 2017-11-23 |
| 96 |  | 案件修改内容 | 2d | 2017-11-27 | 2017-11-28 |  | 10d | start no earlier than 2017-11-27 |
| 97 |  | 联调测试 | 5d | 2017-12-06 | 2017-12-12 |  | 0d | start no earlier than 2017-12-06 |
| 101 |  | 工作总量：114天 | 1d? | 2017-10-23 | 2017-10-23 |  | 39d | start no earlier than 2017-10-23 |

## Version 2 (data date 2017-10-17, saved 2017-10-24, file 综合组-何伟东20171024.mpp)

Note of the change: Revert "Revert "source code submit""

Last finish stays 2017-12-12. Complete tasks 8 → 12.

Added:

| ID | Task | Duration | Start | Finish | Constraint | Resources |
| --- | --- | --- | --- | --- | --- | --- |
| 83 | **配置平台系统** | 1d | 2017-10-24 A | 2017-10-24 |  | 何伟东 |
| 84 | 获取配置信息（SysConfig.getProperty） | 1d | 2017-10-24 | 2017-10-24 | start no earlier than 2017-10-24 | 何伟东 |
| 85 | 在表UtiPlatConfigRule中查询rule字段 | 1d | 2017-10-24 A | 2017-10-24 | start no earlier than 2017-10-24 | 何伟东 |

Changed:

| ID | Task | Start | Finish | Duration | Complete | Total float | Other |
| --- | --- | --- | --- | --- | --- | --- | --- |
| 1 | **承保系统** |  |  |  | 13% → 18% |  |  |
| 2 | **单证打印** |  |  |  | 29% → 41% |  |  |
| 3 | **投保单打印** |  | 2017-10-26 A |  | 50% → 100% | 36d → none |  |
| 6 | 开发自测 | 2017-10-25 A | 2017-10-26 A |  | 0% → 100% | 36d → none |  |
| 8 | **保单打印** |  |  |  | 36% → 44% |  |  |
| 20 | 缴费通知书打印 |  | 2017-10-27 A |  | 50% → 100% | 35d → none |  |
| 21 | 承保卷宗封面打印 | 2017-10-30 A | 2017-10-30 A |  | 0% → 100% | 33d → none |  |
| 77 | **核心系统对接以及周边** | 2017-11-13 A → 2017-10-24 A (-20d) |  | 17d → 34d | 6% → 12% |  |  |
| 80 | **双核** |  | 2017-11-16 → 2017-11-17 (+1d) | 4d → 5d | 30% → 60% | 18d → 17d |  |
| 81 | 提交核保 |  | 2017-11-15 A |  | 50% → 100% | 19d → none |  |
| 82 | 核保通过投保单转保单 | 2017-11-15 → 2017-11-16 (+1d) | 2017-11-16 → 2017-11-17 (+1d) |  |  | 18d → 17d | constraint start no earlier than 2017-11-15 → start no earlier than 2017-11-16 |

## Version 3 (data date 2017-10-17, saved 2017-10-25, file 综合组-何伟东20171025.mpp)

Note of the change: Revert "Revert "source code submit""

Last finish stays 2017-12-12. Complete tasks 12 → 17.

Added:

| ID | Task | Duration | Start | Finish | Constraint | Resources |
| --- | --- | --- | --- | --- | --- | --- |
| 75 | 接收损失率清单接口（种植险） | 1d | 2017-11-14 | 2017-11-14 | start no earlier than 2017-11-14 | 何伟东 |
| 80 | 再保系统（更新询价单确认状态） | 2d | 2017-10-25 A | 2017-10-26 A |  | 何伟东 |

Changed:

| ID | Task | Start | Finish | Duration | Complete | Total float | Other |
| --- | --- | --- | --- | --- | --- | --- | --- |
| 1 | **承保系统** |  |  |  | 18% → 21% |  |  |
| 2 | **单证打印** |  |  |  | 41% → 48% |  |  |
| 8 | **保单打印** |  |  |  | 44% → 50% |  |  |
| 13 | 保单副本打印 | 2017-10-31 A | 2017-10-31 A |  | 0% → 100% | 32d → none |  |
| 25 | 批单打印 | 2017-11-06 A |  |  | 0% → 90% |  |  |
| 67 | **交易清单系统** |  | 2017-11-14 → 2017-11-15 (+1d) | 10d → 11d |  | 20d → 19d |  |
| 68 | 接收投保预确认清单接口 |  |  |  |  |  | was named 清单同步服务接口 |
| 69 | 投保预确认清单编号查询接口 |  |  |  |  |  | was named 投保单回写接口 |
| 70 | 投保预确认清单查询接口 |  |  |  |  |  | was named 清单查询接口 |
| 71 | 投保清单持久化接口 |  |  |  |  |  | was named 批改前清单信息回写接口 |
| 72 | 承保清单持久化接口 |  |  |  |  |  | was named 批改后清单信息回写接口 |
| 73 | 批改清单持久化接口 |  |  |  |  |  | was named 批改变化量清单信息回写 |
| 74 | 最新保单清单更新接口 |  |  |  |  |  | was named 保单相关信息回写接口 |
| 76 | 接收损失清单接口（养殖险） | 2017-11-14 → 2017-11-15 (+1d) | 2017-11-14 → 2017-11-15 (+1d) |  |  | 20d → 19d | was named 险别清单回写接口; constraint start no earlier than 2017-11-14 → start no earlier than 2017-11-15 |
| 78 | **核心系统对接以及周边** |  |  |  | 12% → 29% |  |  |
| 79 | **再保** | 2017-11-16 → 2017-10-25 A (-22d) | 2017-11-17 A | 2d → 21d | 0% → 100% | 17d → none |  |
| 81 | 再保系统（分保接受人查询） | 2017-11-16 A | 2017-11-17 A |  | 0% → 100% | 17d → none | was named 承保调用再保生成危险单位 |
| 85 | **配置平台系统** |  |  |  | 25% → 99% | 38d → 0d |  |
| 86 | 平台配置系统（getProperty） | 2017-10-24 A | 2017-10-24 A |  | 0% → 100% | 38d → none | was named 获取配置信息（SysConfig.getProperty） |
| 87 | 平台配置系统（getRuleInUtiPlatConfigRule） |  | 2017-10-24 A |  | 50% → 100% | 38d → none | was named 在表UtiPlatConfigRule中查询rule字段 |
