# 新一代农险种工作计划v0.9

How a schedule from MS Project changed from version to version. A marks actual dates.

## Version 1 (saved 2017-11-02, file 新一代农险种工作计划（测试组）.mpp)

Note of the change: source code submit

| ID | WBS | Task | Duration | Start | Finish | Complete | Total float | Constraint |
| --- | --- | --- | --- | --- | --- | --- | --- | --- |
| 1 | 1 | **第三方测试** | 120d? | 2017-10-16 A | 2018-03-30 | 3% | 0d |  |
| 2 | 1.1 | **版本管理** | 120d? | 2017-10-16 A | 2018-03-30 | 3% | 0d |  |
| 3 |  | jira搭建及工作流制定 | 0d? | 2017-10-23 A | 2017-10-23 A | 100% |  | finish no earlier than 2017-10-24 |
| 4 |  | jenkins持续集成部署 | 5d? | 2017-11-06 | 2017-11-10 |  | 100d | finish no earlier than 2017-11-10 |
| 5 | 1.1.3 | **需求理解分析** | 5d? | 2017-10-23 A | 2017-10-27 | 83% | 110d |  |
| 6 |  | 承保系统需求理解分析 | 5d? | 2017-10-23 A | 2017-10-27 A | 100% |  | finish no earlier than 2017-10-27 |
| 7 |  | 理赔系统需求理解分析 | 5d | 2017-10-23 A | 2017-10-27 | 50% | 110d | finish no earlier than 2017-10-27 |
| 8 |  | 交易清单系统需求理解分析 | 5d | 2017-10-23 A | 2017-10-27 A | 100% |  | finish no earlier than 2017-10-27 |
| 9 | 1.1.4 | **测试方案制定** | 5d? | 2017-10-23 A | 2017-10-27 | 20% | 110d |  |
| 10 |  | 承保系统测试功能范围及优先级制定 | 5d? | 2017-10-23 | 2017-10-27 |  | 110d | finish no earlier than 2017-10-27 |
| 11 |  | 理赔系统测试功能范围及优先级制定 | 5d? | 2017-10-23 | 2017-10-27 |  | 110d | finish no earlier than 2017-10-27 |
| 12 |  | 交易清单系统测试功能范围及优先级制定 | 5d? | 2017-10-23 | 2017-10-27 |  | 110d | finish no earlier than 2017-10-27 |
| 13 |  | 里程碑测试计划制定 | 5d? | 2017-10-23 A | 2017-10-27 | 50% | 110d | finish no earlier than 2017-10-27 |
| 14 |  | 详细测试计划制定 | 5d? | 2017-10-23 A | 2017-10-27 | 50% | 110d | finish no earlier than 2017-10-27 |
| 15 | 1.1.5 | **测试用例设计** | 15d? | 2017-10-16 A | 2017-11-03 | 13% | 105d |  |
| 16 |  | 承保系统用例集 | 10d? | 2017-10-23 A | 2017-11-03 | 50% | 105d | finish no earlier than 2017-11-03 |
| 17 |  | 理赔系统功能用例集 | 15d? | 2017-10-16 | 2017-11-03 |  | 105d | finish no earlier than 2017-11-03 |
| 18 |  | 交易清单系统功能用例集 | 15d? | 2017-10-16 | 2017-11-03 |  | 105d | finish no earlier than 2017-11-03 |
| 19 | 1.1.6 | **测试执行** | 105d? | 2017-11-06 | 2018-03-30 |  | 0d |  |
| 20 |  | 承保系统测试用例执行 | 94.5d? | 2017-11-06 | 2018-03-16 |  | 10.5d | start no earlier than 2017-11-06 |
| 21 |  | 理赔系统测试用例执行 | 94.5d? | 2017-11-06 | 2018-03-16 |  | 10.5d | start no earlier than 2017-11-06 |
| 22 |  | 交易清单系统测试用例执行 | 94.5d? | 2017-11-06 | 2018-03-16 |  | 10.5d | start no earlier than 2017-11-06 |
| 23 |  | 承保系统性能测试 | 60d? | 2017-12-07 | 2018-02-28 |  | 22d | finish no earlier than 2018-02-28 |
| 24 |  | 理赔系统性能测试 | 60d? | 2017-12-07 | 2018-02-28 |  | 22d | finish no earlier than 2018-02-28 |
| 25 |  | 交易清单系统性能测试 | 60d? | 2017-12-07 | 2018-02-28 |  | 22d | finish no earlier than 2018-02-28 |
| 26 |  | 周边系统联调测试 | 30d? | 2018-01-18 | 2018-02-28 |  | 22d | finish no earlier than 2018-02-28 |
| 27 |  | 承保系统验收问题回归测试 | 30d? | 2018-01-18 | 2018-02-28 |  | 22d | finish no earlier than 2018-02-28 |
| 28 |  | 理赔系统验收问题回归测试 | 33d? | 2018-02-14 | 2018-03-30 |  | 0d | finish no earlier than 2018-03-30 |
| 29 | 1.1.7 | **测试评估** | 22d? | 2018-03-01 | 2018-03-30 |  | 0d |  |
| 30 |  | 项目测试报告输出 | 22d? | 2018-03-01 | 2018-03-30 |  | 0d | finish no earlier than 2018-03-30 |
| 31 |  | 性能测试报告输出 | 22d? | 2018-03-01 | 2018-03-30 |  | 0d | finish no earlier than 2018-03-30 |
| 32 |  | 缺陷统计分析清单 | 22d? | 2018-03-01 | 2018-03-30 |  | 0d | finish no earlier than 2018-03-30 |
| 33 |  | UAT | 44d? | 2018-01-15 | 2018-03-15 |  | 11d | start no earlier than 2018-01-15 |
| 34 |  | 上线前准备 | 44d? | 2018-01-15 | 2018-03-15 |  | 11d | start no earlier than 2018-01-15 |
| 35 |  | 系统上线 | 25d? | 2018-02-26 | 2018-03-30 |  | 0d | start no earlier than 2018-02-26 |

## Version 2 (saved 2017-11-06, file 新一代农险种工作计划（测试组）-20171106.mpp)

Note of the change: source code submit

Last finish stays 2018-03-30. Complete tasks 3 → 9.

Changed:

| ID | Task | Start | Finish | Duration | Complete | Total float | Other |
| --- | --- | --- | --- | --- | --- | --- | --- |
| 1 | **第三方测试** |  |  |  | 3% → 6% |  |  |
| 2 | **版本管理** |  |  |  | 3% → 6% |  |  |
| 5 | **需求理解分析** |  | 2017-10-27 A |  | 83% → 100% | 110d → none |  |
| 7 | 理赔系统需求理解分析 |  | 2017-10-27 A |  | 50% → 100% | 110d → none |  |
| 9 | **测试方案制定** |  | 2017-10-27 A |  | 20% → 100% | 110d → none |  |
| 10 | 承保系统测试功能范围及优先级制定 | 2017-10-23 A | 2017-10-27 A |  | 0% → 100% | 110d → none |  |
| 11 | 理赔系统测试功能范围及优先级制定 | 2017-10-23 A | 2017-10-27 A |  | 0% → 100% | 110d → none |  |
| 12 | 交易清单系统测试功能范围及优先级制定 | 2017-10-23 A | 2017-10-27 A |  | 0% → 100% | 110d → none |  |
| 13 | 里程碑测试计划制定 |  | 2017-10-27 A |  | 50% → 100% | 110d → none |  |
| 14 | 详细测试计划制定 |  | 2017-10-27 A |  | 50% → 100% | 110d → none |  |
| 15 | **测试用例设计** |  |  |  | 13% → 18% |  |  |
| 16 | 承保系统用例集 |  | 2017-11-03 → 2017-11-01 (-2d) | 10d? → 7.5d? | 50% → 67% | 105d → 107.5d | resources 赵光辉 → 赵光辉; 朱莎莎 |
| 17 | 理赔系统功能用例集 | 2017-10-16 A | 2017-11-03 → 2017-10-23 (-11d) | 15d? → 6d? |  | 105d → 114d | resources 赵光辉 → 田建建 |
| 18 | 交易清单系统功能用例集 |  |  |  |  |  | resources 赵光辉 → 戴徐 |

## Version 3 (saved 2017-11-08, file 新一代农险种工作计划（测试组）-20171108.mpp)

Note of the change: source code submit

Last finish stays 2018-03-30. Complete tasks 9 → 10.

Changed:

| ID | Task | Finish | Complete | Total float |
| --- | --- | --- | --- | --- |
| 1 | **第三方测试** |  | 6% → 7% |  |
| 2 | **版本管理** |  | 6% → 7% |  |
| 15 | **测试用例设计** |  | 18% → 37% |  |
| 16 | 承保系统用例集 | 2017-11-01 A | 67% → 100% | 107.5d → none |
| 17 | 理赔系统功能用例集 | 2017-10-23 → 2017-11-03 (+11d) | 0% → 50% | 114d → 105d |
